# TopCoder Software Project Plan

How a schedule from MS Project changed from version to version. A marks actual dates.

## Version 1 (saved 2006-03-02)

Note of the change: Inital creation

| ID | WBS | Task | Duration | Start | Finish | Predecessors | Complete | Total float | Constraint |
| --- | --- | --- | --- | --- | --- | --- | --- | --- | --- |
| 1 | 1 | **TopCoder Online Review/Scorecard Project** | 658.5d? | 2004-01-27 A | 2006-08-04 |  | 1% | 0d |  |
| 2 |  | Kick Off Meeting | 0.5d? | 2006-03-02 | 2006-03-02 |  |  | 111d | start no earlier than 2006-03-02 |
| 3 |  | Creation of TopCoder Application Forum | 1d | 2006-03-02 A | 2006-03-03 A | 2 | 100% |  | start no earlier than 2005-06-29 |
| 4 |  | Assign Client Permissions to Forums | 1d | 2006-03-02 A | 2006-03-02 A |  | 100% |  | start no earlier than 2005-06-29 |
| 5 |  | Create SVN module for Application | 1d | 2005-06-29 | 2005-06-29 |  |  | 286.5d | start no earlier than 2005-06-29 |
| 6 |  | Key Stakeholder Meetings | 3d | 2006-03-06 | 2006-03-08 |  |  | 0d | start no earlier than 2006-03-06 |
| 7 | 1.6 | **Application Specification** | 11.5d? | 2006-03-09 | 2006-03-24 | 6 |  | 0d |  |
| 8 | 1.6.1 | **Requirement Specification Draft** | 1d | 2006-03-09 | 2006-03-09 | 6 |  | 99d |  |
| 9 |  | Fill in Scope | 1d | 2006-03-09 | 2006-03-09 |  |  | 99d |  |
| 10 |  | Review Meeting | 0.5d | 2006-03-10 | 2006-03-10 | 8 |  | 99d |  |
| 11 |  | Create/Update Use Cases | 2d | 2006-03-09 | 2006-03-10 |  |  | 104.5d | start no earlier than 2006-03-02 |
| 12 | 1.6.4 | **Module Specification** | 3d? | 2006-03-09 | 2006-03-13 |  |  | 95d |  |
| 13 |  | Create/Update Activity Diagram | 2d | 2006-03-09 | 2006-03-10 |  |  | 95d | finish no earlier than 2005-01-14 |
| 14 |  | Fill in Logic Requirements for use cases and activity diagrams | 1d? | 2006-03-13 | 2006-03-13 | 13 |  | 95d |  |
| 15 |  | Review Meeting | 1d? | 2006-03-09 | 2006-03-09 |  |  | 105.5d |  |
| 16 |  | Create Site Map | 1d? | 2006-03-14 | 2006-03-14 | 14 |  | 95d |  |
| 17 |  | Review Meeting | 0.5d | 2006-03-15 | 2006-03-15 | 16 |  | 95d |  |
| 18 |  | Create Site Definition | 2d | 2006-03-15 | 2006-03-17 | 17 |  | 95d |  |
| 19 |  | Prototype Revision 1 | 5d | 2006-03-17 | 2006-03-24 | 18 |  | 95d |  |
| 20 |  | Architecture Diagram Draft | 2d | 2006-03-10 | 2006-03-14 | 10 |  | 99d | start no earlier than 2005-01-19 |
| 21 |  | Fill in Technical Requirements | 1d? | 2006-03-14 | 2006-03-15 | 20 |  | 99d |  |
| 22 |  | Review Meeting | 0.5d | 2006-03-15 | 2006-03-15 | 13, 21 |  | 99d |  |
| 23 |  | Prototype Revision 2 Review | 0.5d | 2006-03-16 | 2006-03-16 | 22 |  | 99d |  |
| 24 |  | Complete QA Plan | 2d | 2006-03-16 | 2006-03-20 | 23 |  | 99d |  |
| 25 |  | Review Meeting | 0.5d | 2006-03-09 | 2006-03-09 |  |  | 0d |  |
| 26 |  | Update Final Specification Deliverables | 2d | 2006-03-09 | 2006-03-13 | 25 |  | 0d |  |
| 27 |  | Final Specification Presentation | 1d? | 2006-03-13 | 2006-03-14 | 26 |  | 0d |  |
| 28 | 1.7 | **Application Architecture** | 19d | 2006-03-14 | 2006-04-10 |  |  | 0d |  |
| 29 | 1.7.1 | **UML Diagrams** | 14d | 2006-03-14 | 2006-04-03 | 27 |  | 0d |  |
| 30 |  | Update Site Map and Site Definition | 3d | 2006-03-14 | 2006-03-17 | 27 |  | 0d |  |
| 31 |  | Component Sequence Diagrams | 5d | 2006-03-17 | 2006-03-24 | 30 |  | 0d | finish no earlier than 2005-02-04 |
| 32 |  | Component Interface Diagram | 5d | 2006-03-24 | 2006-03-31 | 31 |  | 0d | finish no earlier than 2005-02-04 |
| 33 |  | Component Diagram | 1d | 2006-03-31 | 2006-04-03 | 32 |  | 0d |  |
| 34 |  | Physical Data Model Definition | 3d | 2006-04-03 | 2006-04-06 | 29 |  | 0.5d | finish no earlier than 2005-02-04 |
| 35 |  | PM Review | 1d | 2006-04-06 | 2006-04-07 | 29, 34 |  | 0.5d |  |
| 36 |  | Application Architecture Presentation | 0.5d | 2006-04-07 | 2006-04-07 | 35 |  | 0.5d |  |
| 37 |  | Component Specifications | 5d | 2006-04-03 | 2006-04-10 | 29 |  | 0d | finish no earlier than 2005-02-11 |
| 38 |  | Application Design Specification | 3d | 2006-04-03 | 2006-04-06 | 29 |  | 2d |  |
| 39 | 1.8 | **Component Production** | 30d | 2006-04-10 | 2006-05-22 |  |  | 0d |  |
| 40 |  | Design Posting | 6d | 2006-04-10 | 2006-04-18 | 28 |  | 0d | start no earlier than 2005-03-09 |
| 41 |  | Design Review | 6d | 2006-04-18 | 2006-04-26 | 40 |  | 0d | finish no earlier than 2005-03-21 |
| 42 |  | Design Final Fixes | 2d | 2006-04-26 | 2006-04-28 | 41 |  | 0d |  |
| 43 |  | Creation of Dev Distro | 1d | 2006-04-28 | 2006-05-01 | 42 |  | 0d |  |
| 44 |  | Development Posting | 6d | 2006-05-01 | 2006-05-09 | 43 |  | 0d | start no earlier than 2005-03-30 |
| 45 |  | Development Review | 6d | 2006-05-09 | 2006-05-17 | 44 |  | 0d |  |
| 46 |  | Development Final Fixes | 2d | 2006-05-17 | 2006-05-19 | 45 |  | 0d | finish no earlier than 2005-04-06 |
| 47 |  | Post to Catalog | 1d | 2006-05-19 | 2006-05-22 | 46 |  | 0d |  |
| 48 | 1.9 | **Application Assembly** | 23d? | 2006-05-22 | 2006-06-22 |  |  | 0d |  |
| 49 |  | Test Case Development | 7d? | 2006-05-22 | 2006-05-31 | 47 |  | 0d | finish no earlier than 2005-04-15 |
| 50 |  | Test Case Review | 1d? | 2006-05-31 | 2006-06-01 | 49 |  | 0d |  |
| 51 |  | Application Source Code Development | 15d? | 2006-06-01 | 2006-06-22 | 50 |  | 0d | finish no earlier than 2005-05-06 |
| 52 | 1.10 | **Certification** | 16d? | 2006-06-22 | 2006-07-14 |  |  | 0d |  |
| 53 |  | Deployment to TopCoder QA | 3d? | 2006-06-22 | 2006-06-27 | 51 |  | 0d | finish no earlier than 2005-05-11 |
| 54 | 1.10.2 | **Testing Iteration** | 12d? | 2006-06-27 | 2006-07-13 |  |  | 0d |  |
| 55 |  | Test Plan Execution | 6d? | 2006-06-27 | 2006-07-05 | 53 |  | 0d | finish no earlier than 2005-05-19 |
| 56 |  | Application Bug Fixes Implemented | 6d? | 2006-07-05 | 2006-07-13 | 55 |  | 0d | finish no earlier than 2005-05-19 |
| 57 |  | Project Manager Certification | 1d? | 2006-07-13 | 2006-07-14 | 56 |  | 0d | start no earlier than 2005-05-20 |
| 58 | 1.11 | **Deployment** | 15d? | 2006-07-14 | 2006-08-04 |  |  | 0d |  |
| 59 |  | Deployment to Customer QA | 5d? | 2006-07-14 | 2006-07-21 | 57 |  | 0d | finish no earlier than 2005-05-27 |
| 60 | 1.11.2 | **Testing Iteration** | 10d? | 2006-07-21 | 2006-08-04 |  |  | 0d |  |
| 61 |  | Test Plan Execution | 5d? | 2006-07-21 | 2006-07-28 | 59 |  | 0d | finish no earlier than 2005-06-03 |
| 62 |  | User Acceptance Testing | 5d? | 2006-07-28 | 2006-08-04 | 61 |  | 0d | finish no earlier than 2005-06-03 |
| 63 | 1.12 | **Wrap Up** | 5d? | 2004-01-27 | 2004-02-02 |  |  | 653.5d |  |
| 64 |  | Binder | 1d? | 2004-01-27 | 2004-01-27 |  |  | 653.5d |  |
| 65 |  | Final Presentation | 1d? | 2004-01-28 | 2004-01-28 | 64 |  | 653.5d |  |
| 66 |  | Case Study | 3d | 2004-01-29 | 2004-02-02 | 65 |  | 653.5d |  |
| 67 | 1.13 | **Support** | 1d? | 2004-01-27 | 2004-01-27 |  |  | 657.5d |  |
| 68 |  | Capture DRs | 1d? | 2004-01-27 | 2004-01-27 |  |  | 657.5d |  |
| 69 |  | Release Fix | 1d? | 2004-01-27 | 2004-01-27 |  |  | 657.5d |  |

## Version 2 (saved 2006-03-24)

Note of the change: latest versions

Last finish 2006-08-04 → 2006-08-16 (+12d). Complete tasks 2 → 7.

Added:

| ID | Task | Duration | Start | Finish | Predecessors | Constraint | Resources |
| --- | --- | --- | --- | --- | --- | --- | --- |
| 48 | **Assembly Competitions** | 34d | 2006-05-18 | 2006-07-05 |  |  |  |
| 49 | **Setup** | 16d | 2006-05-18 | 2006-06-09 |  |  |  |
| 50 | Divide Use Cases for Competitions | 1d | 2006-05-18 | 2006-05-19 | 39FS-15d | start no earlier than 2006-03-29 |  |
| 51 | TopCoder Website Informaiton Posted | 1d | 2006-05-25 | 2006-05-26 | 39FS-10d | start no earlier than 2006-05-17 |  |
| 52 | Package Components | 1d | 2006-06-08 | 2006-06-09 | 47 |  |  |
| 53 | **Test Case Development** | 5d | 2006-05-26 | 2006-06-02 |  |  |  |
| 54 | Submit tests | 4d | 2006-05-26 | 2006-06-01 | 51 | start no earlier than 2006-03-22 | test case participants |
| 55 | Screen test cases | 1d | 2006-06-01 | 2006-06-02 | 54 |  |  |
| 56 | Team Formation | 10d | 2006-05-26 | 2006-06-09 | 51 |  |  |
| 57 | **Development** | 18d | 2006-06-09 | 2006-07-05 |  |  |  |
| 58 | **Opening Round** | 18d | 2006-06-09 | 2006-07-05 |  |  |  |
| 59 | **Team Development** | 6d | 2006-06-09 | 2006-06-19 |  |  |  |
| 60 | **Development of Use Cases** | 6d | 2006-06-09 | 2006-06-19 |  |  | All Teams |
| 61 | Create Unit Tests | 3d | 2006-06-09 | 2006-06-14 | 52, 53, 47 | start no earlier than 2006-03-28 |  |
| 62 | Convert Prototype | 3d | 2006-06-09 | 2006-06-14 | 52, 53 | start no earlier than 2006-03-29 |  |
| 63 | Configure components | 3d | 2006-06-09 | 2006-06-14 | 52, 53 | start no earlier than 2006-03-29 |  |
| 64 | Test | 3d | 2006-06-14 | 2006-06-19 | 61, 62, 63 |  |  |
| 65 | **Test case challenge** | 2d | 2006-06-19 | 2006-06-21 | 64 |  | All Captains |
| 66 | Submit Challenges | 1d | 2006-06-19 | 2006-06-20 |  |  |  |
| 67 | Appeals response | 1d | 2006-06-20 | 2006-06-21 | 66 |  | Reviewer3; Reviewer2; Reviewer1; Assembly Manager; Architect |
| 68 | **Review** | 10d | 2006-06-21 | 2006-07-05 |  |  |  |
| 69 | Score Testcases | 1d | 2006-06-21 | 2006-06-22 | 65 |  | DE |
| 70 | Score Submissions | 2d | 2006-06-21 | 2006-06-23 | 65 |  | DE |
| 71 | Review Code | 2d | 2006-06-23 | 2006-06-27 | 69, 70 |  | Review Team |
| 72 | Appeals | 1d | 2006-06-27 | 2006-06-28 | 71 |  | Review Team |
| 73 | Appeals Response | 1d | 2006-06-28 | 2006-06-29 | 72 |  | Review Team |
| 74 | Final Fixes | 3d | 2006-06-29 | 2006-07-04 | 73 |  |  |
| 75 | Final Review/PM Certification | 1d | 2006-07-04 | 2006-07-05 | 74 |  |  |
| 76 | **Round Two** | 18d | 2006-06-09 | 2006-07-05 |  |  |  |
| 77 | **Team Development** | 6d | 2006-06-09 | 2006-06-19 |  |  |  |
| 78 | **Development of Use Cases** | 6d | 2006-06-09 | 2006-06-19 |  |  | All Teams |
| 79 | Create Unit Tests | 3d | 2006-06-09 | 2006-06-14 | 52, 53 | start no earlier than 2006-03-29 |  |
| 80 | Convert Prototype | 3d | 2006-06-09 | 2006-06-14 | 52, 53 | start no earlier than 2006-03-29 |  |
| 81 | Configure components | 3d | 2006-06-09 | 2006-06-14 | 52, 53 | start no earlier than 2006-03-28 |  |
| 82 | Test | 3d | 2006-06-14 | 2006-06-19 | 79, 80, 81 |  |  |
| 83 | **Test case challenge** | 2d | 2006-06-19 | 2006-06-21 | 82 |  | All Captains |
| 84 | Submit Challenges | 1d | 2006-06-19 | 2006-06-20 |  |  |  |
| 85 | Appeals response | 1d | 2006-06-20 | 2006-06-21 | 84 |  | Reviewer3; Reviewer2; Reviewer1; Assembly Manager; Architect |
| 86 | **Review** | 10d | 2006-06-21 | 2006-07-05 |  |  |  |
| 87 | Score Testcases | 1d | 2006-06-21 | 2006-06-22 | 83 |  | DE |
| 88 | Score Submissions | 2d | 2006-06-21 | 2006-06-23 | 83 |  | DE |
| 89 | Review Code | 2d | 2006-06-23 | 2006-06-27 | 87, 88 |  | Review Team |
| 90 | Appeals | 1d | 2006-06-27 | 2006-06-28 | 89 |  | Review Team |
| 91 | Appeals Response | 1d | 2006-06-28 | 2006-06-29 | 90 |  | Review Team |
| 92 | Final Fixes | 3d | 2006-06-29 | 2006-07-04 | 91 |  |  |
| 93 | Final Review/ PM Certification | 1d | 2006-07-04 | 2006-07-05 | 92 |  |  |

Removed: 48 Application Assembly; 49 Test Case Development; 50 Test Case Review; 51 Application Source Code Development; 52 Certification; 53 Deployment to TopCoder QA; 54 Testing Iteration; 55 Test Plan Execution; 56 Application Bug Fixes Implemented; 57 Project Manager Certification; 63 Wrap Up; 64 Binder; 65 Final Presentation; 66 Case Study

Changed:

| ID | Task | Start | Finish | Duration | Complete | Total float | Predecessors | Other |
| --- | --- | --- | --- | --- | --- | --- | --- | --- |
| 1 | **TopCoder Online Review/Scorecard Project** | 2004-01-27 A → 2005-06-29 A (+519d) | 2006-08-04 → 2006-08-16 (+12d) | 658.5d? → 295.5d? | 1% → 5% |  |  |  |
| 2 | Kick Off Meeting |  |  | 0.5d? → 0.33d? |  | 111d → 13.67d |  | resources Project Manager; Customer → Dave Messinger; Lorie Norman; Tony Jefts |
| 3 | Creation of TopCoder Application Forum |  |  |  |  |  |  | resources Project Manager → Lorie Norman |
| 4 | Assign Client Permissions to Forums |  |  |  |  |  |  | resources Project Manager; Customer → Lorie Norman |
| 5 | Create SVN module for Application | 2005-06-29 A | 2005-06-29 A |  | 0% → 100% | 286.5d → none |  | resources Project Manager; Component Manager → Lorie Norman |
| 6 | Key Stakeholder Meetings | 2006-03-06 A | 2006-03-08 → 2006-03-07 A (-1d) | 3d → 1.5d | 0% → 100% | 0d → none |  | resources Project Manager; Customer → Greg Paul; Javier; Dave Messinger; Lorie Norman |
| 7 | **Application Specification** | 2006-03-09 → 2006-03-02 A (-7d) | 2006-03-24 → 2006-04-06 (+13d) | 11.5d? → 25.5d? | 0% → 16% |  | 6 → none |  |
| 8 | **Requirement Specification Draft** | 2006-03-09 → 2006-03-03 A (-6d) | 2006-03-09 → 2006-03-03 A (-6d) |  | 0% → 100% | 99d → none | 6 → none | resources Project Manager → Lorie Norman |
| 9 | Fill in Scope | 2006-03-09 → 2006-03-03 A (-6d) | 2006-03-09 → 2006-03-03 A (-6d) |  | 0% → 100% | 99d → none |  | constraint none → start no earlier than 2006-03-03 |
| 10 | Review Meeting | 2006-03-10 → 2006-03-06 A (-4d) | 2006-03-10 → 2006-03-06 A (-4d) |  | 0% → 100% | 99d → none |  |  |
| 11 | Create/Update Use Cases | 2006-03-09 → 2006-03-02 A (-7d) | 2006-03-10 → 2006-03-03 A (-7d) |  | 0% → 100% | 104.5d → none |  |  |
| 12 | **Module Specification** | 2006-03-09 A | 2006-03-13 → 2006-04-04 (+22d) | 3d? → 18.5d | 0% → 6% | 95d → 1.5d |  |  |
| 13 | Create/Update Activity Diagram | 2006-03-09 → 2006-03-15 (+6d) | 2006-03-10 → 2006-03-28 (+18d) | 2d → 10d |  | 95d → 0d | none → 10 | constraint finish no earlier than 2005-01-14 → finish no earlier than 2006-03-28 |
| 14 | Fill in Logic Requirements for use cases and activity diagrams | 2006-03-13 → 2006-03-09 A (-4d) | 2006-03-13 → 2006-04-03 (+21d) | 1d? → 5d | 0% → 20% | 95d → 1.5d |  |  |
| 15 | Review Meeting | 2006-03-09 → 2006-04-04 (+26d) | 2006-03-09 → 2006-04-04 (+26d) | 1d? → 1d |  | 105.5d → 1.5d | none → 14 | constraint none → start no earlier than 2006-03-10 |
| 16 | Create Site Map | 2006-03-14 → 2006-03-21 (+7d) | 2006-03-14 → 2006-03-21 (+7d) |  |  | 95d → 2.5d | 14 → none | constraint none → start no earlier than 2006-03-21 |
| 17 | Review Meeting | 2006-03-15 → 2006-03-22 (+7d) | 2006-03-15 → 2006-03-22 (+7d) |  |  | 95d → 2.5d |  |  |
| 18 | Create Site Definition | 2006-03-15 → 2006-03-20 (+5d) | 2006-03-17 → 2006-03-21 (+4d) |  |  | 95d → 11.5d | 17 → none | constraint none → start no earlier than 2006-03-20 |
| 19 | Prototype Revision 1 | 2006-03-17 → 2006-03-20 A (+3d) |  |  | 0% → 30% | 95d → 8.5d | 18 → none | resources none → Kim Ruhl |
| 20 | Architecture Diagram Draft | 2006-03-10 → 2006-03-22 (+12d) | 2006-03-14 → 2006-03-23 (+9d) | 2d → 1d |  | 99d → 2.5d | 10 → 17 |  |
| 21 | Fill in Technical Requirements | 2006-03-14 → 2006-03-23 (+9d) | 2006-03-15 → 2006-03-24 (+9d) |  |  | 99d → 2.5d |  |  |
| 22 | Review Meeting | 2006-03-15 → 2006-03-29 (+14d) | 2006-03-15 → 2006-03-29 (+14d) |  |  | 99d → 0d |  |  |
| 23 | Prototype Revision 2 Review | 2006-03-16 → 2006-03-29 (+13d) | 2006-03-16 → 2006-03-29 (+13d) |  |  | 99d → 0d |  |  |
| 24 | Complete QA Plan | 2006-03-16 → 2006-03-30 (+14d) | 2006-03-20 → 2006-03-31 (+11d) |  |  | 99d → 0d |  |  |
| 25 | Review Meeting | 2006-03-09 → 2006-04-03 (+25d) | 2006-03-09 → 2006-04-03 (+25d) |  |  |  | none → 24 |  |
| 26 | Update Final Specification Deliverables | 2006-03-09 → 2006-04-03 (+25d) | 2006-03-13 → 2006-04-05 (+23d) |  |  |  |  |  |
| 27 | Final Specification Presentation | 2006-03-13 → 2006-04-05 (+23d) | 2006-03-14 → 2006-04-06 (+23d) |  |  |  |  |  |
| 28 | **Application Architecture** | 2006-03-14 → 2006-04-06 (+23d) | 2006-04-10 → 2006-05-03 (+23d) |  |  |  |  |  |
| 29 | **UML Diagrams** | 2006-03-14 → 2006-04-06 (+23d) | 2006-04-03 → 2006-04-26 (+23d) |  |  |  | 27 → 7 |  |
| 30 | Update Site Map and Site Definition | 2006-03-14 → 2006-04-06 (+23d) | 2006-03-17 → 2006-04-11 (+25d) |  |  |  | 27 → 7 |  |
| 31 | Component Sequence Diagrams | 2006-03-17 → 2006-04-11 (+25d) | 2006-03-24 → 2006-04-18 (+25d) |  |  |  |  |  |
| 32 | Component Interface Diagram | 2006-03-24 → 2006-04-18 (+25d) | 2006-03-31 → 2006-04-25 (+25d) |  |  |  |  |  |
| 33 | Component Diagram | 2006-03-31 → 2006-04-25 (+25d) | 2006-04-03 → 2006-04-26 (+23d) |  |  |  |  |  |
| 34 | Physical Data Model Definition | 2006-04-03 → 2006-04-26 (+23d) | 2006-04-06 → 2006-05-01 (+25d) |  |  |  |  |  |
| 35 | PM Review | 2006-04-06 → 2006-05-01 (+25d) | 2006-04-07 → 2006-05-02 (+25d) |  |  |  |  |  |
| 36 | Application Architecture Presentation | 2006-04-07 → 2006-05-02 (+25d) | 2006-04-07 → 2006-05-02 (+25d) |  |  |  |  |  |
| 37 | Component Specifications | 2006-04-03 → 2006-04-26 (+23d) | 2006-04-10 → 2006-05-03 (+23d) |  |  |  |  |  |
| 38 | Application Design Specification | 2006-04-03 → 2006-04-26 (+23d) | 2006-04-06 → 2006-05-01 (+25d) |  |  |  |  |  |
| 39 | **Component Production** | 2006-04-10 → 2006-05-03 (+23d) | 2006-05-22 → 2006-06-08 (+17d) | 30d → 26d |  |  |  |  |
| 40 | Design Posting | 2006-04-10 → 2006-05-03 (+23d) | 2006-04-18 → 2006-05-11 (+23d) |  |  |  |  |  |
| 41 | Design Review | 2006-04-18 → 2006-05-11 (+23d) | 2006-04-26 → 2006-05-17 (+21d) | 6d → 4d |  |  |  |  |
| 42 | Design Final Fixes | 2006-04-26 → 2006-05-17 (+21d) | 2006-04-28 → 2006-05-19 (+21d) |  |  |  |  |  |
| 43 | Creation of Dev Distro | 2006-04-28 → 2006-05-19 (+21d) | 2006-05-01 → 2006-05-22 (+21d) |  |  |  |  |  |
| 44 | Development Posting | 2006-05-01 → 2006-05-22 (+21d) | 2006-05-09 → 2006-05-30 (+21d) |  |  |  |  |  |
| 45 | Development Review | 2006-05-09 → 2006-05-30 (+21d) | 2006-05-17 → 2006-06-05 (+19d) | 6d → 4d |  |  |  |  |
| 46 | Development Final Fixes | 2006-05-17 → 2006-06-05 (+19d) | 2006-05-19 → 2006-06-07 (+19d) |  |  |  |  |  |
| 47 | Post to Catalog | 2006-05-19 → 2006-06-07 (+19d) | 2006-05-22 → 2006-06-08 (+17d) |  |  |  |  |  |
| 94 | **Deployment** | 2006-07-14 → 2006-07-05 (-9d) | 2006-08-04 → 2006-07-12 (-23d) | 15d? → 5d |  | 0d → 20d |  |  |
| 95 | Deployment to Customer QA | 2006-07-14 → 2006-07-05 (-9d) | 2006-07-21 → 2006-07-12 (-9d) | 5d? → 5d |  | 0d → 15d | Project Manager Certification → 48 |  |
| 96 | **Testing Iteration** | 2006-07-21 → 2006-07-12 (-9d) | 2006-08-04 → 2006-07-26 (-9d) | 10d? → 10d |  | 0d → 15d |  |  |
| 97 | Test Plan Execution | 2006-07-21 → 2006-07-12 (-9d) | 2006-07-28 → 2006-07-19 (-9d) | 5d? → 5d |  | 0d → 15d |  |  |
| 98 | User Acceptance Testing | 2006-07-28 → 2006-07-19 (-9d) | 2006-08-04 → 2006-07-26 (-9d) | 5d? → 5d |  | 0d → 15d |  |  |
| 99 | **Support** | 2004-01-27 → 2006-07-05 (+890d) | 2004-01-27 → 2006-08-16 (+932d) | 1d? → 30d |  | 657.5d → 0d |  |  |
| 100 | Capture DRs | 2004-01-27 → 2006-07-05 (+890d) | 2004-01-27 → 2006-07-26 (+911d) | 1d? → 15d |  | 657.5d → 0d | none → 48 |  |
| 101 | Release Fix | 2004-01-27 → 2006-07-26 (+911d) | 2004-01-27 → 2006-08-16 (+932d) | 1d? → 15d |  | 657.5d → 0d | none → 100 |  |

## Version 3 (saved 2006-04-10)

Last finish 2006-08-16 → 2006-08-28 (+12d). Complete tasks 7 → 8.

Changed:

| ID | Task | Start | Finish | Duration | Complete | Total float | Predecessors | Other |
| --- | --- | --- | --- | --- | --- | --- | --- | --- |
| 1 | **TopCoder Online Review/Scorecard Project** |  | 2006-08-16 → 2006-08-28 (+12d) | 295.5d? → 303.5d? |  |  |  |  |
| 7 | **Application Specification** |  | 2006-04-06 → 2006-04-18 (+12d) | 25.5d? → 33.5d? | 16% → 15% |  |  |  |
| 16 | Create Site Map | 2006-03-21 → 2006-04-04 (+14d) | 2006-03-21 → 2006-04-04 (+14d) |  |  | 2.5d → 4d |  | constraint start no earlier than 2006-03-21 → start no earlier than 2006-04-04 |
| 17 | Review Meeting | 2006-03-22 → 2006-04-03 (+12d) | 2006-03-22 → 2006-04-03 (+12d) |  |  | 2.5d → 5.5d | 16 → none | constraint none → start no earlier than 2006-04-03 |
| 18 | Create Site Definition | 2006-03-20 → 2006-04-04 (+15d) | 2006-03-21 → 2006-04-04 (+14d) | 2d → 1d |  | 11.5d → 4d |  | constraint start no earlier than 2006-03-20 → start no earlier than 2006-04-04 |
| 19 | Prototype Revision 1 |  | 2006-03-24 → 2006-04-06 (+13d) | 5d → 14d | 30% → 11% | 8.5d → 0d |  | constraint none → finish no earlier than 2006-04-06 |
| 20 | Architecture Diagram Draft | 2006-03-22 A | 2006-03-23 A |  | 0% → 100% | 2.5d → none |  |  |
| 21 | Fill in Technical Requirements | 2006-03-23 → 2006-04-04 (+12d) | 2006-03-24 → 2006-04-04 (+11d) | 1d? → 0.5d |  | 2.5d → 2d |  | constraint none → start no earlier than 2006-04-04 |
| 22 | Review Meeting | 2006-03-29 → 2006-04-07 (+9d) | 2006-03-29 → 2006-04-10 (+12d) | 0.5d → 2d |  |  | 13, 21 → 19 | constraint none → start no earlier than 2006-04-07 |
| 23 | Prototype Revision 2 Review | 2006-03-29 → 2006-04-11 (+13d) | 2006-03-29 → 2006-04-12 (+14d) | 0.5d → 2d |  |  |  | constraint none → start no earlier than 2006-04-11 |
| 24 | Complete QA Plan | 2006-03-30 → 2006-04-05 (+6d) | 2006-03-31 → 2006-04-05 (+5d) | 2d → 1d |  | 0d → 8.5d | 23 → 12 |  |
| 25 | Review Meeting | 2006-04-03 → 2006-04-13 (+10d) | 2006-04-03 → 2006-04-13 (+10d) |  |  |  | 24 → 23 |  |
| 26 | Update Final Specification Deliverables | 2006-04-03 → 2006-04-13 (+10d) | 2006-04-05 → 2006-04-17 (+12d) |  |  |  |  | constraint none → start no earlier than 2006-04-06 |
| 27 | Final Specification Presentation | 2006-04-05 → 2006-04-17 (+12d) | 2006-04-06 → 2006-04-18 (+12d) |  |  |  |  |  |
| 28 | **Application Architecture** | 2006-04-06 → 2006-04-18 (+12d) | 2006-05-03 → 2006-05-15 (+12d) |  |  |  |  |  |
| 29 | **UML Diagrams** | 2006-04-06 → 2006-04-18 (+12d) | 2006-04-26 → 2006-05-08 (+12d) |  |  |  |  |  |
| 30 | Update Site Map and Site Definition | 2006-04-06 → 2006-04-18 (+12d) | 2006-04-11 → 2006-04-21 (+10d) |  |  |  |  |  |
| 31 | Component Sequence Diagrams | 2006-04-11 → 2006-04-21 (+10d) | 2006-04-18 → 2006-04-28 (+10d) |  |  |  |  |  |
| 32 | Component Interface Diagram | 2006-04-18 → 2006-04-28 (+10d) | 2006-04-25 → 2006-05-05 (+10d) |  |  |  |  |  |
| 33 | Component Diagram | 2006-04-25 → 2006-05-05 (+10d) | 2006-04-26 → 2006-05-08 (+12d) |  |  |  |  |  |
| 34 | Physical Data Model Definition | 2006-04-26 → 2006-05-08 (+12d) | 2006-05-01 → 2006-05-11 (+10d) |  |  |  |  |  |
| 35 | PM Review | 2006-05-01 → 2006-05-11 (+10d) | 2006-05-02 → 2006-05-12 (+10d) |  |  |  |  |  |
| 36 | Application Architecture Presentation | 2006-05-02 → 2006-05-12 (+10d) | 2006-05-02 → 2006-05-12 (+10d) |  |  |  |  |  |
| 37 | Component Specifications | 2006-04-26 → 2006-05-08 (+12d) | 2006-05-03 → 2006-05-15 (+12d) |  |  |  |  |  |
| 38 | Application Design Specification | 2006-04-26 → 2006-05-08 (+12d) | 2006-05-01 → 2006-05-11 (+10d) |  |  |  |  |  |
| 39 | **Component Production** | 2006-05-03 → 2006-05-15 (+12d) | 2006-06-08 → 2006-06-20 (+12d) |  |  |  |  |  |
| 40 | Design Posting | 2006-05-03 → 2006-05-15 (+12d) | 2006-05-11 → 2006-05-23 (+12d) |  |  |  |  |  |
| 41 | Design Review | 2006-05-11 → 2006-05-23 (+12d) | 2006-05-17 → 2006-05-29 (+12d) |  |  |  |  |  |
| 42 | Design Final Fixes | 2006-05-17 → 2006-05-29 (+12d) | 2006-05-19 → 2006-05-31 (+12d) |  |  |  |  |  |
| 43 | Creation of Dev Distro | 2006-05-19 → 2006-05-31 (+12d) | 2006-05-22 → 2006-06-01 (+10d) |  |  |  |  |  |
| 44 | Development Posting | 2006-05-22 → 2006-06-01 (+10d) | 2006-05-30 → 2006-06-09 (+10d) |  |  |  |  |  |
| 45 | Development Review | 2006-05-30 → 2006-06-09 (+10d) | 2006-06-05 → 2006-06-15 (+10d) |  |  |  |  |  |
| 46 | Development Final Fixes | 2006-06-05 → 2006-06-15 (+10d) | 2006-06-07 → 2006-06-19 (+12d) |  |  |  |  |  |
| 47 | Post to Catalog | 2006-06-07 → 2006-06-19 (+12d) | 2006-06-08 → 2006-06-20 (+12d) |  |  |  |  |  |
| 48 | **Assembly Competitions** | 2006-05-18 → 2006-05-30 (+12d) | 2006-07-05 → 2006-07-17 (+12d) |  |  |  |  |  |
| 49 | **Setup** | 2006-05-18 → 2006-05-30 (+12d) | 2006-06-09 → 2006-06-21 (+12d) |  |  |  |  |  |
| 50 | Divide Use Cases for Competitions | 2006-05-18 → 2006-05-30 (+12d) | 2006-05-19 → 2006-05-31 (+12d) |  |  |  |  |  |
| 51 | TopCoder Website Informaiton Posted | 2006-05-25 → 2006-06-06 (+12d) | 2006-05-26 → 2006-06-07 (+12d) |  |  |  |  |  |
| 52 | Package Components | 2006-06-08 → 2006-06-20 (+12d) | 2006-06-09 → 2006-06-21 (+12d) |  |  |  |  |  |
| 53 | **Test Case Development** | 2006-05-26 → 2006-06-07 (+12d) | 2006-06-02 → 2006-06-14 (+12d) |  |  |  |  |  |
| 54 | Submit tests | 2006-05-26 → 2006-06-07 (+12d) | 2006-06-01 → 2006-06-13 (+12d) |  |  |  |  |  |
| 55 | Screen test cases | 2006-06-01 → 2006-06-13 (+12d) | 2006-06-02 → 2006-06-14 (+12d) |  |  |  |  |  |
| 56 | Team Formation | 2006-05-26 → 2006-06-07 (+12d) | 2006-06-09 → 2006-06-21 (+12d) |  |  |  |  |  |
| 57 | **Development** | 2006-06-09 → 2006-06-21 (+12d) | 2006-07-05 → 2006-07-17 (+12d) |  |  |  |  |  |
| 58 | **Opening Round** | 2006-06-09 → 2006-06-21 (+12d) | 2006-07-05 → 2006-07-17 (+12d) |  |  |  |  |  |
| 59 | **Team Development** | 2006-06-09 → 2006-06-21 (+12d) | 2006-06-19 → 2006-06-29 (+10d) |  |  |  |  |  |
| 60 | **Development of Use Cases** | 2006-06-09 → 2006-06-21 (+12d) | 2006-06-19 → 2006-06-29 (+10d) |  |  |  |  |  |
| 61 | Create Unit Tests | 2006-06-09 → 2006-06-21 (+12d) | 2006-06-14 → 2006-06-26 (+12d) |  |  |  |  |  |
| 62 | Convert Prototype | 2006-06-09 → 2006-06-21 (+12d) | 2006-06-14 → 2006-06-26 (+12d) |  |  |  |  |  |
| 63 | Configure components | 2006-06-09 → 2006-06-21 (+12d) | 2006-06-14 → 2006-06-26 (+12d) |  |  |  |  |  |
| 64 | Test | 2006-06-14 → 2006-06-26 (+12d) | 2006-06-19 → 2006-06-29 (+10d) |  |  |  |  |  |
| 65 | **Test case challenge** | 2006-06-19 → 2006-06-29 (+10d) | 2006-06-21 → 2006-07-03 (+12d) |  |  |  |  |  |
| 66 | Submit Challenges | 2006-06-19 → 2006-06-29 (+10d) | 2006-06-20 → 2006-06-30 (+10d) |  |  |  |  |  |
| 67 | Appeals response | 2006-06-20 → 2006-06-30 (+10d) | 2006-06-21 → 2006-07-03 (+12d) |  |  |  |  |  |
| 68 | **Review** | 2006-06-21 → 2006-07-03 (+12d) | 2006-07-05 → 2006-07-17 (+12d) |  |  |  |  |  |
| 69 | Score Testcases | 2006-06-21 → 2006-07-03 (+12d) | 2006-06-22 → 2006-07-04 (+12d) |  |  |  |  |  |
| 70 | Score Submissions | 2006-06-21 → 2006-07-03 (+12d) | 2006-06-23 → 2006-07-05 (+12d) |  |  |  |  |  |
| 71 | Review Code | 2006-06-23 → 2006-07-05 (+12d) | 2006-06-27 → 2006-07-07 (+10d) |  |  |  |  |  |
| 72 | Appeals | 2006-06-27 → 2006-07-07 (+10d) | 2006-06-28 → 2006-07-10 (+12d) |  |  |  |  |  |
| 73 | Appeals Response | 2006-06-28 → 2006-07-10 (+12d) | 2006-06-29 → 2006-07-11 (+12d) |  |  |  |  |  |
| 74 | Final Fixes | 2006-06-29 → 2006-07-11 (+12d) | 2006-07-04 → 2006-07-14 (+10d) |  |  |  |  |  |
| 75 | Final Review/PM Certification | 2006-07-04 → 2006-07-14 (+10d) | 2006-07-05 → 2006-07-17 (+12d) |  |  |  |  |  |
| 76 | **Round Two** | 2006-06-09 → 2006-06-21 (+12d) | 2006-07-05 → 2006-07-17 (+12d) |  |  |  |  |  |
| 77 | **Team Development** | 2006-06-09 → 2006-06-21 (+12d) | 2006-06-19 → 2006-06-29 (+10d) |  |  |  |  |  |
| 78 | **Development of Use Cases** | 2006-06-09 → 2006-06-21 (+12d) | 2006-06-19 → 2006-06-29 (+10d) |  |  |  |  |  |
| 79 | Create Unit Tests | 2006-06-09 → 2006-06-21 (+12d) | 2006-06-14 → 2006-06-26 (+12d) |  |  |  |  |  |
| 80 | Convert Prototype | 2006-06-09 → 2006-06-21 (+12d) | 2006-06-14 → 2006-06-26 (+12d) |  |  |  |  |  |
| 81 | Configure components | 2006-06-09 → 2006-06-21 (+12d) | 2006-06-14 → 2006-06-26 (+12d) |  |  |  |  |  |
| 82 | Test | 2006-06-14 → 2006-06-26 (+12d) | 2006-06-19 → 2006-06-29 (+10d) |  |  |  |  |  |
| 83 | **Test case challenge** | 2006-06-19 → 2006-06-29 (+10d) | 2006-06-21 → 2006-07-03 (+12d) |  |  |  |  |  |

| ID | Task | Start | Finish | Total float |
| --- | --- | --- | --- | --- |
| 84 | Submit Challenges | 2006-06-19 → 2006-06-29 (+10d) | 2006-06-20 → 2006-06-30 (+10d) |  |
| 85 | Appeals response | 2006-06-20 → 2006-06-30 (+10d) | 2006-06-21 → 2006-07-03 (+12d) |  |
| 86 | **Review** | 2006-06-21 → 2006-07-03 (+12d) | 2006-07-05 → 2006-07-17 (+12d) |  |
| 87 | Score Testcases | 2006-06-21 → 2006-07-03 (+12d) | 2006-06-22 → 2006-07-04 (+12d) |  |
| 88 | Score Submissions | 2006-06-21 → 2006-07-03 (+12d) | 2006-06-23 → 2006-07-05 (+12d) |  |
| 89 | Review Code | 2006-06-23 → 2006-07-05 (+12d) | 2006-06-27 → 2006-07-07 (+10d) |  |
| 90 | Appeals | 2006-06-27 → 2006-07-07 (+10d) | 2006-06-28 → 2006-07-10 (+12d) |  |
| 91 | Appeals Response | 2006-06-28 → 2006-07-10 (+12d) | 2006-06-29 → 2006-07-11 (+12d) |  |
| 92 | Final Fixes | 2006-06-29 → 2006-07-11 (+12d) | 2006-07-04 → 2006-07-14 (+10d) |  |
| 93 | Final Review/ PM Certification | 2006-07-04 → 2006-07-14 (+10d) | 2006-07-05 → 2006-07-17 (+12d) |  |
| 94 | **Deployment** | 2006-07-05 → 2006-07-17 (+12d) | 2006-07-12 → 2006-07-24 (+12d) | 20d → 15d |
| 95 | Deployment to Customer QA | 2006-07-05 → 2006-07-17 (+12d) | 2006-07-12 → 2006-07-24 (+12d) |  |
| 96 | **Testing Iteration** | 2006-07-12 → 2006-07-24 (+12d) | 2006-07-26 → 2006-08-07 (+12d) |  |
| 97 | Test Plan Execution | 2006-07-12 → 2006-07-24 (+12d) | 2006-07-19 → 2006-07-31 (+12d) |  |
| 98 | User Acceptance Testing | 2006-07-19 → 2006-07-31 (+12d) | 2006-07-26 → 2006-08-07 (+12d) |  |
| 99 | **Support** | 2006-07-05 → 2006-07-17 (+12d) | 2006-08-16 → 2006-08-28 (+12d) |  |
| 100 | Capture DRs | 2006-07-05 → 2006-07-17 (+12d) | 2006-07-26 → 2006-08-07 (+12d) |  |
| 101 | Release Fix | 2006-07-26 → 2006-08-07 (+12d) | 2006-08-16 → 2006-08-28 (+12d) |  |

## Version 4 (saved 2006-04-17)

Note of the change: new activity diagrams, updated requirements, updated project plan

Last finish 2006-08-28 → 2006-09-01 (+4d). Complete tasks 8 → 16.

Removed: 18 Create Site Definition

Changed:

| ID | Task | Start | Finish | Duration | Complete | Total float | Predecessors |
| --- | --- | --- | --- | --- | --- | --- | --- |
| 1 | **TopCoder Online Review/Scorecard Project** |  | 2006-08-28 → 2006-09-01 (+4d) | 303.5d? → 307.5d? | 5% → 17% |  |  |
| 7 | **Application Specification** |  |  |  | 15% → 83% |  |  |
| 12 | **Module Specification** |  | 2006-04-04 A |  | 6% → 100% | 8.5d → none |  |
| 13 | Create/Update Activity Diagram | 2006-03-15 A | 2006-03-28 A |  | 0% → 100% | 8.5d → none |  |
| 14 | Fill in Logic Requirements for use cases and activity diagrams |  | 2006-04-03 A |  | 20% → 100% | 8.5d → none |  |
| 15 | Review Meeting | 2006-04-04 A | 2006-04-04 A |  | 0% → 100% | 1.5d → none |  |
| 16 | Create Site Map | 2006-04-04 A | 2006-04-04 A |  | 0% → 100% | 4d → none |  |
| 17 | Review Meeting | 2006-04-03 A | 2006-04-03 A |  | 0% → 100% | 5.5d → none |  |
| 18 | Prototype Revision 1 |  | 2006-04-06 A |  | 11% → 100% | 0d → none |  |
| 20 | Fill in Technical Requirements | 2006-04-04 A | 2006-04-04 A |  | 0% → 100% | 2d → none |  |
| 23 | Complete QA Plan | 2006-04-05 A | 2006-04-05 A |  | 0% → 100% | 8.5d → none |  |
| 27 | **Application Architecture** |  | 2006-05-15 → 2006-05-19 (+4d) | 19d → 23d |  |  |  |
| 28 | **UML Diagrams** |  | 2006-05-08 → 2006-05-10 (+2d) | 14d → 16d |  |  |  |
| 29 | Update Site Map and Site Definition |  | 2006-04-21 → 2006-04-25 (+4d) | 3d → 5d |  | 0d → 11d |  |
| 30 | Component Sequence Diagrams | 2006-04-21 → 2006-04-18 (-3d) | 2006-04-28 → 2006-04-27 (-1d) | 5d → 7d |  |  | 29 → 7 |
| 31 | Component Interface Diagram | 2006-04-28 → 2006-04-27 (-1d) | 2006-05-05 → 2006-05-08 (+3d) | 5d → 7d |  |  |  |
| 32 | Component Diagram | 2006-05-05 → 2006-05-08 (+3d) | 2006-05-08 → 2006-05-10 (+2d) | 1d → 2d |  |  |  |
| 33 | Physical Data Model Definition | 2006-05-08 → 2006-05-10 (+2d) | 2006-05-11 → 2006-05-17 (+6d) | 3d → 5d |  |  |  |
| 34 | PM Review | 2006-05-11 → 2006-05-17 (+6d) | 2006-05-12 → 2006-05-18 (+6d) |  |  |  |  |
| 35 | Application Architecture Presentation | 2006-05-12 → 2006-05-18 (+6d) | 2006-05-12 → 2006-05-18 (+6d) |  |  |  |  |
| 36 | Component Specifications | 2006-05-08 → 2006-05-10 (+2d) | 2006-05-15 → 2006-05-19 (+4d) | 5d → 7d |  |  |  |
| 37 | Application Design Specification | 2006-05-08 → 2006-05-10 (+2d) | 2006-05-11 → 2006-05-17 (+6d) | 3d → 5d |  |  |  |
| 38 | **Component Production** | 2006-05-15 → 2006-05-19 (+4d) | 2006-06-20 → 2006-06-26 (+6d) |  |  |  |  |
| 39 | Design Posting | 2006-05-15 → 2006-05-19 (+4d) | 2006-05-23 → 2006-05-29 (+6d) |  |  |  |  |
| 40 | Design Review | 2006-05-23 → 2006-05-29 (+6d) | 2006-05-29 → 2006-06-02 (+4d) |  |  |  |  |
| 41 | Design Final Fixes | 2006-05-29 → 2006-06-02 (+4d) | 2006-05-31 → 2006-06-06 (+6d) |  |  |  |  |
| 42 | Creation of Dev Distro | 2006-05-31 → 2006-06-06 (+6d) | 2006-06-01 → 2006-06-07 (+6d) |  |  |  |  |
| 43 | Development Posting | 2006-06-01 → 2006-06-07 (+6d) | 2006-06-09 → 2006-06-15 (+6d) |  |  |  |  |
| 44 | Development Review | 2006-06-09 → 2006-06-15 (+6d) | 2006-06-15 → 2006-06-21 (+6d) |  |  |  |  |
| 45 | Development Final Fixes | 2006-06-15 → 2006-06-21 (+6d) | 2006-06-19 → 2006-06-23 (+4d) |  |  |  |  |
| 46 | Post to Catalog | 2006-06-19 → 2006-06-23 (+4d) | 2006-06-20 → 2006-06-26 (+6d) |  |  |  |  |
| 47 | **Assembly Competitions** | 2006-05-30 → 2006-06-05 (+6d) | 2006-07-17 → 2006-07-21 (+4d) |  |  |  |  |
| 48 | **Setup** | 2006-05-30 → 2006-06-05 (+6d) | 2006-06-21 → 2006-06-27 (+6d) |  |  |  |  |
| 49 | Divide Use Cases for Competitions | 2006-05-30 → 2006-06-05 (+6d) | 2006-05-31 → 2006-06-06 (+6d) |  |  |  |  |
| 50 | TopCoder Website Informaiton Posted | 2006-06-06 → 2006-06-12 (+6d) | 2006-06-07 → 2006-06-13 (+6d) |  |  |  |  |
| 51 | Package Components | 2006-06-20 → 2006-06-26 (+6d) | 2006-06-21 → 2006-06-27 (+6d) |  |  |  |  |
| 52 | **Test Case Development** | 2006-06-07 → 2006-06-13 (+6d) | 2006-06-14 → 2006-06-20 (+6d) |  |  |  |  |
| 53 | Submit tests | 2006-06-07 → 2006-06-13 (+6d) | 2006-06-13 → 2006-06-19 (+6d) |  |  |  |  |
| 54 | Screen test cases | 2006-06-13 → 2006-06-19 (+6d) | 2006-06-14 → 2006-06-20 (+6d) |  |  |  |  |
| 55 | Team Formation | 2006-06-07 → 2006-06-13 (+6d) | 2006-06-21 → 2006-06-27 (+6d) |  |  |  |  |
| 56 | **Development** | 2006-06-21 → 2006-06-27 (+6d) | 2006-07-17 → 2006-07-21 (+4d) |  |  |  |  |
| 57 | **Opening Round** | 2006-06-21 → 2006-06-27 (+6d) | 2006-07-17 → 2006-07-21 (+4d) |  |  |  |  |
| 58 | **Team Development** | 2006-06-21 → 2006-06-27 (+6d) | 2006-06-29 → 2006-07-05 (+6d) |  |  |  |  |
| 59 | **Development of Use Cases** | 2006-06-21 → 2006-06-27 (+6d) | 2006-06-29 → 2006-07-05 (+6d) |  |  |  |  |
| 60 | Create Unit Tests | 2006-06-21 → 2006-06-27 (+6d) | 2006-06-26 → 2006-06-30 (+4d) |  |  |  |  |
| 61 | Convert Prototype | 2006-06-21 → 2006-06-27 (+6d) | 2006-06-26 → 2006-06-30 (+4d) |  |  |  |  |
| 62 | Configure components | 2006-06-21 → 2006-06-27 (+6d) | 2006-06-26 → 2006-06-30 (+4d) |  |  |  |  |
| 63 | Test | 2006-06-26 → 2006-06-30 (+4d) | 2006-06-29 → 2006-07-05 (+6d) |  |  |  |  |
| 64 | **Test case challenge** | 2006-06-29 → 2006-07-05 (+6d) | 2006-07-03 → 2006-07-07 (+4d) |  |  |  |  |
| 65 | Submit Challenges | 2006-06-29 → 2006-07-05 (+6d) | 2006-06-30 → 2006-07-06 (+6d) |  |  |  |  |
| 66 | Appeals response | 2006-06-30 → 2006-07-06 (+6d) | 2006-07-03 → 2006-07-07 (+4d) |  |  |  |  |
| 67 | **Review** | 2006-07-03 → 2006-07-07 (+4d) | 2006-07-17 → 2006-07-21 (+4d) |  |  |  |  |
| 68 | Score Testcases | 2006-07-03 → 2006-07-07 (+4d) | 2006-07-04 → 2006-07-10 (+6d) |  |  |  |  |
| 69 | Score Submissions | 2006-07-03 → 2006-07-07 (+4d) | 2006-07-05 → 2006-07-11 (+6d) |  |  |  |  |
| 70 | Review Code | 2006-07-05 → 2006-07-11 (+6d) | 2006-07-07 → 2006-07-13 (+6d) |  |  |  |  |
| 71 | Appeals | 2006-07-07 → 2006-07-13 (+6d) | 2006-07-10 → 2006-07-14 (+4d) |  |  |  |  |
| 72 | Appeals Response | 2006-07-10 → 2006-07-14 (+4d) | 2006-07-11 → 2006-07-17 (+6d) |  |  |  |  |
| 73 | Final Fixes | 2006-07-11 → 2006-07-17 (+6d) | 2006-07-14 → 2006-07-20 (+6d) |  |  |  |  |
| 74 | Final Review/PM Certification | 2006-07-14 → 2006-07-20 (+6d) | 2006-07-17 → 2006-07-21 (+4d) |  |  |  |  |
| 75 | **Round Two** | 2006-06-21 → 2006-06-27 (+6d) | 2006-07-17 → 2006-07-21 (+4d) |  |  |  |  |
| 76 | **Team Development** | 2006-06-21 → 2006-06-27 (+6d) | 2006-06-29 → 2006-07-05 (+6d) |  |  |  |  |
| 77 | **Development of Use Cases** | 2006-06-21 → 2006-06-27 (+6d) | 2006-06-29 → 2006-07-05 (+6d) |  |  |  |  |
| 78 | Create Unit Tests | 2006-06-21 → 2006-06-27 (+6d) | 2006-06-26 → 2006-06-30 (+4d) |  |  |  |  |
| 79 | Convert Prototype | 2006-06-21 → 2006-06-27 (+6d) | 2006-06-26 → 2006-06-30 (+4d) |  |  |  |  |
| 80 | Configure components | 2006-06-21 → 2006-06-27 (+6d) | 2006-06-26 → 2006-06-30 (+4d) |  |  |  |  |
| 81 | Test | 2006-06-26 → 2006-06-30 (+4d) | 2006-06-29 → 2006-07-05 (+6d) |  |  |  |  |
| 82 | **Test case challenge** | 2006-06-29 → 2006-07-05 (+6d) | 2006-07-03 → 2006-07-07 (+4d) |  |  |  |  |
| 83 | Submit Challenges | 2006-06-29 → 2006-07-05 (+6d) | 2006-06-30 → 2006-07-06 (+6d) |  |  |  |  |
| 84 | Appeals response | 2006-06-30 → 2006-07-06 (+6d) | 2006-07-03 → 2006-07-07 (+4d) |  |  |  |  |
| 85 | **Review** | 2006-07-03 → 2006-07-07 (+4d) | 2006-07-17 → 2006-07-21 (+4d) |  |  |  |  |

| ID | Task | Start | Finish | Duration | Total float |
| --- | --- | --- | --- | --- | --- |
| 86 | Score Testcases | 2006-07-03 → 2006-07-07 (+4d) | 2006-07-04 → 2006-07-10 (+6d) |  |  |
| 87 | Score Submissions | 2006-07-03 → 2006-07-07 (+4d) | 2006-07-05 → 2006-07-11 (+6d) |  |  |
| 88 | Review Code | 2006-07-05 → 2006-07-11 (+6d) | 2006-07-07 → 2006-07-13 (+6d) |  |  |
| 89 | Appeals | 2006-07-07 → 2006-07-13 (+6d) | 2006-07-10 → 2006-07-14 (+4d) |  |  |
| 90 | Appeals Response | 2006-07-10 → 2006-07-14 (+4d) | 2006-07-11 → 2006-07-17 (+6d) |  |  |
| 91 | Final Fixes | 2006-07-11 → 2006-07-17 (+6d) | 2006-07-14 → 2006-07-20 (+6d) |  |  |
| 92 | Final Review/ PM Certification | 2006-07-14 → 2006-07-20 (+6d) | 2006-07-17 → 2006-07-21 (+4d) |  |  |
| 93 | **Deployment** | 2006-07-17 → 2006-07-21 (+4d) | 2006-07-24 → 2006-08-02 (+9d) | 5d → 8d | 15d → 2d |
| 94 | Deployment to Customer QA | 2006-07-17 → 2006-07-21 (+4d) | 2006-07-24 → 2006-08-02 (+9d) | 5d → 8d | 15d → 2d |
| 95 | **Testing Iteration** | 2006-07-24 → 2006-08-02 (+9d) | 2006-08-07 → 2006-08-30 (+23d) | 10d → 20d | 15d → 2d |
| 96 | Test Plan Execution | 2006-07-24 → 2006-08-02 (+9d) | 2006-07-31 → 2006-08-16 (+16d) | 5d → 10d | 15d → 2d |
| 97 | User Acceptance Testing | 2006-07-31 → 2006-08-16 (+16d) | 2006-08-07 → 2006-08-30 (+23d) | 5d → 10d | 15d → 2d |
| 98 | **Support** | 2006-07-17 → 2006-07-21 (+4d) | 2006-08-28 → 2006-09-01 (+4d) |  |  |
| 99 | Capture DRs | 2006-07-17 → 2006-07-21 (+4d) | 2006-08-07 → 2006-08-11 (+4d) |  |  |
| 100 | Release Fix | 2006-08-07 → 2006-08-11 (+4d) | 2006-08-28 → 2006-09-01 (+4d) |  |  |

## Version 5 (saved 2006-04-19)

Note of the change: updates based on review from Tong

Last finish 2006-09-01 → 2006-09-08 (+7d). Complete tasks 16 → 20.

Added:

| ID | Task | Duration | Start | Finish | Predecessors | Constraint |
| --- | --- | --- | --- | --- | --- | --- |
| 28 | Test Scenarios | 10d | 2006-04-21 | 2006-05-04 | 23 | finish no earlier than 2006-05-04 |

Changed:

| ID | Task | Start | Finish | Duration | Complete | Total float | Predecessors | Other |
| --- | --- | --- | --- | --- | --- | --- | --- | --- |
| 1 | **TopCoder Online Review/Scorecard Project** |  | 2006-09-01 → 2006-09-08 (+7d) | 307.5d? → 312.5d? | 17% → 19% |  |  |  |
| 7 | **Application Specification** |  |  |  | 83% → 98% |  |  |  |
| 21 | Review Meeting | 2006-04-07 A | 2006-04-10 A |  | 0% → 100% | 0d → none |  |  |
| 22 | Prototype Revision 2 Review | 2006-04-11 A | 2006-04-12 A |  | 0% → 100% | 0d → none |  |  |
| 24 | Review Meeting | 2006-04-13 A | 2006-04-13 A |  | 0% → 100% | 0d → none |  |  |
| 25 | Update Final Specification Deliverables | 2006-04-13 A | 2006-04-17 A |  | 0% → 100% | 0d → none |  |  |
| 27 | **Application Architecture** |  | 2006-05-19 → 2006-05-26 (+7d) | 23d → 28d |  |  |  |  |
| 30 | Update Site Map |  |  |  |  |  |  | was named Update Site Map and Site Definition; resources none → Kim Ruhl; Petar Canic |
| 31 | Component Sequence Diagrams |  |  |  |  |  |  | resources Component Architect → WishingBone |
| 32 | Component Interface Diagram |  |  |  |  |  |  | resources Component Architect → WishingBone |
| 33 | Component Diagram |  |  |  |  |  |  | resources Component Architect → WishingBone |
| 34 | Physical Data Model Definition |  |  |  |  | 0.5d → 0d |  | resources Component Architect → WishingBone |
| 35 | PM Review | 2006-05-17 → 2006-05-10 (-7d) | 2006-05-18 → 2006-05-11 (-7d) |  |  | 0.5d → 10.5d | 29, 34 → 29 |  |
| 36 | Application Architecture Presentation | 2006-05-18 → 2006-05-11 (-7d) | 2006-05-18 → 2006-05-11 (-7d) |  |  | 0.5d → 10.5d |  |  |
| 37 | Component Specifications | 2006-05-10 → 2006-05-17 (+7d) | 2006-05-19 → 2006-05-26 (+7d) |  |  |  | 29 → 34 |  |
| 38 | Application Design Specification | 2006-05-10 → 2006-05-17 (+7d) | 2006-05-17 → 2006-05-24 (+7d) |  |  |  | 29 → 34 |  |
| 39 | **Component Production** | 2006-05-19 → 2006-05-26 (+7d) | 2006-06-26 → 2006-07-03 (+7d) |  |  |  |  |  |
| 40 | Design Posting | 2006-05-19 → 2006-05-26 (+7d) | 2006-05-29 → 2006-06-05 (+7d) |  |  |  |  |  |
| 41 | Design Review | 2006-05-29 → 2006-06-05 (+7d) | 2006-06-02 → 2006-06-09 (+7d) |  |  |  |  |  |
| 42 | Design Final Fixes | 2006-06-02 → 2006-06-09 (+7d) | 2006-06-06 → 2006-06-13 (+7d) |  |  |  |  |  |
| 43 | Creation of Dev Distro | 2006-06-06 → 2006-06-13 (+7d) | 2006-06-07 → 2006-06-14 (+7d) |  |  |  |  |  |
| 44 | Development Posting | 2006-06-07 → 2006-06-14 (+7d) | 2006-06-15 → 2006-06-22 (+7d) |  |  |  |  |  |
| 45 | Development Review | 2006-06-15 → 2006-06-22 (+7d) | 2006-06-21 → 2006-06-28 (+7d) |  |  |  |  |  |
| 46 | Development Final Fixes | 2006-06-21 → 2006-06-28 (+7d) | 2006-06-23 → 2006-06-30 (+7d) |  |  |  |  |  |
| 47 | Post to Catalog | 2006-06-23 → 2006-06-30 (+7d) | 2006-06-26 → 2006-07-03 (+7d) |  |  |  |  |  |
| 48 | **Assembly Competitions** | 2006-06-05 → 2006-06-12 (+7d) | 2006-07-21 → 2006-07-28 (+7d) |  |  |  |  |  |
| 49 | **Setup** | 2006-06-05 → 2006-06-12 (+7d) | 2006-06-27 → 2006-07-04 (+7d) |  |  |  |  |  |
| 50 | Divide Use Cases for Competitions | 2006-06-05 → 2006-06-12 (+7d) | 2006-06-06 → 2006-06-13 (+7d) |  |  |  |  |  |
| 51 | TopCoder Website Informaiton Posted | 2006-06-12 → 2006-06-19 (+7d) | 2006-06-13 → 2006-06-20 (+7d) |  |  |  |  |  |
| 52 | Package Components | 2006-06-26 → 2006-07-03 (+7d) | 2006-06-27 → 2006-07-04 (+7d) |  |  |  |  |  |
| 53 | **Test Case Development** | 2006-06-13 → 2006-06-20 (+7d) | 2006-06-20 → 2006-06-27 (+7d) |  |  |  |  |  |
| 54 | Submit tests | 2006-06-13 → 2006-06-20 (+7d) | 2006-06-19 → 2006-06-26 (+7d) |  |  |  |  |  |
| 55 | Screen test cases | 2006-06-19 → 2006-06-26 (+7d) | 2006-06-20 → 2006-06-27 (+7d) |  |  |  |  |  |
| 56 | Team Formation | 2006-06-13 → 2006-06-20 (+7d) | 2006-06-27 → 2006-07-04 (+7d) |  |  |  |  |  |
| 57 | **Development** | 2006-06-27 → 2006-07-04 (+7d) | 2006-07-21 → 2006-07-28 (+7d) |  |  |  |  |  |
| 58 | **Opening Round** | 2006-06-27 → 2006-07-04 (+7d) | 2006-07-21 → 2006-07-28 (+7d) |  |  |  |  |  |
| 59 | **Team Development** | 2006-06-27 → 2006-07-04 (+7d) | 2006-07-05 → 2006-07-12 (+7d) |  |  |  |  |  |
| 60 | **Development of Use Cases** | 2006-06-27 → 2006-07-04 (+7d) | 2006-07-05 → 2006-07-12 (+7d) |  |  |  |  |  |
| 61 | Create Unit Tests | 2006-06-27 → 2006-07-04 (+7d) | 2006-06-30 → 2006-07-07 (+7d) |  |  |  |  |  |
| 62 | Convert Prototype | 2006-06-27 → 2006-07-04 (+7d) | 2006-06-30 → 2006-07-07 (+7d) |  |  |  |  |  |
| 63 | Configure components | 2006-06-27 → 2006-07-04 (+7d) | 2006-06-30 → 2006-07-07 (+7d) |  |  |  |  |  |
| 64 | Test | 2006-06-30 → 2006-07-07 (+7d) | 2006-07-05 → 2006-07-12 (+7d) |  |  |  |  |  |
| 65 | **Test case challenge** | 2006-07-05 → 2006-07-12 (+7d) | 2006-07-07 → 2006-07-14 (+7d) |  |  |  |  |  |
| 66 | Submit Challenges | 2006-07-05 → 2006-07-12 (+7d) | 2006-07-06 → 2006-07-13 (+7d) |  |  |  |  |  |
| 67 | Appeals response | 2006-07-06 → 2006-07-13 (+7d) | 2006-07-07 → 2006-07-14 (+7d) |  |  |  |  |  |
| 68 | **Review** | 2006-07-07 → 2006-07-14 (+7d) | 2006-07-21 → 2006-07-28 (+7d) |  |  |  |  |  |
| 69 | Score Testcases | 2006-07-07 → 2006-07-14 (+7d) | 2006-07-10 → 2006-07-17 (+7d) |  |  |  |  |  |
| 70 | Score Submissions | 2006-07-07 → 2006-07-14 (+7d) | 2006-07-11 → 2006-07-18 (+7d) |  |  |  |  |  |
| 71 | Review Code | 2006-07-11 → 2006-07-18 (+7d) | 2006-07-13 → 2006-07-20 (+7d) |  |  |  |  |  |
| 72 | Appeals | 2006-07-13 → 2006-07-20 (+7d) | 2006-07-14 → 2006-07-21 (+7d) |  |  |  |  |  |
| 73 | Appeals Response | 2006-07-14 → 2006-07-21 (+7d) | 2006-07-17 → 2006-07-24 (+7d) |  |  |  |  |  |
| 74 | Final Fixes | 2006-07-17 → 2006-07-24 (+7d) | 2006-07-20 → 2006-07-27 (+7d) |  |  |  |  |  |
| 75 | Final Review/PM Certification | 2006-07-20 → 2006-07-27 (+7d) | 2006-07-21 → 2006-07-28 (+7d) |  |  |  |  |  |
| 76 | **Round Two** | 2006-06-27 → 2006-07-04 (+7d) | 2006-07-21 → 2006-07-28 (+7d) |  |  |  |  |  |
| 77 | **Team Development** | 2006-06-27 → 2006-07-04 (+7d) | 2006-07-05 → 2006-07-12 (+7d) |  |  |  |  |  |
| 78 | **Development of Use Cases** | 2006-06-27 → 2006-07-04 (+7d) | 2006-07-05 → 2006-07-12 (+7d) |  |  |  |  |  |
| 79 | Create Unit Tests | 2006-06-27 → 2006-07-04 (+7d) | 2006-06-30 → 2006-07-07 (+7d) |  |  |  |  |  |
| 80 | Convert Prototype | 2006-06-27 → 2006-07-04 (+7d) | 2006-06-30 → 2006-07-07 (+7d) |  |  |  |  |  |
| 81 | Configure components | 2006-06-27 → 2006-07-04 (+7d) | 2006-06-30 → 2006-07-07 (+7d) |  |  |  |  |  |
| 82 | Test | 2006-06-30 → 2006-07-07 (+7d) | 2006-07-05 → 2006-07-12 (+7d) |  |  |  |  |  |
| 83 | **Test case challenge** | 2006-07-05 → 2006-07-12 (+7d) | 2006-07-07 → 2006-07-14 (+7d) |  |  |  |  |  |
| 84 | Submit Challenges | 2006-07-05 → 2006-07-12 (+7d) | 2006-07-06 → 2006-07-13 (+7d) |  |  |  |  |  |
| 85 | Appeals response | 2006-07-06 → 2006-07-13 (+7d) | 2006-07-07 → 2006-07-14 (+7d) |  |  |  |  |  |
| 86 | **Review** | 2006-07-07 → 2006-07-14 (+7d) | 2006-07-21 → 2006-07-28 (+7d) |  |  |  |  |  |
| 87 | Score Testcases | 2006-07-07 → 2006-07-14 (+7d) | 2006-07-10 → 2006-07-17 (+7d) |  |  |  |  |  |
| 88 | Score Submissions | 2006-07-07 → 2006-07-14 (+7d) | 2006-07-11 → 2006-07-18 (+7d) |  |  |  |  |  |
| 89 | Review Code | 2006-07-11 → 2006-07-18 (+7d) | 2006-07-13 → 2006-07-20 (+7d) |  |  |  |  |  |
| 90 | Appeals | 2006-07-13 → 2006-07-20 (+7d) | 2006-07-14 → 2006-07-21 (+7d) |  |  |  |  |  |
| 91 | Appeals Response | 2006-07-14 → 2006-07-21 (+7d) | 2006-07-17 → 2006-07-24 (+7d) |  |  |  |  |  |
| 92 | Final Fixes | 2006-07-17 → 2006-07-24 (+7d) | 2006-07-20 → 2006-07-27 (+7d) |  |  |  |  |  |

| ID | Task | Start | Finish |
| --- | --- | --- | --- |
| 93 | Final Review/ PM Certification | 2006-07-20 → 2006-07-27 (+7d) | 2006-07-21 → 2006-07-28 (+7d) |
| 94 | **Deployment** | 2006-07-21 → 2006-07-28 (+7d) | 2006-08-02 → 2006-08-09 (+7d) |
| 95 | Deployment to Customer QA | 2006-07-21 → 2006-07-28 (+7d) | 2006-08-02 → 2006-08-09 (+7d) |
| 96 | **Testing Iteration** | 2006-08-02 → 2006-08-09 (+7d) | 2006-08-30 → 2006-09-06 (+7d) |
| 97 | Test Plan Execution | 2006-08-02 → 2006-08-09 (+7d) | 2006-08-16 → 2006-08-23 (+7d) |
| 98 | User Acceptance Testing | 2006-08-16 → 2006-08-23 (+7d) | 2006-08-30 → 2006-09-06 (+7d) |
| 99 | **Support** | 2006-07-21 → 2006-07-28 (+7d) | 2006-09-01 → 2006-09-08 (+7d) |
| 100 | Capture DRs | 2006-07-21 → 2006-07-28 (+7d) | 2006-08-11 → 2006-08-18 (+7d) |
| 101 | Release Fix | 2006-08-11 → 2006-08-18 (+7d) | 2006-09-01 → 2006-09-08 (+7d) |

## Version 6 (saved 2006-05-01)

Last finish 2006-09-08 → 2006-09-07 (-1d). Complete tasks 20 → 21.

Added:

| ID | Task | Duration | Start | Finish | Predecessors |
| --- | --- | --- | --- | --- | --- |
| 51 | TopCoder Website Content Creation | 5d | 2006-06-23 | 2006-06-29 | 39FS-5d |
| 77 | PM Review/Certification | 1d | 2006-07-27 | 2006-07-27 | 76 |
| 83 | PM Certification | 1d | 2006-08-15 | 2006-08-15 | 82 |
| 87 | Send out how-to info to users | 1d | 2006-07-28 | 2006-07-28 | 77 |
| 88 | Beta Release to internal users | 1d | 2006-08-16 | 2006-08-16 | 78 |

Removed: 76 Round Two; 77 Team Development; 78 Development of Use Cases; 79 Create Unit Tests; 80 Convert Prototype; 81 Configure components; 82 Test; 83 Test case challenge; 84 Submit Challenges; 85 Appeals response; 86 Review; 87 Score Testcases; 88 Score Submissions; 89 Review Code; 90 Appeals; 91 Appeals Response; 92 Final Fixes; 93 Final Review/ PM Certification

Changed:

| ID | Task | Start | Finish | Duration | Complete | Total float | Predecessors | Other |
| --- | --- | --- | --- | --- | --- | --- | --- | --- |
| 1 | **TopCoder Online Review/Scorecard Project** |  | 2006-09-08 → 2006-09-07 (-1d) | 312.5d? → 312d? | 19% → 28% |  |  |  |
| 7 | **Application Specification** |  | 2006-04-18 A |  | 98% → 100% | 0d → none |  |  |
| 26 | Final Specification Presentation | 2006-04-17 A | 2006-04-18 A |  | 0% → 100% | 0d → none |  |  |
| 27 | **Application Architecture** | 2006-04-18 A | 2006-05-26 → 2006-05-24 (-2d) | 28d → 26.5d | 0% → 25% |  |  |  |
| 28 | Test Scenarios |  |  |  |  | 15.5d → 14d |  | resources none → Brian Chang |
| 30 | Physical Data Model Definition | 2006-05-10 → 2006-04-18 A (-22d) | 2006-05-17 → 2006-04-25 (-22d) |  | 0% → 95% | 0d → 21.5d | 31 → 7 |  |
| 31 | **UML Diagrams** | 2006-04-18 → 2006-04-20 A (+2d) |  | 16d → 15d | 0% → 44% |  |  |  |
| 32 | Component Sequence Diagrams | 2006-04-18 → 2006-04-20 A (+2d) | 2006-04-27 → 2006-04-28 (+1d) |  | 0% → 95% |  |  | constraint finish no earlier than 2005-02-04 → start no earlier than 2006-04-20 |
| 33 | Component Interface Diagram | 2006-04-27 → 2006-05-01 (+4d) |  | 7d → 6d |  |  |  |  |
| 34 | Component Diagram | 2006-05-08 → 2006-05-09 (+1d) |  |  |  |  |  |  |
| 35 | PM Review | 2006-05-10 → 2006-05-11 (+1d) |  |  |  | 10.5d → 8.5d |  |  |
| 36 | Application Architecture Presentation | 2006-05-11 → 2006-05-12 (+1d) | 2006-05-11 → 2006-05-12 (+1d) |  |  | 10.5d → 8.5d |  |  |
| 37 | Component Specifications | 2006-05-17 → 2006-05-11 (-6d) | 2006-05-26 → 2006-05-17 (-9d) | 7d → 5d |  |  | 30 → 31 |  |
| 38 | Application Design Specification | 2006-05-17 → 2006-05-18 (+1d) |  |  |  | 2d → 0d | 30 → 37 |  |
| 39 | **Component Production** | 2006-05-26 → 2006-05-25 (-1d) | 2006-07-03 → 2006-06-29 (-4d) |  |  |  |  |  |
| 40 | Design Posting | 2006-05-26 → 2006-05-25 (-1d) | 2006-06-05 → 2006-06-01 (-4d) |  |  |  |  |  |
| 41 | Design Review | 2006-06-05 → 2006-06-02 (-3d) | 2006-06-09 → 2006-06-07 (-2d) |  |  |  |  |  |
| 42 | Design Final Fixes | 2006-06-09 → 2006-06-08 (-1d) | 2006-06-13 → 2006-06-09 (-4d) |  |  |  |  |  |
| 43 | Creation of Dev Distro | 2006-06-13 → 2006-06-12 (-1d) | 2006-06-14 → 2006-06-12 (-2d) |  |  |  |  |  |
| 44 | Development Posting | 2006-06-14 → 2006-06-13 (-1d) | 2006-06-22 → 2006-06-20 (-2d) |  |  |  |  |  |
| 45 | Development Review | 2006-06-22 → 2006-06-21 (-1d) | 2006-06-28 → 2006-06-26 (-2d) |  |  |  |  |  |
| 46 | Development Final Fixes | 2006-06-28 → 2006-06-27 (-1d) | 2006-06-30 → 2006-06-28 (-2d) |  |  |  |  |  |
| 47 | Post to Catalog | 2006-06-30 → 2006-06-29 (-1d) | 2006-07-03 → 2006-06-29 (-4d) |  |  |  |  |  |
| 48 | **Assembly Competitions** | 2006-06-12 → 2006-06-09 (-3d) | 2006-07-28 → 2006-07-27 (-1d) | 34d → 35d |  |  |  |  |
| 49 | **Setup** | 2006-06-12 → 2006-06-09 (-3d) | 2006-07-04 → 2006-06-30 (-4d) |  |  |  |  |  |
| 50 | Divide Use Cases for Competitions | 2006-06-12 → 2006-06-09 (-3d) | 2006-06-13 → 2006-06-09 (-4d) |  |  | 33d → 34d |  |  |
| 52 | TopCoder Website Informaiton Posted | 2006-06-19 → 2006-06-16 (-3d) | 2006-06-20 → 2006-06-16 (-4d) |  |  |  |  |  |
| 53 | Package Components | 2006-07-03 → 2006-06-30 (-3d) | 2006-07-04 → 2006-06-30 (-4d) |  |  |  |  |  |
| 54 | **Test Case Development** | 2006-06-20 → 2006-06-19 (-1d) | 2006-06-27 → 2006-06-23 (-4d) |  |  |  |  |  |
| 55 | Submit tests | 2006-06-20 → 2006-06-19 (-1d) | 2006-06-26 → 2006-06-22 (-4d) |  |  |  |  |  |
| 56 | Screen test cases | 2006-06-26 → 2006-06-23 (-3d) | 2006-06-27 → 2006-06-23 (-4d) |  |  |  |  |  |
| 57 | Team Formation | 2006-06-20 → 2006-06-19 (-1d) | 2006-07-04 → 2006-06-30 (-4d) |  |  | 18d → 19d |  |  |
| 58 | **Development** | 2006-07-04 → 2006-07-03 (-1d) | 2006-07-28 → 2006-07-27 (-1d) | 18d → 19d |  |  |  |  |
| 59 | **Opening Round** | 2006-07-04 → 2006-07-03 (-1d) | 2006-07-28 → 2006-07-27 (-1d) | 18d → 19d |  |  |  |  |
| 60 | **Team Development** | 2006-07-04 → 2006-07-03 (-1d) | 2006-07-12 → 2006-07-10 (-2d) |  |  |  |  |  |
| 61 | **Development of Use Cases** | 2006-07-04 → 2006-07-03 (-1d) | 2006-07-12 → 2006-07-10 (-2d) |  |  |  |  |  |
| 62 | Create Unit Tests | 2006-07-04 → 2006-07-03 (-1d) | 2006-07-07 → 2006-07-05 (-2d) |  |  |  |  |  |
| 63 | Convert Prototype | 2006-07-04 → 2006-07-03 (-1d) | 2006-07-07 → 2006-07-05 (-2d) |  |  |  |  |  |
| 64 | Configure components | 2006-07-04 → 2006-07-03 (-1d) | 2006-07-07 → 2006-07-05 (-2d) |  |  |  |  |  |
| 65 | Test | 2006-07-07 → 2006-07-06 (-1d) | 2006-07-12 → 2006-07-10 (-2d) |  |  |  |  |  |
| 66 | **Test case challenge** | 2006-07-12 → 2006-07-11 (-1d) | 2006-07-14 → 2006-07-12 (-2d) |  |  |  |  |  |
| 67 | Submit Challenges | 2006-07-12 → 2006-07-11 (-1d) | 2006-07-13 → 2006-07-11 (-2d) |  |  |  |  |  |
| 68 | Appeals response | 2006-07-13 → 2006-07-12 (-1d) | 2006-07-14 → 2006-07-12 (-2d) |  |  |  |  |  |
| 69 | **Review** | 2006-07-14 → 2006-07-13 (-1d) | 2006-07-28 → 2006-07-27 (-1d) | 10d → 11d |  |  |  |  |
| 70 | Score Testcases | 2006-07-14 → 2006-07-13 (-1d) | 2006-07-17 → 2006-07-13 (-4d) |  |  |  |  |  |
| 71 | Score Submissions | 2006-07-14 → 2006-07-13 (-1d) | 2006-07-18 → 2006-07-14 (-4d) |  |  |  |  |  |
| 72 | Review Code | 2006-07-18 → 2006-07-17 (-1d) | 2006-07-20 → 2006-07-18 (-2d) |  |  |  |  |  |
| 73 | Appeals | 2006-07-20 → 2006-07-19 (-1d) | 2006-07-21 → 2006-07-19 (-2d) |  |  |  |  |  |
| 74 | Appeals Response | 2006-07-21 → 2006-07-20 (-1d) | 2006-07-24 → 2006-07-20 (-4d) |  |  |  |  |  |
| 75 | Final Fixes | 2006-07-24 → 2006-07-21 (-3d) | 2006-07-27 → 2006-07-25 (-2d) |  |  |  |  |  |
| 76 | Final Review | 2006-07-27 → 2006-07-26 (-1d) | 2006-07-28 → 2006-07-26 (-2d) |  |  |  |  | was named Final Review/PM Certification |
| 78 | **Deployment** |  | 2006-08-09 → 2006-08-15 (+6d) | 8d → 13d |  | 2d → 16d |  |  |
| 79 | Deployment |  | 2006-08-09 → 2006-08-02 (-7d) | 8d → 4d |  | 2d → 16d |  | was named Deployment to Customer QA |
| 80 | **Testing Iteration** | 2006-08-09 → 2006-08-03 (-6d) | 2006-09-06 → 2006-08-15 (-22d) | 20d → 9d |  | 2d → 16d |  |  |
| 81 | Test Plan Execution | 2006-08-09 → 2006-08-03 (-6d) | 2006-08-23 → 2006-08-07 (-16d) | 10d → 3d |  | 2d → 16d |  |  |
| 82 | User Acceptance Testing | 2006-08-23 → 2006-08-08 (-15d) | 2006-09-06 → 2006-08-14 (-23d) | 10d → 5d |  | 2d → 16d |  |  |
| 84 | **Support** |  | 2006-09-08 → 2006-09-07 (-1d) |  |  |  |  |  |
| 85 | Capture DRs |  | 2006-08-18 → 2006-08-17 (-1d) |  |  |  |  |  |
| 86 | Release Fix |  | 2006-09-08 → 2006-09-07 (-1d) |  |  |  |  |  |

## Version 7 (saved 2006-05-04)

Last finish stays 2006-09-07. Complete tasks 21 → 22.

Changed:

| ID | Task | Start | Finish | Complete | Total float |
| --- | --- | --- | --- | --- | --- |
| 1 | **TopCoder Online Review/Scorecard Project** |  |  | 28% → 30% |  |
| 27 | **Application Architecture** |  |  | 25% → 35% |  |
| 29 | Update Site Map | 2006-04-18 A | 2006-04-25 A | 0% → 100% | 21.5d → none |

## Version 8 (saved 2006-05-09)

Last finish stays 2006-09-07.

Changed:

| ID | Task | Start | Finish | Complete | Total float | Other |
| --- | --- | --- | --- | --- | --- | --- |
| 1 | **TopCoder Online Review/Scorecard Project** |  |  | 30% → 32% |  |  |
| 27 | **Application Architecture** |  |  | 35% → 42% |  |  |
| 28 | Test Scenarios | 2006-04-21 → 2006-05-08 (+17d) | 2006-05-04 → 2006-05-19 (+15d) |  | 14d → 3d | constraint finish no earlier than 2006-05-04 → start no earlier than 2006-05-08; resources Brian Chang → Dean Brodrick |
| 31 | **UML Diagrams** |  |  | 44% → 64% |  |  |
| 33 | Component Interface Diagram | 2006-05-01 A |  | 0% → 50% |  |  |

## Version 9 (saved 2006-05-30)

Last finish 2006-09-07 → 2006-09-28 (+21d). Complete tasks 22 → 24.

Added:

| ID | Task | Duration | Start | Finish | Predecessors | Constraint | Resources |
| --- | --- | --- | --- | --- | --- | --- | --- |
| 37 | Review | 1d | 2006-05-30 | 2006-05-30 | 36 |  | Project Manager; Component Architect |
| 39 | **File Upload 2.0** | 26d | 2006-05-25 | 2006-06-29 |  |  |  |
| 48 | **Cached Web Element Tag** | 26d | 2006-05-25 | 2006-06-29 |  |  |  |
| 49 | Design Posting | 6d | 2006-05-25 | 2006-06-01 |  | start no earlier than 2006-05-25 | Member |
| 50 | Design Review | 4d | 2006-06-02 | 2006-06-07 | 49 | finish no earlier than 2005-03-21 | Member |
| 51 | Design Final Fixes | 2d | 2006-06-08 | 2006-06-09 | 50 |  | Member |
| 52 | Creation of Dev Distro | 1d | 2006-06-12 | 2006-06-12 | 51 |  | Component Manager |
| 53 | Development Posting | 6d | 2006-06-13 | 2006-06-20 | 52 | start no earlier than 2005-03-30 | Member |
| 54 | Development Review | 4d | 2006-06-21 | 2006-06-26 | 53 |  | Member |
| 55 | Development Final Fixes | 2d | 2006-06-27 | 2006-06-28 | 54 | finish no earlier than 2005-04-06 | Member |
| 56 | Post to Catalog | 1d | 2006-06-29 | 2006-06-29 | 55 |  | Component Manager |
| 57 | **Database Abstraction 1.1** | 26d | 2006-05-25 | 2006-06-29 |  |  |  |
| 58 | Design Posting | 6d | 2006-05-25 | 2006-06-01 |  | start no earlier than 2006-05-25 | Member |
| 59 | Design Review | 4d | 2006-06-02 | 2006-06-07 | 58 | finish no earlier than 2005-03-21 | Member |
| 60 | Design Final Fixes | 2d | 2006-06-08 | 2006-06-09 | 59 |  | Member |
| 61 | Creation of Dev Distro | 1d | 2006-06-12 | 2006-06-12 | 60 |  | Component Manager |
| 62 | Development Posting | 6d | 2006-06-13 | 2006-06-20 | 61 | start no earlier than 2005-03-30 | Member |
| 63 | Development Review | 4d | 2006-06-21 | 2006-06-26 | 62 |  | Member |
| 64 | Development Final Fixes | 2d | 2006-06-27 | 2006-06-28 | 63 | finish no earlier than 2005-04-06 | Member |
| 65 | Post to Catalog | 1d | 2006-06-29 | 2006-06-29 | 64 |  | Component Manager |
| 66 | **Search Builder - Bug Fix** | 26d | 2006-05-25 | 2006-06-29 |  |  |  |
| 67 | Design Posting | 6d | 2006-05-25 | 2006-06-01 |  | start no earlier than 2006-05-25 | Member |
| 68 | Design Review | 4d | 2006-06-02 | 2006-06-07 | 67 | finish no earlier than 2005-03-21 | Member |
| 69 | Design Final Fixes | 2d | 2006-06-08 | 2006-06-09 | 68 |  | Member |
| 70 | Creation of Dev Distro | 1d | 2006-06-12 | 2006-06-12 | 69 |  | Component Manager |
| 71 | Development Posting | 6d | 2006-06-13 | 2006-06-20 | 70 | start no earlier than 2005-03-30 | Member |
| 72 | Development Review | 4d | 2006-06-21 | 2006-06-26 | 71 |  | Member |
| 73 | Development Final Fixes | 2d | 2006-06-27 | 2006-06-28 | 72 | finish no earlier than 2005-04-06 | Member |
| 74 | Post to Catalog | 1d | 2006-06-29 | 2006-06-29 | 73 |  | Component Manager |
| 75 | **Scorecard Management** | 26d | 2006-06-01 | 2006-07-06 |  |  |  |
| 76 | Design Posting | 6d | 2006-06-01 | 2006-06-08 |  | start no earlier than 2006-06-01 | Member |
| 77 | Design Review | 4d | 2006-06-09 | 2006-06-14 | 76 | finish no earlier than 2005-03-21 | Member |
| 78 | Design Final Fixes | 2d | 2006-06-15 | 2006-06-16 | 77 |  | Member |
| 79 | Creation of Dev Distro | 1d | 2006-06-19 | 2006-06-19 | 78 |  | Component Manager |
| 80 | Development Posting | 6d | 2006-06-20 | 2006-06-27 | 79 | start no earlier than 2005-03-30 | Member |
| 81 | Development Review | 4d | 2006-06-28 | 2006-07-03 | 80 |  | Member |
| 82 | Development Final Fixes | 2d | 2006-07-04 | 2006-07-05 | 81 | finish no earlier than 2005-04-06 | Member |
| 83 | Post to Catalog | 1d | 2006-07-06 | 2006-07-06 | 82 |  | Component Manager |
| 84 | **Review Management** | 26d | 2006-06-01 | 2006-07-06 |  |  |  |
| 85 | Design Posting | 6d | 2006-06-01 | 2006-06-08 |  | start no earlier than 2006-06-01 | Member |
| 86 | Design Review | 4d | 2006-06-09 | 2006-06-14 | 85 | finish no earlier than 2005-03-21 | Member |
| 87 | Design Final Fixes | 2d | 2006-06-15 | 2006-06-16 | 86 |  | Member |
| 88 | Creation of Dev Distro | 1d | 2006-06-19 | 2006-06-19 | 87 |  | Component Manager |
| 89 | Development Posting | 6d | 2006-06-20 | 2006-06-27 | 88 | start no earlier than 2005-03-30 | Member |
| 90 | Development Review | 4d | 2006-06-28 | 2006-07-03 | 89 |  | Member |
| 91 | Development Final Fixes | 2d | 2006-07-04 | 2006-07-05 | 90 | finish no earlier than 2005-04-06 | Member |
| 92 | Post to Catalog | 1d | 2006-07-06 | 2006-07-06 | 91 |  | Component Manager |
| 93 | **Project Phases Management** | 26d | 2006-06-08 | 2006-07-13 |  |  |  |
| 94 | Design Posting | 6d | 2006-06-08 | 2006-06-15 |  | start no earlier than 2006-06-08 | Member |
| 95 | Design Review | 4d | 2006-06-16 | 2006-06-21 | 94 | finish no earlier than 2005-03-21 | Member |
| 96 | Design Final Fixes | 2d | 2006-06-22 | 2006-06-23 | 95 |  | Member |
| 97 | Creation of Dev Distro | 1d | 2006-06-26 | 2006-06-26 | 96 |  | Component Manager |
| 98 | Development Posting | 6d | 2006-06-27 | 2006-07-04 | 97 | start no earlier than 2005-03-30 | Member |
| 99 | Development Review | 4d | 2006-07-05 | 2006-07-10 | 98 |  | Member |
| 100 | Development Final Fixes | 2d | 2006-07-11 | 2006-07-12 | 99 | finish no earlier than 2005-04-06 | Member |
| 101 | Post to Catalog | 1d | 2006-07-13 | 2006-07-13 | 100 |  | Component Manager |
| 102 | **Review Score Calculator** | 26d | 2006-06-08 | 2006-07-13 |  |  |  |
| 103 | Design Posting | 6d | 2006-06-08 | 2006-06-15 |  | start no earlier than 2006-06-08 | Member |
| 104 | Design Review | 4d | 2006-06-16 | 2006-06-21 | 103 | finish no earlier than 2005-03-21 | Member |
| 105 | Design Final Fixes | 2d | 2006-06-22 | 2006-06-23 | 104 |  | Member |
| 106 | Creation of Dev Distro | 1d | 2006-06-26 | 2006-06-26 | 105 |  | Component Manager |
| 107 | Development Posting | 6d | 2006-06-27 | 2006-07-04 | 106 | start no earlier than 2005-03-30 | Member |
| 108 | Development Review | 4d | 2006-07-05 | 2006-07-10 | 107 |  | Member |
| 109 | Development Final Fixes | 2d | 2006-07-11 | 2006-07-12 | 108 | finish no earlier than 2005-04-06 | Member |
| 110 | Post to Catalog | 1d | 2006-07-13 | 2006-07-13 | 109 |  | Component Manager |
| 111 | **Review Score Aggregator** | 26d | 2006-06-08 | 2006-07-13 |  |  |  |
| 112 | Design Posting | 6d | 2006-06-08 | 2006-06-15 |  | start no earlier than 2006-06-08 | Member |
| 113 | Design Review | 4d | 2006-06-16 | 2006-06-21 | 112 | finish no earlier than 2005-03-21 | Member |
| 114 | Design Final Fixes | 2d | 2006-06-22 | 2006-06-23 | 113 |  | Member |
| 115 | Creation of Dev Distro | 1d | 2006-06-26 | 2006-06-26 | 114 |  | Component Manager |
| 116 | Development Posting | 6d | 2006-06-27 | 2006-07-04 | 115 | start no earlier than 2005-03-30 | Member |
| 117 | Development Review | 4d | 2006-07-05 | 2006-07-10 | 116 |  | Member |
| 118 | Development Final Fixes | 2d | 2006-07-11 | 2006-07-12 | 117 | finish no earlier than 2005-04-06 | Member |
| 119 | Post to Catalog | 1d | 2006-07-13 | 2006-07-13 | 118 |  | Component Manager |
| 120 | **Project Management** | 26d | 2006-06-08 | 2006-07-13 |  |  |  |
| 121 | Design Posting | 6d | 2006-06-08 | 2006-06-15 |  | start no earlier than 2006-06-08 | Member |
| 122 | Design Review | 4d | 2006-06-16 | 2006-06-21 | 121 | finish no earlier than 2005-03-21 | Member |
| 123 | Design Final Fixes | 2d | 2006-06-22 | 2006-06-23 | 122 |  | Member |
| 124 | Creation of Dev Distro | 1d | 2006-06-26 | 2006-06-26 | 123 |  | Component Manager |
| 125 | Development Posting | 6d | 2006-06-27 | 2006-07-04 | 124 | start no earlier than 2005-03-30 | Member |
| 126 | Development Review | 4d | 2006-07-05 | 2006-07-10 | 125 |  | Member |
| 127 | Development Final Fixes | 2d | 2006-07-11 | 2006-07-12 | 126 | finish no earlier than 2005-04-06 | Member |
| 128 | Post to Catalog | 1d | 2006-07-13 | 2006-07-13 | 127 |  | Component Manager |
| 129 | **Resource Management** | 26d | 2006-06-08 | 2006-07-13 |  |  |  |
| 130 | Design Posting | 6d | 2006-06-08 | 2006-06-15 |  | start no earlier than 2006-06-08 | Member |
| 131 | Design Review | 4d | 2006-06-16 | 2006-06-21 | 130 | finish no earlier than 2005-03-21 | Member |
| 132 | Design Final Fixes | 2d | 2006-06-22 | 2006-06-23 | 131 |  | Member |
| 133 | Creation of Dev Distro | 1d | 2006-06-26 | 2006-06-26 | 132 |  | Component Manager |
| 134 | Development Posting | 6d | 2006-06-27 | 2006-07-04 | 133 | start no earlier than 2005-03-30 | Member |
| 135 | Development Review | 4d | 2006-07-05 | 2006-07-10 | 134 |  | Member |
| 136 | Development Final Fixes | 2d | 2006-07-11 | 2006-07-12 | 135 | finish no earlier than 2005-04-06 | Member |
| 137 | Post to Catalog | 1d | 2006-07-13 | 2006-07-13 | 136 |  | Component Manager |
| 138 | **Deliverable Management** | 26d | 2006-06-15 | 2006-07-20 |  |  |  |
| 139 | Design Posting | 6d | 2006-06-15 | 2006-06-22 |  | start no earlier than 2006-06-15 | Member |
| 140 | Design Review | 4d | 2006-06-23 | 2006-06-28 | 139 | finish no earlier than 2005-03-21 | Member |
| 141 | Design Final Fixes | 2d | 2006-06-29 | 2006-06-30 | 140 |  | Member |
| 142 | Creation of Dev Distro | 1d | 2006-07-03 | 2006-07-03 | 141 |  | Component Manager |
| 143 | Development Posting | 6d | 2006-07-04 | 2006-07-11 | 142 | start no earlier than 2005-03-30 | Member |
| 144 | Development Review | 4d | 2006-07-12 | 2006-07-17 | 143 |  | Member |
| 145 | Development Final Fixes | 2d | 2006-07-18 | 2006-07-19 | 144 | finish no earlier than 2005-04-06 | Member |
| 146 | Post to Catalog | 1d | 2006-07-20 | 2006-07-20 | 145 |  | Component Manager |
| 147 | **Phase Management** | 26d | 2006-06-15 | 2006-07-20 |  |  |  |
| 148 | Design Posting | 6d | 2006-06-15 | 2006-06-22 |  | start no earlier than 2006-06-15 | Member |
| 149 | Design Review | 4d | 2006-06-23 | 2006-06-28 | 148 | finish no earlier than 2005-03-21 | Member |
| 150 | Design Final Fixes | 2d | 2006-06-29 | 2006-06-30 | 149 |  | Member |
| 151 | Creation of Dev Distro | 1d | 2006-07-03 | 2006-07-03 | 150 |  | Component Manager |
| 152 | Development Posting | 6d | 2006-07-04 | 2006-07-11 | 151 | start no earlier than 2005-03-30 | Member |
| 153 | Development Review | 4d | 2006-07-12 | 2006-07-17 | 152 |  | Member |
| 154 | Development Final Fixes | 2d | 2006-07-18 | 2006-07-19 | 153 | finish no earlier than 2005-04-06 | Member |
| 155 | Post to Catalog | 1d | 2006-07-20 | 2006-07-20 | 154 |  | Component Manager |
| 156 | **Project Phase Template** | 26d | 2006-06-15 | 2006-07-20 |  |  |  |
| 157 | Design Posting | 6d | 2006-06-15 | 2006-06-22 |  | start no earlier than 2006-06-15 | Member |
| 158 | Design Review | 4d | 2006-06-23 | 2006-06-28 | 157 | finish no earlier than 2005-03-21 | Member |
| 159 | Design Final Fixes | 2d | 2006-06-29 | 2006-06-30 | 158 |  | Member |
| 160 | Creation of Dev Distro | 1d | 2006-07-03 | 2006-07-03 | 159 |  | Component Manager |
| 161 | Development Posting | 6d | 2006-07-04 | 2006-07-11 | 160 | start no earlier than 2005-03-30 | Member |
| 162 | Development Review | 4d | 2006-07-12 | 2006-07-17 | 161 |  | Member |
| 163 | Development Final Fixes | 2d | 2006-07-18 | 2006-07-19 | 162 | finish no earlier than 2005-04-06 | Member |
| 164 | Post to Catalog | 1d | 2006-07-20 | 2006-07-20 | 163 |  | Component Manager |
| 165 | **Online Review Login (custom)** | 26d | 2006-06-15 | 2006-07-20 |  |  |  |
| 166 | Design Posting | 6d | 2006-06-15 | 2006-06-22 |  | start no earlier than 2006-06-15 | Member |
| 167 | Design Review | 4d | 2006-06-23 | 2006-06-28 | 166 | finish no earlier than 2005-03-21 | Member |
| 168 | Design Final Fixes | 2d | 2006-06-29 | 2006-06-30 | 167 |  | Member |
| 169 | Creation of Dev Distro | 1d | 2006-07-03 | 2006-07-03 | 168 |  | Component Manager |
| 170 | Development Posting | 6d | 2006-07-04 | 2006-07-11 | 169 | start no earlier than 2005-03-30 | Member |
| 171 | Development Review | 4d | 2006-07-12 | 2006-07-17 | 170 |  | Member |
| 172 | Development Final Fixes | 2d | 2006-07-18 | 2006-07-19 | 171 | finish no earlier than 2005-04-06 | Member |
| 173 | Post to Catalog | 1d | 2006-07-20 | 2006-07-20 | 172 |  | Component Manager |
| 174 | **User Project Data Store (custom)** | 26d | 2006-06-15 | 2006-07-20 |  |  |  |
| 175 | Design Posting | 6d | 2006-06-15 | 2006-06-22 |  | start no earlier than 2006-06-15 | Member |
| 176 | Design Review | 4d | 2006-06-23 | 2006-06-28 | 175 | finish no earlier than 2005-03-21 | Member |
| 177 | Design Final Fixes | 2d | 2006-06-29 | 2006-06-30 | 176 |  | Member |
| 178 | Creation of Dev Distro | 1d | 2006-07-03 | 2006-07-03 | 177 |  | Component Manager |
| 179 | Development Posting | 6d | 2006-07-04 | 2006-07-11 | 178 | start no earlier than 2005-03-30 | Member |
| 180 | Development Review | 4d | 2006-07-12 | 2006-07-17 | 179 |  | Member |
| 181 | Development Final Fixes | 2d | 2006-07-18 | 2006-07-19 | 180 | finish no earlier than 2005-04-06 | Member |
| 182 | Post to Catalog | 1d | 2006-07-20 | 2006-07-20 | 181 |  | Component Manager |
| 183 | **Online Review Ajax Support (custom)** | 26d | 2006-06-22 | 2006-07-27 |  |  |  |
| 184 | Design Posting | 6d | 2006-06-22 | 2006-06-29 |  | start no earlier than 2006-06-22 | Member |
| 185 | Design Review | 4d | 2006-06-30 | 2006-07-05 | 184 | finish no earlier than 2005-03-21 | Member |
| 186 | Design Final Fixes | 2d | 2006-07-06 | 2006-07-07 | 185 |  | Member |
| 187 | Creation of Dev Distro | 1d | 2006-07-10 | 2006-07-10 | 186 |  | Component Manager |
| 188 | Development Posting | 6d | 2006-07-11 | 2006-07-18 | 187 | start no earlier than 2005-03-30 | Member |
| 189 | Development Review | 4d | 2006-07-19 | 2006-07-24 | 188 |  | Member |
| 190 | Development Final Fixes | 2d | 2006-07-25 | 2006-07-26 | 189 | finish no earlier than 2005-04-06 | Member |
| 191 | Post to Catalog | 1d | 2006-07-27 | 2006-07-27 | 190 |  | Component Manager |
| 192 | **Online Review Deliverables (custom)** | 26d | 2006-06-22 | 2006-07-27 |  |  |  |
| 193 | Design Posting | 6d | 2006-06-22 | 2006-06-29 |  | start no earlier than 2006-06-22 | Member |
| 194 | Design Review | 4d | 2006-06-30 | 2006-07-05 | 193 | finish no earlier than 2005-03-21 | Member |
| 195 | Design Final Fixes | 2d | 2006-07-06 | 2006-07-07 | 194 |  | Member |
| 196 | Creation of Dev Distro | 1d | 2006-07-10 | 2006-07-10 | 195 |  | Component Manager |
| 197 | Development Posting | 6d | 2006-07-11 | 2006-07-18 | 196 | start no earlier than 2005-03-30 | Member |
| 198 | Development Review | 4d | 2006-07-19 | 2006-07-24 | 197 |  | Member |
| 199 | Development Final Fixes | 2d | 2006-07-25 | 2006-07-26 | 198 | finish no earlier than 2005-04-06 | Member |
| 200 | Post to Catalog | 1d | 2006-07-27 | 2006-07-27 | 199 |  | Component Manager |
| 201 | **Online Review Phases (custom)** | 26d | 2006-06-22 | 2006-07-27 |  |  |  |
| 202 | Design Posting | 6d | 2006-06-22 | 2006-06-29 |  | start no earlier than 2006-06-22 | Member |
| 203 | Design Review | 4d | 2006-06-30 | 2006-07-05 | 202 | finish no earlier than 2005-03-21 | Member |
| 204 | Design Final Fixes | 2d | 2006-07-06 | 2006-07-07 | 203 |  | Member |
| 205 | Creation of Dev Distro | 1d | 2006-07-10 | 2006-07-10 | 204 |  | Component Manager |
| 206 | Development Posting | 6d | 2006-07-11 | 2006-07-18 | 205 | start no earlier than 2005-03-30 | Member |
| 207 | Development Review | 4d | 2006-07-19 | 2006-07-24 | 206 |  | Member |
| 208 | Development Final Fixes | 2d | 2006-07-25 | 2006-07-26 | 207 | finish no earlier than 2005-04-06 | Member |
| 209 | Post to Catalog | 1d | 2006-07-27 | 2006-07-27 | 208 |  | Component Manager |
| 210 | **Online Review Web Elements (custom)** | 26d | 2006-06-22 | 2006-07-27 |  |  |  |
| 211 | Design Posting | 6d | 2006-06-22 | 2006-06-29 |  | start no earlier than 2006-06-22 | Member |
| 212 | Design Review | 4d | 2006-06-30 | 2006-07-05 | 211 | finish no earlier than 2005-03-21 | Member |
| 213 | Design Final Fixes | 2d | 2006-07-06 | 2006-07-07 | 212 |  | Member |
| 214 | Creation of Dev Distro | 1d | 2006-07-10 | 2006-07-10 | 213 |  | Component Manager |
| 215 | Development Posting | 6d | 2006-07-11 | 2006-07-18 | 214 | start no earlier than 2005-03-30 | Member |
| 216 | Development Review | 4d | 2006-07-19 | 2006-07-24 | 215 |  | Member |
| 217 | Development Final Fixes | 2d | 2006-07-25 | 2006-07-26 | 216 | finish no earlier than 2005-04-06 | Member |
| 218 | Post to Catalog | 1d | 2006-07-27 | 2006-07-27 | 217 |  | Component Manager |
| 219 | **Auto Pilot** | 26d | 2006-06-22 | 2006-07-27 |  |  |  |
| 220 | Design Posting | 6d | 2006-06-22 | 2006-06-29 |  | start no earlier than 2006-06-22 | Member |
| 221 | Design Review | 4d | 2006-06-30 | 2006-07-05 | 220 | finish no earlier than 2005-03-21 | Member |
| 222 | Design Final Fixes | 2d | 2006-07-06 | 2006-07-07 | 221 |  | Member |
| 223 | Creation of Dev Distro | 1d | 2006-07-10 | 2006-07-10 | 222 |  | Component Manager |
| 224 | Development Posting | 6d | 2006-07-11 | 2006-07-18 | 223 | start no earlier than 2005-03-30 | Member |
| 225 | Development Review | 4d | 2006-07-19 | 2006-07-24 | 224 |  | Member |
| 226 | Development Final Fixes | 2d | 2006-07-25 | 2006-07-26 | 225 | finish no earlier than 2005-04-06 | Member |
| 227 | Post to Catalog | 1d | 2006-07-27 | 2006-07-27 | 226 |  | Component Manager |
| 228 | **Auto Screening** | 26d | 2006-06-22 | 2006-07-27 |  |  |  |
| 229 | Design Posting | 6d | 2006-06-22 | 2006-06-29 |  | start no earlier than 2006-06-22 | Member |
| 230 | Design Review | 4d | 2006-06-30 | 2006-07-05 | 229 | finish no earlier than 2005-03-21 | Member |
| 231 | Design Final Fixes | 2d | 2006-07-06 | 2006-07-07 | 230 |  | Member |
| 232 | Creation of Dev Distro | 1d | 2006-07-10 | 2006-07-10 | 231 |  | Component Manager |
| 233 | Development Posting | 6d | 2006-07-11 | 2006-07-18 | 232 | start no earlier than 2005-03-30 | Member |
| 234 | Development Review | 4d | 2006-07-19 | 2006-07-24 | 233 |  | Member |
| 235 | Development Final Fixes | 2d | 2006-07-25 | 2006-07-26 | 234 | finish no earlier than 2005-04-06 | Member |
| 236 | Post to Catalog | 1d | 2006-07-27 | 2006-07-27 | 235 |  | Component Manager |

Removed: 35 PM Review; 36 Application Architecture Presentation

Changed:

| ID | Task | Start | Finish | Duration | Complete | Total float | Predecessors | Other |
| --- | --- | --- | --- | --- | --- | --- | --- | --- |
| 1 | **TopCoder Online Review/Scorecard Project** | 2005-06-29 A → 2004-01-27 A (-519d) | 2006-09-07 → 2006-09-28 (+21d) | 312d? → 698d? | 32% → 10% |  |  |  |
| 27 | **Application Architecture** |  | 2006-05-24 → 2006-05-30 (+6d) | 26.5d → 30.5d | 42% → 39% | 0d → 87d |  |  |
| 28 | Test Scenarios | 2006-05-08 A | 2006-05-19 A |  | 0% → 100% | 3d → none |  |  |
| 30 | Physical Data Model Definition |  | 2006-04-25 A |  | 95% → 100% | 21.5d → none |  |  |
| 31 | **UML Diagrams** |  | 2006-05-10 → 2006-05-28 (+18d) | 15d → 27d | 64% → 20% | 0d → 89d | 7 → none |  |
| 32 | Component Sequence Diagrams |  | 2006-04-28 → 2006-05-28 (+30d) | 7d → 27d | 95% → 25% | 3d → 74d | 7 → none | constraint start no earlier than 2006-04-20 → finish no earlier than 2006-05-28 |
| 33 | Component Interface Diagram |  | 2006-05-08 → 2006-05-28 (+20d) | 6d → 20d | 50% → 15% | 0d → 74d | 32 → none | constraint finish no earlier than 2005-02-04 → finish no earlier than 2006-05-28 |
| 34 | Component Diagram | 2006-05-09 → 2006-05-25 (+16d) | 2006-05-10 → 2006-05-28 (+18d) |  |  | 0d → 74d | 33 → none | constraint none → finish no earlier than 2006-05-28 |
| 35 | Component Specifications | 2006-05-11 → 2006-05-22 (+11d) | 2006-05-17 → 2006-05-26 (+9d) |  |  | 0d → 72d | 31 → none | constraint finish no earlier than 2005-02-11 → finish no earlier than 2006-05-26 |
| 36 | Application Design Specification | 2006-05-18 → 2006-05-29 (+11d) | 2006-05-24 → 2006-05-29 (+5d) | 5d → 1d |  | 0d → 72d |  | constraint none → finish no earlier than 2006-05-29 |
| 38 | **Component Production** |  | 2006-06-29 → 2006-07-27 (+28d) | 26d → 46d |  |  |  |  |
| 40 | Design Posting |  |  |  |  | 0d → 5d | 27 → none | constraint start no earlier than 2005-03-09 → start no earlier than 2006-05-25 |
| 237 | **Assembly Competitions** | 2006-06-09 → 2004-01-27 (-864d) | 2006-07-27 → 2006-08-17 (+21d) | 35d → 668d |  |  |  |  |
| 238 | **Setup** | 2006-06-09 → 2004-01-27 (-864d) | 2006-06-30 → 2006-07-27 (+27d) | 16d → 653d |  | 10d → 15d |  |  |
| 239 | Divide Use Cases for Competitions | 2006-06-09 → 2006-07-07 (+28d) | 2006-06-09 → 2006-07-07 (+28d) |  |  | 34d → 29d |  |  |
| 240 | TopCoder Website Content Creation | 2006-06-23 → 2006-07-21 (+28d) | 2006-06-29 → 2006-07-27 (+28d) |  |  | 20d → 15d |  |  |
| 241 | TopCoder Website Informaiton Posted | 2006-06-16 → 2006-07-14 (+28d) | 2006-06-16 → 2006-07-14 (+28d) |  |  | 5d → 0d |  |  |
| 242 | Package Components | 2006-06-30 → 2004-01-27 (-885d) | 2006-06-30 → 2004-01-27 (-885d) |  |  | 0d → 648d | 47 → none |  |
| 243 | **Test Case Development** | 2006-06-19 → 2006-07-17 (+28d) | 2006-06-23 → 2006-07-21 (+28d) |  |  | 5d → 0d |  |  |
| 244 | Submit tests | 2006-06-19 → 2006-07-17 (+28d) | 2006-06-22 → 2006-07-20 (+28d) |  |  | 5d → 0d |  |  |
| 245 | Screen test cases | 2006-06-23 → 2006-07-21 (+28d) | 2006-06-23 → 2006-07-21 (+28d) |  |  | 5d → 0d |  |  |
| 246 | Team Formation | 2006-06-19 → 2006-07-17 (+28d) | 2006-06-30 → 2006-07-28 (+28d) |  |  | 19d → 14d |  |  |
| 247 | **Development** | 2006-07-03 → 2006-07-24 (+21d) | 2006-07-27 → 2006-08-17 (+21d) |  |  |  |  |  |
| 248 | **Opening Round** | 2006-07-03 → 2006-07-24 (+21d) | 2006-07-27 → 2006-08-17 (+21d) |  |  |  |  |  |
| 249 | **Team Development** | 2006-07-03 → 2006-07-24 (+21d) | 2006-07-10 → 2006-07-31 (+21d) |  |  |  |  |  |
| 250 | **Development of Use Cases** | 2006-07-03 → 2006-07-24 (+21d) | 2006-07-10 → 2006-07-31 (+21d) |  |  |  |  |  |
| 251 | Create Unit Tests | 2006-07-03 → 2006-07-24 (+21d) | 2006-07-05 → 2006-07-26 (+21d) |  |  |  | 242, 243, 47 → 242, 243 |  |
| 252 | Convert Prototype | 2006-07-03 → 2006-07-24 (+21d) | 2006-07-05 → 2006-07-26 (+21d) |  |  |  |  |  |
| 253 | Configure components | 2006-07-03 → 2006-07-24 (+21d) | 2006-07-05 → 2006-07-26 (+21d) |  |  |  |  |  |
| 254 | Test | 2006-07-06 → 2006-07-27 (+21d) | 2006-07-10 → 2006-07-31 (+21d) |  |  |  |  |  |
| 255 | **Test case challenge** | 2006-07-11 → 2006-08-01 (+21d) | 2006-07-12 → 2006-08-02 (+21d) |  |  |  |  |  |
| 256 | Submit Challenges | 2006-07-11 → 2006-08-01 (+21d) | 2006-07-11 → 2006-08-01 (+21d) |  |  |  |  |  |
| 257 | Appeals response | 2006-07-12 → 2006-08-02 (+21d) | 2006-07-12 → 2006-08-02 (+21d) |  |  |  |  |  |
| 258 | **Review** | 2006-07-13 → 2006-08-03 (+21d) | 2006-07-27 → 2006-08-17 (+21d) |  |  |  |  |  |
| 259 | Score Testcases | 2006-07-13 → 2006-08-03 (+21d) | 2006-07-13 → 2006-08-03 (+21d) |  |  |  |  |  |
| 260 | Score Submissions | 2006-07-13 → 2006-08-03 (+21d) | 2006-07-14 → 2006-08-04 (+21d) |  |  |  |  |  |
| 261 | Review Code | 2006-07-17 → 2006-08-07 (+21d) | 2006-07-18 → 2006-08-08 (+21d) |  |  |  |  |  |
| 262 | Appeals | 2006-07-19 → 2006-08-09 (+21d) | 2006-07-19 → 2006-08-09 (+21d) |  |  |  |  |  |
| 263 | Appeals Response | 2006-07-20 → 2006-08-10 (+21d) | 2006-07-20 → 2006-08-10 (+21d) |  |  |  |  |  |
| 264 | Final Fixes | 2006-07-21 → 2006-08-11 (+21d) | 2006-07-25 → 2006-08-15 (+21d) |  |  |  |  |  |
| 265 | Final Review | 2006-07-26 → 2006-08-16 (+21d) | 2006-07-26 → 2006-08-16 (+21d) |  |  |  |  |  |
| 266 | PM Review/Certification | 2006-07-27 → 2006-08-17 (+21d) | 2006-07-27 → 2006-08-17 (+21d) |  |  |  |  |  |
| 267 | **Deployment** | 2006-07-28 → 2006-08-18 (+21d) | 2006-08-15 → 2006-09-05 (+21d) |  |  |  |  |  |
| 268 | Deployment | 2006-07-28 → 2006-08-18 (+21d) | 2006-08-02 → 2006-08-23 (+21d) |  |  |  |  |  |
| 269 | **Testing Iteration** | 2006-08-03 → 2006-08-24 (+21d) | 2006-08-15 → 2006-09-05 (+21d) |  |  |  |  |  |
| 270 | Test Plan Execution | 2006-08-03 → 2006-08-24 (+21d) | 2006-08-07 → 2006-08-28 (+21d) |  |  |  |  |  |
| 271 | User Acceptance Testing | 2006-08-08 → 2006-08-29 (+21d) | 2006-08-14 → 2006-09-04 (+21d) |  |  |  |  |  |
| 272 | PM Certification | 2006-08-15 → 2006-09-05 (+21d) | 2006-08-15 → 2006-09-05 (+21d) |  |  |  |  |  |
| 273 | **Support** | 2006-07-28 → 2006-08-18 (+21d) | 2006-09-07 → 2006-09-28 (+21d) |  |  |  |  |  |
| 274 | Capture DRs | 2006-07-28 → 2006-08-18 (+21d) | 2006-08-17 → 2006-09-07 (+21d) |  |  |  |  |  |
| 275 | Release Fix | 2006-08-18 → 2006-09-08 (+21d) | 2006-09-07 → 2006-09-28 (+21d) |  |  |  |  |  |
| 276 | Send out how-to info to users | 2006-07-28 → 2006-08-18 (+21d) | 2006-07-28 → 2006-08-18 (+21d) |  |  |  |  |  |
| 277 | Beta Release to internal users | 2006-08-16 → 2006-09-06 (+21d) | 2006-08-16 → 2006-09-06 (+21d) |  |  |  |  |  |

## Version 10 (saved 2006-06-30)

Note of the change: added information to assembly and testing packets.

Last finish 2006-09-28 → 2006-10-06 (+8d). Complete tasks 24 → 38.

Added:

| ID | Task | Duration | Start | Finish | Predecessors | Constraint | Resources |
| --- | --- | --- | --- | --- | --- | --- | --- |
| 70 | **Scorecard Management Development** | 14d | 2006-06-21 | 2006-07-10 | 69 |  |  |
| 71 | Creation of Management Dev Distro | 1d | 2006-06-21 | 2006-06-21 | 69 |  | Component Manager |
| 76 | **Scorecard Persistence Development** | 14d | 2006-06-21 | 2006-07-10 |  |  |  |
| 77 | Creation of Management Dev Distro | 1d | 2006-06-21 | 2006-06-21 | 69 |  | Component Manager |
| 82 | **Scorecard Data Structure** | 27.5d | 2006-06-01 A | 2006-07-10 |  |  |  |
| 95 | **Review Management Development** | 14d | 2006-06-19 | 2006-07-06 | 94 |  |  |
| 96 | Creation of Management Dev Distro | 1d | 2006-06-19 | 2006-06-19 | 94 |  | Component Manager |
| 101 | **Review Persistence Development** | 14d | 2006-06-19 | 2006-07-06 |  |  |  |
| 102 | Creation of Management Dev Distro | 1d | 2006-06-19 | 2006-06-19 | 94 |  | Component Manager |
| 138 | **Project Management Development** | 14d | 2006-06-26 | 2006-07-13 | 137 |  |  |
| 139 | Creation of Management Dev Distro | 1d | 2006-06-26 | 2006-06-26 | 137 |  | Component Manager |
| 144 | **Project Persistence Development** | 14d | 2006-06-26 | 2006-07-13 |  |  |  |
| 145 | Creation of Management Dev Distro | 1d | 2006-06-26 | 2006-06-26 | 137 |  | Component Manager |
| 154 | **Resource Management Development** | 14d | 2006-06-26 | 2006-07-13 | 153 |  |  |
| 155 | Creation of Management Dev Distro | 1d | 2006-06-26 | 2006-06-26 | 153 |  | Component Manager |
| 160 | **Resource Persistence Development** | 14d | 2006-06-26 | 2006-07-13 |  |  |  |
| 161 | Creation of Management Dev Distro | 1d | 2006-06-26 | 2006-06-26 | 153 |  | Component Manager |
| 162 | Development Posting | 6d | 2006-06-27 | 2006-07-04 | 161 | start no earlier than 2005-03-30 | Member |
| 163 | Development Review | 4d | 2006-07-05 | 2006-07-10 | 162 |  | Member |
| 164 | Development Final Fixes | 2d | 2006-07-11 | 2006-07-12 | 163 | finish no earlier than 2005-04-06 | Member |
| 165 | Post to Catalog | 1d | 2006-07-13 | 2006-07-13 | 164 |  | Component Manager |
| 170 | **Deliverable Management Development** | 14d | 2006-06-26 | 2006-07-13 |  |  |  |
| 171 | Creation of Management Dev Distro | 1d | 2006-06-26 | 2006-06-26 | 169 |  | Component Manager |
| 172 | Development Posting | 6d | 2006-06-27 | 2006-07-04 | 171 | start no earlier than 2005-03-30 | Member |
| 173 | Development Review | 4d | 2006-07-05 | 2006-07-10 | 172 |  | Member |
| 174 | Development Final Fixes | 2d | 2006-07-11 | 2006-07-12 | 173 | finish no earlier than 2005-04-06 | Member |
| 175 | Post to Catalog | 1d | 2006-07-13 | 2006-07-13 | 174 |  | Component Manager |
| 176 | **Deliverable Persistence Development** | 14d | 2006-06-26 | 2006-07-13 |  |  |  |
| 177 | Creation of Management Dev Distro | 1d | 2006-06-26 | 2006-06-26 | 169 |  | Component Manager |
| 178 | Development Posting | 6d | 2006-06-27 | 2006-07-04 | 177 | start no earlier than 2005-03-30 | Member |
| 179 | Development Review | 4d | 2006-07-05 | 2006-07-10 | 178 |  | Member |
| 180 | Development Final Fixes | 2d | 2006-07-11 | 2006-07-12 | 179 | finish no earlier than 2005-04-06 | Member |
| 181 | Post to Catalog | 1d | 2006-07-13 | 2006-07-13 | 180 |  | Component Manager |
| 182 | **Search Builder 1.3** | 26d | 2006-06-08 | 2006-07-13 |  |  |  |
| 187 | Development Posting | 6d | 2006-06-27 | 2006-07-04 | 186 | start no earlier than 2005-03-30 | Member |
| 188 | Development Review | 4d | 2006-07-05 | 2006-07-10 | 187 |  | Member |
| 189 | Development Final Fixes | 2d | 2006-07-11 | 2006-07-12 | 188 | finish no earlier than 2005-04-06 | Member |
| 190 | Post to Catalog | 1d | 2006-07-13 | 2006-07-13 | 189 |  | Component Manager |
| 195 | **Phase Management Development** | 14d | 2006-06-26 | 2006-07-13 | 194 |  |  |
| 196 | Creation of Management Dev Distro | 1d | 2006-06-26 | 2006-06-26 | 194 |  | Component Manager |
| 197 | Development Posting | 6d | 2006-06-27 | 2006-07-04 | 196 | start no earlier than 2005-03-30 | Member |
| 198 | Development Review | 4d | 2006-07-05 | 2006-07-10 | 197 |  | Member |
| 199 | Development Final Fixes | 2d | 2006-07-11 | 2006-07-12 | 198 | finish no earlier than 2005-04-06 | Member |
| 200 | Post to Catalog | 1d | 2006-07-13 | 2006-07-13 | 199 |  | Component Manager |
| 201 | **Phase Persistence Development** | 14d | 2006-06-26 | 2006-07-13 |  |  |  |
| 202 | Creation of Management Dev Distro | 1d | 2006-06-26 | 2006-06-26 | 194 |  | Component Manager |
| 203 | Development Posting | 6d | 2006-06-27 | 2006-07-04 | 202 | start no earlier than 2005-03-30 | Member |
| 204 | Development Review | 4d | 2006-07-05 | 2006-07-10 | 203 |  | Member |
| 205 | Development Final Fixes | 2d | 2006-07-11 | 2006-07-12 | 204 | finish no earlier than 2005-04-06 | Member |
| 206 | Post to Catalog | 1d | 2006-07-13 | 2006-07-13 | 205 |  | Component Manager |
| 270 | **Auto Screening Tool (2 dev)** | 26d | 2006-06-15 | 2006-07-20 |  |  |  |
| 271 | Design Posting | 6d | 2006-06-15 | 2006-06-22 |  | start no earlier than 2006-06-15 | Member |
| 272 | Design Review | 4d | 2006-06-23 | 2006-06-28 | 271 | finish no earlier than 2005-03-21 | Member |
| 273 | Design Final Fixes | 2d | 2006-06-29 | 2006-06-30 | 272 |  | Member |
| 275 | Development Posting | 6d | 2006-07-04 | 2006-07-11 | 274 | start no earlier than 2005-03-30 | Member |
| 276 | Development Review | 4d | 2006-07-12 | 2006-07-17 | 275 |  | Member |
| 277 | Development Final Fixes | 2d | 2006-07-18 | 2006-07-19 | 276 | finish no earlier than 2005-04-06 | Member |
| 278 | Post to Catalog | 1d | 2006-07-20 | 2006-07-20 | 277 |  | Component Manager |
| 289 | **Scorecard Admin Assembly** | 35d | 2006-06-26 | 2006-08-11 |  |  |  |
| 292 | TopCoder Website Content Creation/Updates | 3d | 2006-06-28 | 2006-06-30 | 82FS-10d, 66FS-10d | finish no earlier than 2006-06-30 |  |
| 318 | Feedback | 2d | 2006-08-10 | 2006-08-11 | 317 |  |  |
| 319 | **Project Review Assembly** | 35d | 2006-07-07 | 2006-08-24 |  |  |  |
| 320 | **Setup** | 16d | 2006-07-07 | 2006-07-28 |  |  |  |
| 321 | Divide Spec and Arch Deliverables | 1d | 2006-07-07 | 2006-07-07 | 38FS-15d | start no earlier than 2006-03-29 |  |
| 323 | TopCoder Website Informaiton Posted | 1d | 2006-07-21 | 2006-07-21 | 38FS-5d | start no earlier than 2006-05-17 |  |
| 324 | Package Components | 1d | 2006-07-28 | 2006-07-28 | 38 |  |  |
| 325 | **Test Case Development** | 7d | 2006-07-24 | 2006-08-01 |  |  |  |
| 326 | Submit tests | 6d | 2006-07-24 | 2006-07-31 | 323 | start no earlier than 2006-03-22 | test case participants |
| 327 | Screen test cases | 1d | 2006-08-01 | 2006-08-01 | 326 |  |  |
| 328 | Team Formation | 10d | 2006-07-24 | 2006-08-04 | 323 |  |  |
| 329 | **Development** | 19d | 2006-07-31 | 2006-08-24 |  |  |  |
| 330 | **Opening Round** | 19d | 2006-07-31 | 2006-08-24 |  |  |  |
| 331 | **Team Development** | 7d | 2006-07-31 | 2006-08-08 |  |  |  |
| 332 | **Development of Use Cases** | 7d | 2006-07-31 | 2006-08-08 |  |  | All Teams |
| 333 | Create Unit Tests | 4d | 2006-07-31 | 2006-08-03 | 324 | start no earlier than 2006-03-28 |  |
| 334 | Convert Prototype | 4d | 2006-07-31 | 2006-08-03 | 324 | start no earlier than 2006-03-29 |  |
| 335 | Configure components | 4d | 2006-07-31 | 2006-08-03 | 324 | start no earlier than 2006-03-29 |  |
| 336 | Test | 3d | 2006-08-04 | 2006-08-08 | 333, 334, 335 |  |  |
| 337 | **Test case challenge** | 2d | 2006-08-09 | 2006-08-10 | 336 |  | All Captains |
| 338 | Submit Challenges | 1d | 2006-08-09 | 2006-08-09 |  |  |  |
| 339 | Appeals response | 1d | 2006-08-10 | 2006-08-10 | 338 |  | Reviewer3; Reviewer2; Reviewer1; Assembly Manager; Architect |
| 340 | **Review** | 10d | 2006-08-11 | 2006-08-24 |  |  |  |
| 341 | Score Testcases | 1d | 2006-08-11 | 2006-08-11 | 337 |  | DE |
| 342 | Score Submissions | 2d | 2006-08-11 | 2006-08-14 | 337 |  | DE |
| 343 | Review Code | 2d | 2006-08-15 | 2006-08-16 | 341, 342 |  | Review Team |
| 344 | Appeals | 1d | 2006-08-17 | 2006-08-17 | 343 |  | Review Team |
| 345 | Appeals Response | 1d | 2006-08-18 | 2006-08-18 | 344 |  | Review Team |
| 346 | Final Fixes | 3d | 2006-08-21 | 2006-08-23 | 345 |  |  |
| 347 | Final Review | 1d | 2006-08-24 | 2006-08-24 | 346 |  |  |
| 348 | **Project Admin and Details Assembly** | 35d | 2006-07-07 | 2006-08-24 |  |  |  |
| 349 | **Setup** | 16d | 2006-07-07 | 2006-07-28 |  |  |  |
| 350 | Divide Spec and Arch Deliverables | 1d | 2006-07-07 | 2006-07-07 | 38FS-15d | start no earlier than 2006-03-29 |  |
| 351 | TopCoder Website Content Creation | 5d | 2006-07-14 | 2006-07-20 | 38FS-10d |  |  |
| 352 | TopCoder Website Informaiton Posted | 1d | 2006-07-21 | 2006-07-21 | 38FS-5d | start no earlier than 2006-05-17 |  |
| 353 | Package Components | 1d | 2006-07-28 | 2006-07-28 | 38 |  |  |
| 354 | **Test Case Development** | 7d | 2006-07-24 | 2006-08-01 |  |  |  |
| 355 | Submit tests | 6d | 2006-07-24 | 2006-07-31 | 352 | start no earlier than 2006-03-22 | test case participants |
| 356 | Screen test cases | 1d | 2006-08-01 | 2006-08-01 | 355 |  |  |
| 357 | Team Formation | 10d | 2006-07-24 | 2006-08-04 | 352 |  |  |
| 358 | **Development** | 19d | 2006-07-31 | 2006-08-24 |  |  |  |
| 359 | **Opening Round** | 19d | 2006-07-31 | 2006-08-24 |  |  |  |
| 360 | **Team Development** | 7d | 2006-07-31 | 2006-08-08 |  |  |  |
| 361 | **Development of Use Cases** | 7d | 2006-07-31 | 2006-08-08 |  |  | All Teams |
| 362 | Create Unit Tests | 4d | 2006-07-31 | 2006-08-03 | 353 | start no earlier than 2006-03-28 |  |
| 363 | Convert Prototype | 4d | 2006-07-31 | 2006-08-03 | 353 | start no earlier than 2006-03-29 |  |
| 364 | Configure components | 4d | 2006-07-31 | 2006-08-03 | 353 | start no earlier than 2006-03-29 |  |
| 365 | Test | 3d | 2006-08-04 | 2006-08-08 | 362, 363, 364 |  |  |
| 366 | **Test case challenge** | 2d | 2006-08-09 | 2006-08-10 | 365 |  | All Captains |
| 367 | Submit Challenges | 1d | 2006-08-09 | 2006-08-09 |  |  |  |
| 368 | Appeals response | 1d | 2006-08-10 | 2006-08-10 | 367 |  | Reviewer3; Reviewer2; Reviewer1; Assembly Manager; Architect |
| 369 | **Review** | 10d | 2006-08-11 | 2006-08-24 |  |  |  |
| 370 | Score Testcases | 1d | 2006-08-11 | 2006-08-11 | 366 |  | DE |
| 371 | Score Submissions | 2d | 2006-08-11 | 2006-08-14 | 366 |  | DE |
| 372 | Review Code | 2d | 2006-08-15 | 2006-08-16 | 370, 371 |  | Review Team |
| 373 | Appeals | 1d | 2006-08-17 | 2006-08-17 | 372 |  | Review Team |
| 374 | Appeals Response | 1d | 2006-08-18 | 2006-08-18 | 373 |  | Review Team |
| 375 | Final Fixes | 3d | 2006-08-21 | 2006-08-23 | 374 |  |  |
| 376 | Final Review | 1d | 2006-08-24 | 2006-08-24 | 375 |  |  |
| 378 | Merge code and deploy to QA | 4d | 2006-08-25 | 2006-08-30 | 288 | finish no earlier than 2005-05-27 | Project Manager; Application Assembler 1 |
| 383 | **Deployment to Production** | 5d | 2006-09-15 | 2006-09-21 |  |  |  |
| 385 | **Testing Iteration** | 4d | 2006-09-18 | 2006-09-21 |  |  |  |
| 386 | Test Plan Execution | 4d | 2006-09-18 | 2006-09-21 | 384 |  |  |

Removed: 66 Search Builder - Bug Fix; 124 Creation of Dev Distro; 133 Creation of Dev Distro; 142 Creation of Dev Distro; 151 Creation of Dev Distro; 210 Online Review Web Elements (custom); 214 Creation of Dev Distro; 266 PM Review/Certification

Changed:

| ID | Task | Start | Finish | Duration | Complete | Total float | Predecessors | Other |
| --- | --- | --- | --- | --- | --- | --- | --- | --- |
| 1 | **TopCoder Online Review/Scorecard Project** | 2004-01-27 A → 2005-06-29 A (+519d) | 2006-09-28 → 2006-10-06 (+8d) | 698d? → 332d? | 10% → 17% |  |  |  |
| 27 | **Application Architecture** |  | 2006-05-30 → 2006-06-06 (+7d) | 30.5d → 35.5d | 39% → 99% |  |  |  |
| 31 | **UML Diagrams** |  | 2006-05-28 → 2006-06-02 A (+5d) | 27d → 32d | 20% → 100% | 89d → none |  |  |
| 32 | Component Sequence Diagrams |  | 2006-05-28 → 2006-06-01 A (+4d) | 27d → 31d | 25% → 100% | 74d → none |  | constraint finish no earlier than 2006-05-28 → finish no earlier than 2006-06-01 |
| 33 | Component Interface Diagram |  | 2006-05-28 → 2006-06-02 A (+5d) | 20d → 25d | 15% → 100% | 74d → none |  | constraint finish no earlier than 2006-05-28 → finish no earlier than 2006-06-02 |
| 34 | Component Diagram | 2006-05-25 A | 2006-05-28 → 2006-05-26 A (-2d) |  | 0% → 100% | 74d → none |  |  |
| 35 | Component Specifications | 2006-05-22 → 2006-05-29 A (+7d) | 2006-05-26 → 2006-06-02 A (+7d) |  | 0% → 100% | 72d → none |  | constraint finish no earlier than 2006-05-26 → finish no earlier than 2006-06-02 |
| 36 | Application Design Specification | 2006-05-29 → 2006-06-05 A (+7d) | 2006-05-29 → 2006-06-05 A (+7d) |  | 0% → 100% | 72d → none |  | constraint finish no earlier than 2006-05-29 → finish no earlier than 2006-06-02 |
| 37 | Review | 2006-05-30 → 2006-06-06 (+7d) | 2006-05-30 → 2006-06-06 (+7d) |  |  | 72d → 71d |  |  |
| 38 | **Component Production** | 2006-05-25 A |  |  | 0% → 6% |  |  |  |
| 39 | **File Upload 2.0** | 2006-05-25 A | 2006-06-29 → 2006-07-04 (+5d) | 26d → 29d | 0% → 47% | 20d → 17d |  |  |
| 40 | Design Posting | 2006-05-25 A | 2006-06-01 → 2006-06-02 A (+1d) | 6d → 7d | 0% → 100% | 5d → none |  |  |
| 41 | Design Review | 2006-06-02 A | 2006-06-07 → 2006-06-12 A (+5d) | 4d → 7d | 0% → 100% | 5d → none |  |  |
| 42 | Design Final Fixes | 2006-06-08 → 2006-06-13 (+5d) | 2006-06-09 → 2006-06-14 (+5d) |  |  | 5d → 14d |  |  |
| 43 | Creation of Dev Distro | 2006-06-12 → 2006-06-15 (+3d) | 2006-06-12 → 2006-06-15 (+3d) |  |  | 5d → 14d |  | constraint none → finish no earlier than 2006-06-15 |
| 44 | Development Posting | 2006-06-13 → 2006-06-16 (+3d) | 2006-06-20 → 2006-06-23 (+3d) |  |  | 5d → 14d |  |  |
| 45 | Development Review | 2006-06-21 → 2006-06-26 (+5d) | 2006-06-26 → 2006-06-29 (+3d) |  |  | 5d → 14d |  |  |
| 46 | Development Final Fixes | 2006-06-27 → 2006-06-30 (+3d) | 2006-06-28 → 2006-07-03 (+5d) |  |  | 5d → 14d |  |  |
| 47 | Post to Catalog | 2006-06-29 → 2006-07-04 (+5d) | 2006-06-29 → 2006-07-04 (+5d) |  |  | 5d → 14d |  |  |
| 48 | **Cached Web Element Tag** | 2006-05-25 A | 2006-06-29 → 2006-07-07 (+8d) | 26d → 32d | 0% → 23% | 20d → 14d |  |  |
| 49 | Design Posting | 2006-05-25 A | 2006-06-01 A |  | 0% → 100% | 5d → none |  |  |
| 51 | Design Final Fixes | 2006-06-08 → 2006-06-16 (+8d) | 2006-06-09 → 2006-06-19 (+10d) |  |  | 5d → 14d |  | constraint none → finish no earlier than 2006-06-19 |
| 52 | Creation of Dev Distro | 2006-06-12 → 2006-06-20 (+8d) | 2006-06-12 → 2006-06-20 (+8d) |  |  | 5d → 9d |  |  |
| 53 | Development Posting | 2006-06-13 → 2006-06-21 (+8d) | 2006-06-20 → 2006-06-28 (+8d) |  |  | 5d → 9d |  |  |
| 54 | Development Review | 2006-06-21 → 2006-06-29 (+8d) | 2006-06-26 → 2006-07-04 (+8d) |  |  | 5d → 9d |  |  |
| 55 | Development Final Fixes | 2006-06-27 → 2006-07-05 (+8d) | 2006-06-28 → 2006-07-06 (+8d) |  |  | 5d → 9d |  |  |
| 56 | Post to Catalog | 2006-06-29 → 2006-07-07 (+8d) | 2006-06-29 → 2006-07-07 (+8d) |  |  | 5d → 9d |  |  |
| 57 | **Database Abstraction 1.1** | 2006-05-25 A | 2006-06-29 → 2006-07-05 (+6d) | 26d → 30d | 0% → 52% | 20d → 16d |  |  |
| 58 | Design Posting | 2006-05-25 A | 2006-06-01 A |  | 0% → 100% | 5d → none |  |  |
| 59 | Design Review | 2006-06-02 A | 2006-06-07 A |  | 0% → 100% | 5d → none |  |  |
| 60 | Design Final Fixes | 2006-06-08 A | 2006-06-09 A |  | 0% → 100% | 5d → none |  |  |
| 61 | Creation of Dev Distro | 2006-06-12 A | 2006-06-12 A |  | 0% → 100% | 5d → none |  |  |
| 62 | Development Posting | 2006-06-13 → 2006-06-15 (+2d) | 2006-06-20 → 2006-06-21 (+1d) | 6d → 5d |  | 5d → 19d |  | constraint start no earlier than 2005-03-30 → finish no earlier than 2006-06-21 |
| 63 | Development Review | 2006-06-21 → 2006-06-27 (+6d) | 2006-06-26 → 2006-06-30 (+4d) |  |  | 5d → 16d |  | constraint none → finish no earlier than 2006-06-30 |
| 64 | Development Final Fixes | 2006-06-27 → 2006-07-03 (+6d) | 2006-06-28 → 2006-07-04 (+6d) |  |  | 5d → 11d |  |  |
| 65 | Post to Catalog | 2006-06-29 → 2006-07-05 (+6d) | 2006-06-29 → 2006-07-05 (+6d) |  |  | 5d → 11d |  |  |
| 66 | **Scorecard Management (2 dev)** | 2006-06-01 A | 2006-07-06 → 2006-07-10 (+4d) | 26d → 28d | 0% → 13% | 15d → 12d |  | was named Scorecard Management |
| 67 | Design Posting | 2006-06-01 A | 2006-06-08 → 2006-06-07 A (-1d) | 6d → 5d | 0% → 100% | 15d → none |  |  |
| 68 | Design Review | 2006-06-09 → 2006-06-12 (+3d) | 2006-06-14 → 2006-06-15 (+1d) |  |  | 15d → 10d |  | constraint finish no earlier than 2005-03-21 → finish no earlier than 2006-06-15 |
| 69 | Design Final Fixes | 2006-06-15 → 2006-06-16 (+1d) | 2006-06-16 → 2006-06-20 (+4d) | 2d → 3d |  | 15d → 10d |  | constraint none → finish no earlier than 2006-06-20 |
| 72 | Development Posting | 2006-06-20 → 2006-06-22 (+2d) | 2006-06-27 → 2006-06-29 (+2d) |  |  | 15d → 8d | 186 → 71 |  |
| 73 | Development Review | 2006-06-28 → 2006-06-30 (+2d) | 2006-07-03 → 2006-07-05 (+2d) |  |  | 15d → 8d |  |  |
| 74 | Development Final Fixes | 2006-07-04 → 2006-07-06 (+2d) | 2006-07-05 → 2006-07-07 (+2d) |  |  | 15d → 8d |  |  |
| 75 | Post to Catalog | 2006-07-06 → 2006-07-10 (+4d) | 2006-07-06 → 2006-07-10 (+4d) |  |  | 15d → 8d |  |  |
| 78 | Development Posting | 2006-06-13 → 2006-06-22 (+9d) | 2006-06-20 → 2006-06-29 (+9d) |  |  | 5d → 15d | 86 → 71 |  |
| 79 | Development Review | 2006-06-21 → 2006-06-30 (+9d) | 2006-06-26 → 2006-07-05 (+9d) |  |  | 5d → 11d | 78 → 72 |  |
| 80 | Development Final Fixes | 2006-06-27 → 2006-07-06 (+9d) | 2006-06-28 → 2006-07-07 (+9d) |  |  | 5d → 9d | 79 → 73 |  |
| 81 | Post to Catalog | 2006-06-29 → 2006-07-10 (+11d) | 2006-06-29 → 2006-07-10 (+11d) |  |  | 5d → 8d | 80 → 74 |  |
| 83 | Design Posting | 2006-05-25 → 2006-06-01 A (+7d) | 2006-06-01 → 2006-06-07 A (+6d) | 6d → 5d | 0% → 100% | 5d → none |  | constraint start no earlier than 2006-05-25 → finish no earlier than 2006-06-07 |
| 84 | Design Review | 2006-06-02 → 2006-06-13 (+11d) | 2006-06-07 → 2006-06-18 (+11d) |  |  | 5d → 10.5d |  | constraint finish no earlier than 2005-03-21 → finish no earlier than 2006-06-18 |
| 85 | Design Final Fixes | 2006-06-08 → 2006-06-19 (+11d) | 2006-06-09 → 2006-06-20 (+11d) |  |  | 5d → 10.5d |  | constraint none → finish no earlier than 2006-06-20 |
| 86 | Creation of Dev Distro | 2006-06-12 → 2006-06-21 (+9d) | 2006-06-12 → 2006-06-21 (+9d) | 1d → 0.5d |  | 5d → 10.5d |  |  |
| 87 | Development Posting | 2006-06-20 → 2006-06-21 (+1d) | 2006-06-27 → 2006-06-29 (+2d) |  |  | 15d → 10.5d | 274 → 86 |  |
| 88 | Development Review | 2006-06-28 → 2006-06-29 (+1d) | 2006-07-03 → 2006-07-05 (+2d) |  |  | 15d → 10.5d |  |  |
| 89 | Development Final Fixes | 2006-07-04 → 2006-07-05 (+1d) | 2006-07-05 → 2006-07-07 (+2d) |  |  | 15d → 10.5d |  |  |
| 90 | Post to Catalog | 2006-07-06 → 2006-07-07 (+1d) | 2006-07-06 → 2006-07-10 (+4d) |  |  | 15d → 10.5d |  |  |
| 91 | **Review Management (2 dev)** |  |  |  |  |  |  | was named Review Management |
| 97 | Development Posting | 2006-06-27 → 2006-06-20 (-7d) | 2006-07-04 → 2006-06-27 (-7d) |  |  | 10d → 49d | Creation of Dev Distro → 96 |  |
| 98 | Development Review | 2006-07-05 → 2006-06-28 (-7d) | 2006-07-10 → 2006-07-03 (-7d) |  |  | 10d → 49d |  |  |
| 99 | Development Final Fixes | 2006-07-11 → 2006-07-04 (-7d) | 2006-07-12 → 2006-07-05 (-7d) |  |  | 10d → 49d |  |  |
| 100 | Post to Catalog | 2006-07-13 → 2006-07-06 (-7d) | 2006-07-13 → 2006-07-06 (-7d) |  |  | 10d → 49d |  |  |
| 103 | Development Posting | 2006-06-27 → 2006-06-20 (-7d) | 2006-07-04 → 2006-06-27 (-7d) |  |  | 10d → 49d | Creation of Dev Distro → 102 |  |
| 104 | Development Review | 2006-07-05 → 2006-06-28 (-7d) | 2006-07-10 → 2006-07-03 (-7d) |  |  | 10d → 49d |  |  |
| 105 | Development Final Fixes | 2006-07-11 → 2006-07-04 (-7d) | 2006-07-12 → 2006-07-05 (-7d) |  |  | 10d → 49d |  |  |
| 106 | Post to Catalog | 2006-07-13 → 2006-07-06 (-7d) | 2006-07-13 → 2006-07-06 (-7d) |  |  | 10d → 49d |  |  |
| 107 | **Project Phases 2.0** |  |  |  |  |  |  | was named Project Phases Management |
| 134 | **Project Management (2 dev)** |  |  |  |  |  |  | was named Project Management |
| 140 | Development Posting | 2006-07-04 → 2006-06-27 (-7d) | 2006-07-11 → 2006-07-04 (-7d) |  |  | 5d → 44d | Creation of Dev Distro → 139 |  |
| 141 | Development Review | 2006-07-12 → 2006-07-05 (-7d) | 2006-07-17 → 2006-07-10 (-7d) |  |  | 5d → 44d |  |  |
| 142 | Development Final Fixes | 2006-07-18 → 2006-07-11 (-7d) | 2006-07-19 → 2006-07-12 (-7d) |  |  | 5d → 44d |  |  |

| ID | Task | Start | Finish | Duration | Total float | Predecessors | Other |
| --- | --- | --- | --- | --- | --- | --- | --- |
| 143 | Post to Catalog | 2006-07-20 → 2006-07-13 (-7d) | 2006-07-20 → 2006-07-13 (-7d) |  | 5d → 44d |  |  |
| 146 | Development Posting | 2006-07-04 → 2006-06-27 (-7d) | 2006-07-11 → 2006-07-04 (-7d) |  | 5d → 44d | Creation of Dev Distro → 145 |  |
| 147 | Development Review | 2006-07-12 → 2006-07-05 (-7d) | 2006-07-17 → 2006-07-10 (-7d) |  | 5d → 44d |  |  |
| 148 | Development Final Fixes | 2006-07-18 → 2006-07-11 (-7d) | 2006-07-19 → 2006-07-12 (-7d) |  | 5d → 44d |  |  |
| 149 | Post to Catalog | 2006-07-20 → 2006-07-13 (-7d) | 2006-07-20 → 2006-07-13 (-7d) |  | 5d → 44d |  |  |
| 156 | Development Posting | 2006-07-11 → 2006-06-27 (-14d) | 2006-07-18 → 2006-07-04 (-14d) |  | 0d → 44d | Creation of Dev Distro → 155 |  |
| 157 | Development Review | 2006-07-19 → 2006-07-05 (-14d) | 2006-07-24 → 2006-07-10 (-14d) |  | 0d → 44d |  |  |
| 158 | Development Final Fixes | 2006-07-25 → 2006-07-11 (-14d) | 2006-07-26 → 2006-07-12 (-14d) |  | 0d → 44d |  |  |
| 159 | Post to Catalog | 2006-07-27 → 2006-07-13 (-14d) | 2006-07-27 → 2006-07-13 (-14d) |  | 0d → 44d |  |  |
| 166 | **Deliverable Management** | 2006-06-15 → 2006-06-08 (-7d) | 2006-07-20 → 2006-07-13 (-7d) |  | 5d → 10d |  |  |
| 167 | Design Posting | 2006-06-15 → 2006-06-08 (-7d) | 2006-06-22 → 2006-06-15 (-7d) |  | 5d → 44d |  | constraint start no earlier than 2006-06-15 → start no earlier than 2006-06-08 |
| 168 | Design Review | 2006-06-23 → 2006-06-16 (-7d) | 2006-06-28 → 2006-06-21 (-7d) |  | 5d → 44d |  |  |
| 169 | Design Final Fixes | 2006-06-29 → 2006-06-22 (-7d) | 2006-06-30 → 2006-06-23 (-7d) |  | 5d → 44d |  |  |
| 183 | Design Posting | 2006-06-22 → 2006-06-08 (-14d) | 2006-06-29 → 2006-06-15 (-14d) |  | 0d → 44d |  | constraint start no earlier than 2006-06-22 → start no earlier than 2006-06-08 |
| 184 | Design Review | 2006-06-30 → 2006-06-16 (-14d) | 2006-07-05 → 2006-06-21 (-14d) |  | 0d → 44d |  |  |
| 185 | Design Final Fixes | 2006-07-06 → 2006-06-22 (-14d) | 2006-07-07 → 2006-06-23 (-14d) |  | 0d → 44d |  |  |
| 186 | Creation of Dev Distro | 2006-06-19 → 2006-06-26 (+7d) | 2006-06-19 → 2006-06-26 (+7d) |  | 15d → 44d | 69 → 185 |  |
| 191 | **Phase Management** | 2006-06-15 → 2006-06-08 (-7d) | 2006-07-20 → 2006-07-13 (-7d) |  | 5d → 10d |  |  |
| 192 | Design Posting | 2006-06-15 → 2006-06-08 (-7d) | 2006-06-22 → 2006-06-15 (-7d) |  | 5d → 44d |  | constraint start no earlier than 2006-06-15 → start no earlier than 2006-06-08 |
| 193 | Design Review | 2006-06-23 → 2006-06-16 (-7d) | 2006-06-28 → 2006-06-21 (-7d) |  | 5d → 44d |  |  |
| 194 | Design Final Fixes | 2006-06-29 → 2006-06-22 (-7d) | 2006-06-30 → 2006-06-23 (-7d) |  | 5d → 44d |  |  |
| 207 | **Project Phase Template** | 2006-06-15 → 2006-06-08 (-7d) | 2006-07-20 → 2006-07-13 (-7d) |  | 5d → 10d |  |  |
| 208 | Design Posting | 2006-06-15 → 2006-06-08 (-7d) | 2006-06-22 → 2006-06-15 (-7d) |  | 5d → 44d |  | constraint start no earlier than 2006-06-15 → start no earlier than 2006-06-08 |
| 209 | Design Review | 2006-06-23 → 2006-06-16 (-7d) | 2006-06-28 → 2006-06-21 (-7d) |  | 5d → 44d |  |  |
| 210 | Design Final Fixes | 2006-06-29 → 2006-06-22 (-7d) | 2006-06-30 → 2006-06-23 (-7d) |  | 5d → 44d |  |  |
| 211 | Creation of Dev Distro | 2006-07-03 → 2006-06-26 (-7d) | 2006-07-03 → 2006-06-26 (-7d) |  | 5d → 44d |  |  |
| 212 | Development Posting | 2006-07-04 → 2006-06-27 (-7d) | 2006-07-11 → 2006-07-04 (-7d) |  | 5d → 44d |  |  |
| 213 | Development Review | 2006-07-12 → 2006-07-05 (-7d) | 2006-07-17 → 2006-07-10 (-7d) |  | 5d → 44d |  |  |
| 214 | Development Final Fixes | 2006-07-18 → 2006-07-11 (-7d) | 2006-07-19 → 2006-07-12 (-7d) |  | 5d → 44d |  |  |
| 215 | Post to Catalog | 2006-07-20 → 2006-07-13 (-7d) | 2006-07-20 → 2006-07-13 (-7d) |  | 5d → 44d |  |  |
| 216 | **Online Review Login (custom)** | 2006-06-15 → 2006-06-08 (-7d) | 2006-07-20 → 2006-07-13 (-7d) |  | 5d → 10d |  |  |
| 217 | Design Posting | 2006-06-15 → 2006-06-08 (-7d) | 2006-06-22 → 2006-06-15 (-7d) |  | 5d → 10d |  | constraint start no earlier than 2006-06-15 → start no earlier than 2006-06-08 |
| 218 | Design Review | 2006-06-23 → 2006-06-16 (-7d) | 2006-06-28 → 2006-06-21 (-7d) |  | 5d → 10d |  |  |
| 219 | Design Final Fixes | 2006-06-29 → 2006-06-22 (-7d) | 2006-06-30 → 2006-06-23 (-7d) |  | 5d → 10d |  |  |
| 220 | Creation of Dev Distro | 2006-07-03 → 2006-06-26 (-7d) | 2006-07-03 → 2006-06-26 (-7d) |  | 5d → 10d |  |  |
| 221 | Development Posting | 2006-07-04 → 2006-06-27 (-7d) | 2006-07-11 → 2006-07-04 (-7d) |  | 5d → 10d |  |  |
| 222 | Development Review | 2006-07-12 → 2006-07-05 (-7d) | 2006-07-17 → 2006-07-10 (-7d) |  | 5d → 10d |  |  |
| 223 | Development Final Fixes | 2006-07-18 → 2006-07-11 (-7d) | 2006-07-19 → 2006-07-12 (-7d) |  | 5d → 10d |  |  |
| 224 | Post to Catalog | 2006-07-20 → 2006-07-13 (-7d) | 2006-07-20 → 2006-07-13 (-7d) |  | 5d → 10d |  |  |
| 234 | **Online Review Ajax Support (custom)** | 2006-06-22 → 2006-06-15 (-7d) | 2006-07-27 → 2006-07-20 (-7d) |  | 0d → 5d |  |  |
| 235 | Design Posting | 2006-06-22 → 2006-06-15 (-7d) | 2006-06-29 → 2006-06-22 (-7d) |  | 0d → 2d |  | constraint start no earlier than 2006-06-22 → start no earlier than 2006-06-15 |
| 236 | Design Review | 2006-06-30 → 2006-06-23 (-7d) | 2006-07-05 → 2006-06-28 (-7d) |  | 0d → 2d |  |  |
| 237 | Design Final Fixes | 2006-07-06 → 2006-06-29 (-7d) | 2006-07-07 → 2006-06-30 (-7d) |  | 0d → 2d |  |  |
| 238 | Creation of Dev Distro | 2006-07-10 → 2006-07-03 (-7d) | 2006-07-10 → 2006-07-03 (-7d) |  | 0d → 2d |  |  |
| 239 | Development Posting | 2006-07-11 → 2006-07-04 (-7d) | 2006-07-18 → 2006-07-11 (-7d) |  | 0d → 2d |  |  |
| 240 | Development Review | 2006-07-19 → 2006-07-12 (-7d) | 2006-07-24 → 2006-07-17 (-7d) |  | 0d → 2d |  |  |
| 241 | Development Final Fixes | 2006-07-25 → 2006-07-18 (-7d) | 2006-07-26 → 2006-07-19 (-7d) |  | 0d → 2d |  |  |
| 242 | Post to Catalog | 2006-07-27 → 2006-07-20 (-7d) | 2006-07-27 → 2006-07-20 (-7d) |  | 0d → 2d |  |  |
| 243 | **Online Review Deliverables (custom)** | 2006-06-22 → 2006-06-15 (-7d) | 2006-07-27 → 2006-07-20 (-7d) |  | 0d → 5d |  |  |
| 244 | Design Posting | 2006-06-22 → 2006-06-15 (-7d) | 2006-06-29 → 2006-06-22 (-7d) |  | 0d → 2d |  | constraint start no earlier than 2006-06-22 → start no earlier than 2006-06-15 |
| 245 | Design Review | 2006-06-30 → 2006-06-23 (-7d) | 2006-07-05 → 2006-06-28 (-7d) |  | 0d → 2d |  |  |
| 246 | Design Final Fixes | 2006-07-06 → 2006-06-29 (-7d) | 2006-07-07 → 2006-06-30 (-7d) |  | 0d → 2d |  |  |
| 247 | Creation of Dev Distro | 2006-07-10 → 2006-07-03 (-7d) | 2006-07-10 → 2006-07-03 (-7d) |  | 0d → 2d |  |  |
| 248 | Development Posting | 2006-07-11 → 2006-07-04 (-7d) | 2006-07-18 → 2006-07-11 (-7d) |  | 0d → 2d |  |  |
| 249 | Development Review | 2006-07-19 → 2006-07-12 (-7d) | 2006-07-24 → 2006-07-17 (-7d) |  | 0d → 2d |  |  |
| 250 | Development Final Fixes | 2006-07-25 → 2006-07-18 (-7d) | 2006-07-26 → 2006-07-19 (-7d) |  | 0d → 2d |  |  |
| 251 | Post to Catalog | 2006-07-27 → 2006-07-20 (-7d) | 2006-07-27 → 2006-07-20 (-7d) |  | 0d → 2d |  |  |
| 252 | **Online Review Phases (custom)** | 2006-06-22 → 2006-06-15 (-7d) | 2006-07-27 → 2006-07-24 (-3d) | 26d → 28d | 0d → 3d |  |  |
| 253 | Design Posting | 2006-06-22 → 2006-06-15 (-7d) | 2006-06-29 → 2006-06-26 (-3d) | 6d → 8d | 0d → 4d |  | constraint start no earlier than 2006-06-22 → finish no earlier than 2006-06-26 |
| 254 | Design Review | 2006-06-30 → 2006-06-28 (-2d) | 2006-07-05 → 2006-07-03 (-2d) |  | 0d → 3d |  | constraint finish no earlier than 2005-03-21 → finish no earlier than 2006-07-03 |
| 255 | Design Final Fixes | 2006-07-06 → 2006-07-04 (-2d) | 2006-07-07 → 2006-07-05 (-2d) |  | 0d → 3d |  |  |
| 256 | Creation of Dev Distro | 2006-07-10 → 2006-07-05 (-5d) | 2006-07-10 → 2006-07-05 (-5d) | 1d → 0d | 0d → 3d |  |  |
| 257 | Development Posting | 2006-07-11 → 2006-07-06 (-5d) | 2006-07-18 → 2006-07-13 (-5d) |  | 0d → 3d |  |  |
| 258 | Development Review | 2006-07-19 → 2006-07-14 (-5d) | 2006-07-24 → 2006-07-19 (-5d) |  | 0d → 3d |  |  |
| 259 | Development Final Fixes | 2006-07-25 → 2006-07-20 (-5d) | 2006-07-26 → 2006-07-21 (-5d) |  | 0d → 3d |  |  |
| 260 | Post to Catalog | 2006-07-27 → 2006-07-24 (-3d) | 2006-07-27 → 2006-07-24 (-3d) |  | 0d → 3d |  |  |
| 274 | Creation of Dev Distro | 2006-06-19 → 2006-07-03 (+14d) | 2006-06-19 → 2006-07-03 (+14d) |  | 15d → 2d | 94 → 273 |  |
| 279 | **Auto Screening Management (Custom)** | 2006-06-22 → 2006-06-15 (-7d) | 2006-07-27 → 2006-07-20 (-7d) |  | 0d → 5d |  | was named Auto Screening |
| 280 | Design Posting | 2006-06-22 → 2006-06-15 (-7d) | 2006-06-29 → 2006-06-22 (-7d) |  | 0d → 2d |  | constraint start no earlier than 2006-06-22 → start no earlier than 2006-06-15 |
| 281 | Design Review | 2006-06-30 → 2006-06-23 (-7d) | 2006-07-05 → 2006-06-28 (-7d) |  | 0d → 2d |  |  |

| ID | Task | Start | Finish | Duration | Total float | Predecessors | Other |
| --- | --- | --- | --- | --- | --- | --- | --- |
| 282 | Design Final Fixes | 2006-07-06 → 2006-06-29 (-7d) | 2006-07-07 → 2006-06-30 (-7d) |  | 0d → 2d |  |  |
| 283 | Creation of Dev Distro | 2006-07-10 → 2006-07-03 (-7d) | 2006-07-10 → 2006-07-03 (-7d) |  | 0d → 2d |  |  |
| 284 | Development Posting | 2006-07-11 → 2006-07-04 (-7d) | 2006-07-18 → 2006-07-11 (-7d) |  | 0d → 2d |  |  |
| 285 | Development Review | 2006-07-19 → 2006-07-12 (-7d) | 2006-07-24 → 2006-07-17 (-7d) |  | 0d → 2d |  |  |
| 286 | Development Final Fixes | 2006-07-25 → 2006-07-18 (-7d) | 2006-07-26 → 2006-07-19 (-7d) |  | 0d → 2d |  |  |
| 287 | Post to Catalog | 2006-07-27 → 2006-07-20 (-7d) | 2006-07-27 → 2006-07-20 (-7d) |  | 0d → 2d |  |  |
| 288 | **Assembly Competitions** | 2004-01-27 → 2006-06-26 (+881d) | 2006-08-17 → 2006-08-24 (+7d) | 668d → 44d |  |  |  |
| 290 | **Setup** | 2004-01-27 → 2006-06-26 (+881d) | 2006-07-27 → 2006-07-11 (-16d) | 653d → 12d | 15d → 16d |  |  |
| 291 | Divide Spec and Arch Deliverables | 2006-07-07 → 2006-06-26 (-11d) | 2006-07-07 → 2006-06-28 (-9d) | 1d → 3d | 29d → 41d | 38FS-15d → 82FS-15d, 66FS-15d | was named Divide Use Cases for Competitions; constraint start no earlier than 2006-03-29 → finish no earlier than 2006-06-28 |
| 293 | TopCoder Website Informaiton Posted | 2006-07-14 → 2006-07-05 (-9d) | 2006-07-14 → 2006-07-05 (-9d) |  | 0d → 9d | 38FS-10d → 82FS-5d, 66FS-5d | constraint start no earlier than 2006-05-17 → start no earlier than 2006-07-05 |
| 294 | Package Components | 2004-01-27 → 2006-07-11 (+896d) | 2004-01-27 → 2006-07-11 (+896d) |  | 648d → 11d | none → 82, 66 |  |
| 295 | **Test Case Development** | 2006-07-17 → 2006-07-06 (-11d) | 2006-07-21 → 2006-07-14 (-7d) | 5d → 7d | 0d → 29d |  |  |
| 296 | Submit tests | 2006-07-17 → 2006-07-06 (-11d) | 2006-07-20 → 2006-07-13 (-7d) | 4d → 6d | 0d → 29d |  |  |
| 297 | Screen test cases | 2006-07-21 → 2006-07-14 (-7d) | 2006-07-21 → 2006-07-14 (-7d) |  | 0d → 29d |  |  |
| 298 | Team Formation | 2006-07-17 → 2006-07-06 (-11d) | 2006-07-28 → 2006-07-13 (-15d) | 10d → 6d | 14d → 9d |  | constraint none → start no earlier than 2006-07-03 |
| 299 | **Development** | 2006-07-24 → 2006-07-14 (-10d) | 2006-08-17 → 2006-08-11 (-6d) | 19d → 21d | 0d → 9d |  |  |
| 300 | **Opening Round** | 2006-07-24 → 2006-07-14 (-10d) | 2006-08-17 → 2006-08-11 (-6d) | 19d → 21d | 0d → 9d |  |  |
| 301 | **Team Development** | 2006-07-24 → 2006-07-14 (-10d) | 2006-07-31 → 2006-07-24 (-7d) | 6d → 7d | 0d → 9d |  |  |
| 302 | **Development of Use Cases** | 2006-07-24 → 2006-07-14 (-10d) | 2006-07-31 → 2006-07-24 (-7d) | 6d → 7d | 0d → 9d |  |  |
| 303 | Create Unit Tests | 2006-07-24 → 2006-07-14 (-10d) | 2006-07-26 → 2006-07-19 (-7d) | 3d → 4d | 0d → 9d | 294, 295 → 294, 298 |  |
| 304 | Convert Prototype | 2006-07-24 → 2006-07-14 (-10d) | 2006-07-26 → 2006-07-19 (-7d) | 3d → 4d | 0d → 9d | 294, 295 → 294, 298 |  |
| 305 | Configure components | 2006-07-24 → 2006-07-14 (-10d) | 2006-07-26 → 2006-07-18 (-8d) |  | 0d → 10d | 294, 295 → 294, 298 |  |
| 306 | Test | 2006-07-27 → 2006-07-20 (-7d) | 2006-07-31 → 2006-07-24 (-7d) |  | 0d → 9d |  |  |
| 307 | **Test case challenge** | 2006-08-01 → 2006-07-25 (-7d) | 2006-08-02 → 2006-07-26 (-7d) |  | 0d → 9d |  |  |
| 308 | Submit Challenges | 2006-08-01 → 2006-07-25 (-7d) | 2006-08-01 → 2006-07-25 (-7d) |  | 0d → 9d |  |  |
| 309 | Appeals response | 2006-08-02 → 2006-07-26 (-7d) | 2006-08-02 → 2006-07-26 (-7d) |  | 0d → 9d |  |  |
| 310 | **Review** | 2006-08-03 → 2006-07-27 (-7d) | 2006-08-17 → 2006-08-11 (-6d) | 11d → 12d | 0d → 9d |  |  |
| 311 | Score Testcases | 2006-08-03 → 2006-07-27 (-7d) | 2006-08-03 → 2006-07-27 (-7d) |  | 1d → 10d |  |  |
| 312 | Score Submissions | 2006-08-03 → 2006-07-27 (-7d) | 2006-08-04 → 2006-07-28 (-7d) |  | 0d → 9d |  |  |
| 313 | Review Code | 2006-08-07 → 2006-07-31 (-7d) | 2006-08-08 → 2006-08-01 (-7d) |  | 0d → 9d |  |  |
| 314 | Appeals | 2006-08-09 → 2006-08-02 (-7d) | 2006-08-09 → 2006-08-02 (-7d) |  | 0d → 9d |  |  |
| 315 | Appeals Response | 2006-08-10 → 2006-08-03 (-7d) | 2006-08-10 → 2006-08-03 (-7d) |  | 0d → 9d |  |  |
| 316 | Final Fixes | 2006-08-11 → 2006-08-04 (-7d) | 2006-08-15 → 2006-08-08 (-7d) |  | 0d → 9d |  |  |
| 317 | Final Review | 2006-08-16 → 2006-08-09 (-7d) | 2006-08-16 → 2006-08-09 (-7d) |  | 0d → 9d |  |  |
| 322 | TopCoder Website Content Creation | 2006-07-21 → 2006-07-14 (-7d) | 2006-07-27 → 2006-07-20 (-7d) |  | 15d → 25d | 38FS-5d → 38FS-10d |  |
| 377 | **Deployment to QA** | 2006-08-18 → 2006-08-25 (+7d) | 2006-09-05 → 2006-09-14 (+9d) | 13d → 14d | 16d → 10d |  | was named Deployment |
| 379 | **Testing Iteration** | 2006-08-24 → 2006-08-31 (+7d) | 2006-09-05 → 2006-09-14 (+9d) | 9d → 10d | 16d → 10d |  |  |
| 380 | Test Plan Execution | 2006-08-24 → 2006-08-31 (+7d) | 2006-08-28 → 2006-09-06 (+9d) | 3d → 4d | 16d → 10d | 384 → 378 |  |
| 381 | User Acceptance Testing | 2006-08-29 → 2006-09-07 (+9d) | 2006-09-04 → 2006-09-13 (+9d) |  | 16d → 10d |  |  |
| 382 | PM Certification | 2006-09-05 → 2006-09-14 (+9d) | 2006-09-05 → 2006-09-14 (+9d) |  | 16d → 10d |  |  |
| 384 | Deployment | 2006-08-18 → 2006-09-15 (+28d) | 2006-08-23 → 2006-09-15 (+23d) | 4d → 1d | 16d → 10d | 288 → 377 | constraint finish no earlier than 2005-05-27 → none; resources Project Manager; Application Assembler 1 → none |
| 387 | **Support** | 2006-08-18 → 2006-08-25 (+7d) | 2006-09-28 → 2006-10-06 (+8d) |  |  |  |  |
| 388 | Capture DRs | 2006-08-18 → 2006-08-25 (+7d) | 2006-09-07 → 2006-09-15 (+8d) |  |  |  |  |
| 389 | Release Fix | 2006-09-08 → 2006-09-18 (+10d) | 2006-09-28 → 2006-10-06 (+8d) |  |  |  |  |
| 390 | Send out how-to info to users | 2006-08-18 → 2006-09-22 (+35d) | 2006-08-18 → 2006-09-22 (+35d) |  | 29d → 10d | PM Review/Certification → 383 |  |
| 391 | Beta Release to internal users | 2006-09-06 → 2006-09-22 (+16d) | 2006-09-06 → 2006-09-22 (+16d) |  | 16d → 10d | 377 → 383 |  |

## Version 11 (saved 2006-07-25)

Last finish 2006-10-06 → 2006-10-13 (+7d). Complete tasks 38 → 182.

Added:

| ID | Task | Duration | Start | Finish | Predecessors | Constraint | Resources |
| --- | --- | --- | --- | --- | --- | --- | --- |
| 377 | **Migration Assembly** | 27.5d | 2006-07-27 | 2006-09-05 |  |  |  |
| 378 | Create Conversion Scripts | 3d | 2006-08-11 | 2006-08-16 | 361FS-2d, 332FS-2d |  |  |
| 379 | **Update Content Pages** | 1d | 2006-08-16 | 2006-08-17 | 378 |  |  |
| 380 | Update Active Contest Page | 1d | 2006-08-16 | 2006-08-17 |  |  |  |
| 381 | Update Contest Status Page | 1d | 2006-08-16 | 2006-08-17 |  |  |  |
| 382 | Display Scorecards | 1d | 2006-08-16 | 2006-08-17 |  |  |  |
| 383 | Send Component Project Information | 1d | 2006-08-16 | 2006-08-17 |  |  |  |
| 384 | Send Competitor Registration | 1d | 2006-08-16 | 2006-08-17 |  |  |  |
| 385 | Send Reviewer Registration | 1d | 2006-08-16 | 2006-08-17 |  |  |  |
| 386 | Send Data to Warehouse | 1d | 2006-08-16 | 2006-08-17 |  |  |  |
| 387 | Test Case Development | 5d | 2006-07-27 | 2006-08-02 |  | start no earlier than 2006-07-27 |  |
| 388 | Test Case Review | 1d | 2006-08-03 | 2006-08-03 | 387 |  |  |
| 389 | Integration with On-Site Plasma Scoreboard | 5d | 2006-08-17 | 2006-08-24 | 379 |  |  |
| 390 | **Certification** | 7d | 2006-08-24 | 2006-09-05 |  |  |  |
| 391 | Deployment To TopCoder QA | 2d | 2006-08-24 | 2006-08-28 | 389 |  |  |
| 394 | Application Bu Fixes, Implemeted | 2d | 2006-08-30 | 2006-09-01 | 393 |  |  |
| 395 | Project Manager Certification | 1d | 2006-09-01 | 2006-09-05 | 394 |  |  |
| 396 | **Deployment** | 43.5d | 2006-07-24 | 2006-09-22 |  |  |  |
| 397 | Set up QA Environment (database, apache, jboss) | 3d | 2006-07-24 | 2006-07-26 |  | start no earlier than 2006-07-24 | Dan Ulery |

Changed:

| ID | Task | Start | Finish | Duration | Complete | Total float | Predecessors | Other |
| --- | --- | --- | --- | --- | --- | --- | --- | --- |
| 1 | **TopCoder Online Review/Scorecard Project** |  | 2006-10-06 → 2006-10-13 (+7d) | 332d? → 336.5d? | 17% → 65% |  |  |  |
| 27 | **Application Architecture** |  | 2006-06-06 A |  | 99% → 100% | 87d → none |  |  |
| 37 | Review | 2006-06-06 A | 2006-06-06 A |  | 0% → 100% | 71d → none |  |  |
| 38 | **Component Production** |  | 2006-07-27 → 2006-08-10 (+14d) | 46d → 56d | 6% → 78% | 0d → 44.5d |  |  |
| 39 | **File Upload 2.0** |  | 2006-07-04 → 2006-07-13 (+9d) | 29d → 36d | 47% → 90% | 17d → 64.5d |  |  |
| 42 | Design Final Fixes | 2006-06-13 A | 2006-06-14 A |  | 0% → 100% | 14d → none |  |  |
| 43 | Creation of Dev Distro | 2006-06-15 A | 2006-06-15 A |  | 0% → 100% | 14d → none |  |  |
| 44 | Development Posting | 2006-06-16 → 2006-06-22 A (+6d) | 2006-06-23 → 2006-06-29 A (+6d) |  | 0% → 100% | 14d → none |  |  |
| 45 | Development Review | 2006-06-26 → 2006-07-03 A (+7d) | 2006-06-29 → 2006-07-06 A (+7d) |  | 0% → 100% | 14d → none |  | constraint none → finish no earlier than 2006-07-06 |
| 46 | Development Final Fixes | 2006-06-30 → 2006-07-11 (+11d) | 2006-07-03 → 2006-07-12 (+9d) |  |  | 14d → 64.5d |  | constraint finish no earlier than 2005-04-06 → finish no earlier than 2006-07-12 |
| 47 | Post to Catalog | 2006-07-04 → 2006-07-13 (+9d) | 2006-07-04 → 2006-07-13 (+9d) |  |  | 14d → 19d |  |  |
| 48 | **Cached Web Element Tag** |  | 2006-07-07 → 2006-07-11 A (+4d) | 32d → 34d | 23% → 100% | 14d → none |  |  |
| 50 | Design Review | 2006-06-02 A | 2006-06-07 A |  | 0% → 100% | 15d → none |  |  |
| 51 | Design Final Fixes | 2006-06-16 A | 2006-06-19 A |  | 0% → 100% | 14d → none |  |  |
| 52 | Creation of Dev Distro | 2006-06-20 A | 2006-06-20 A |  | 0% → 100% | 9d → none |  |  |
| 53 | Development Posting | 2006-06-21 → 2006-06-22 A (+1d) | 2006-06-28 → 2006-06-29 A (+1d) |  | 0% → 100% | 9d → none |  |  |
| 54 | Development Review | 2006-06-29 → 2006-06-30 A (+1d) | 2006-07-04 → 2006-07-05 A (+1d) |  | 0% → 100% | 9d → none |  |  |
| 55 | Development Final Fixes | 2006-07-05 → 2006-07-07 A (+2d) | 2006-07-06 → 2006-07-10 A (+4d) |  | 0% → 100% | 9d → none |  | constraint finish no earlier than 2005-04-06 → finish no earlier than 2006-07-10 |
| 56 | Post to Catalog | 2006-07-07 → 2006-07-11 A (+4d) | 2006-07-07 → 2006-07-11 A (+4d) |  | 0% → 100% | 9d → none |  |  |
| 57 | **Database Abstraction 1.1** |  | 2006-07-05 → 2006-07-06 (+1d) | 30d → 31d | 52% → 88% | 16d → 19.5d |  |  |
| 62 | Development Posting | 2006-06-15 A | 2006-06-21 A |  | 0% → 100% | 19d → none |  |  |
| 63 | Development Review | 2006-06-27 A | 2006-06-30 A |  | 0% → 100% | 16d → none |  |  |
| 64 | Development Final Fixes | 2006-07-03 → 2006-07-04 (+1d) | 2006-07-04 → 2006-07-05 (+1d) |  |  | 11d → 19.5d |  | constraint finish no earlier than 2005-04-06 → finish no earlier than 2006-07-05 |
| 65 | Post to Catalog | 2006-07-05 → 2006-07-06 (+1d) | 2006-07-05 → 2006-07-06 (+1d) |  |  | 11d → 23d |  |  |
| 66 | **Scorecard Management (2 dev)** |  | 2006-07-10 → 2006-07-17 (+7d) | 28d → 33d | 13% → 84% | 12d → 12.5d |  |  |
| 68 | Design Review | 2006-06-12 A | 2006-06-15 A |  | 0% → 100% | 10d → none |  |  |
| 69 | Design Final Fixes | 2006-06-16 A | 2006-06-20 A |  | 0% → 100% | 10d → none |  |  |
| 70 | **Scorecard Management Development** | 2006-06-21 A | 2006-07-10 → 2006-07-12 (+2d) | 14d → 16d | 0% → 79% | 10d → 15.5d |  |  |
| 71 | Creation of Management Dev Distro | 2006-06-21 A | 2006-06-21 A |  | 0% → 100% | 8d → none |  |  |
| 72 | Development Posting | 2006-06-22 A | 2006-06-29 A |  | 0% → 100% | 8d → none |  |  |
| 73 | Development Review | 2006-06-30 → 2006-07-03 A (+3d) | 2006-07-05 → 2006-07-06 A (+1d) |  | 0% → 100% | 8d → none |  | constraint none → finish no earlier than 2006-07-06 |
| 74 | Development Final Fixes | 2006-07-06 → 2006-07-10 (+4d) | 2006-07-07 → 2006-07-11 (+4d) |  |  | 8d → 15.5d |  | constraint finish no earlier than 2005-04-06 → finish no earlier than 2006-07-11 |
| 75 | Post to Catalog | 2006-07-10 → 2006-07-12 (+2d) | 2006-07-10 → 2006-07-12 (+2d) |  |  | 8d → 20d |  |  |
| 76 | **Scorecard Persistence Development** | 2006-06-21 A | 2006-07-10 → 2006-07-17 (+7d) | 14d → 19d | 0% → 75% | 10d → 12.5d |  |  |
| 77 | Creation of Management Dev Distro | 2006-06-21 A | 2006-06-21 A |  | 0% → 100% | 21d → none |  |  |
| 78 | Development Posting | 2006-06-22 → 2006-06-29 A (+7d) | 2006-06-29 → 2006-07-04 A (+5d) | 6d → 4d | 0% → 100% | 15d → none | 71 → 77 |  |
| 79 | Development Review | 2006-06-30 → 2006-07-06 A (+6d) | 2006-07-05 → 2006-07-11 A (+6d) |  | 0% → 100% | 11d → none | 72 → 78 | constraint none → finish no earlier than 2006-07-11 |
| 80 | Development Final Fixes | 2006-07-06 → 2006-07-13 (+7d) | 2006-07-07 → 2006-07-14 (+7d) |  |  | 9d → 12.5d | 73 → 79 | constraint finish no earlier than 2005-04-06 → finish no earlier than 2006-07-14 |
| 81 | Post to Catalog | 2006-07-10 → 2006-07-17 (+7d) | 2006-07-10 → 2006-07-17 (+7d) |  |  | 8d → 17d | 74 → 80 |  |
| 82 | **Scorecard Data Structure** |  | 2006-07-10 → 2006-07-12 A (+2d) | 27.5d → 30d | 20% → 100% | 10.5d → none |  |  |
| 84 | Design Review | 2006-06-13 A | 2006-06-18 A |  | 0% → 100% | 10.5d → none |  |  |
| 85 | Design Final Fixes | 2006-06-19 A | 2006-06-20 A |  | 0% → 100% | 10.5d → none |  |  |
| 86 | Creation of Dev Distro | 2006-06-21 A | 2006-06-21 A |  | 0% → 100% | 10.5d → none |  |  |
| 87 | Development Posting | 2006-06-21 A | 2006-06-29 A |  | 0% → 100% | 10.5d → none |  |  |
| 88 | Development Review | 2006-06-29 → 2006-06-30 A (+1d) | 2006-07-05 → 2006-07-07 A (+2d) | 4d → 6d | 0% → 100% | 10.5d → none |  | constraint none → finish no earlier than 2006-07-07 |
| 89 | Development Final Fixes | 2006-07-05 → 2006-07-10 A (+5d) | 2006-07-07 → 2006-07-11 A (+4d) |  | 0% → 100% | 10.5d → none |  | constraint finish no earlier than 2005-04-06 → finish no earlier than 2006-07-11 |
| 90 | Post to Catalog | 2006-07-07 → 2006-07-12 A (+5d) | 2006-07-10 → 2006-07-12 A (+2d) |  | 0% → 100% | 10.5d → none |  |  |
| 91 | **Review Management (2 dev)** | 2006-06-01 A | 2006-07-06 → 2006-07-12 (+6d) | 26d → 30d | 0% → 93% | 15d → 15.5d |  |  |
| 92 | Design Posting | 2006-06-01 A | 2006-06-08 A |  | 0% → 100% | 49d → none |  |  |
| 93 | Design Review | 2006-06-09 A | 2006-06-14 A |  | 0% → 100% | 49d → none |  |  |
| 94 | Design Final Fixes | 2006-06-15 A | 2006-06-16 A |  | 0% → 100% | 49d → none |  |  |
| 95 | **Review Management Development** | 2006-06-19 A | 2006-07-06 → 2006-07-12 A (+6d) | 14d → 18d | 0% → 100% | 15d → none |  |  |
| 96 | Creation of Management Dev Distro | 2006-06-19 A | 2006-06-19 A |  | 0% → 100% | 49d → none |  |  |
| 97 | Development Posting | 2006-06-20 → 2006-06-22 A (+2d) | 2006-06-27 → 2006-06-29 A (+2d) |  | 0% → 100% | 49d → none |  |  |
| 98 | Development Review | 2006-06-28 → 2006-07-03 A (+5d) | 2006-07-03 → 2006-07-06 A (+3d) |  | 0% → 100% | 49d → none |  | constraint none → finish no earlier than 2006-07-06 |
| 99 | Development Final Fixes | 2006-07-04 → 2006-07-10 A (+6d) | 2006-07-05 → 2006-07-11 A (+6d) |  | 0% → 100% | 49d → none |  | constraint finish no earlier than 2005-04-06 → finish no earlier than 2006-07-11 |
| 100 | Post to Catalog | 2006-07-06 → 2006-07-12 A (+6d) | 2006-07-06 → 2006-07-12 A (+6d) |  | 0% → 100% | 49d → none |  |  |
| 101 | **Review Persistence Development** | 2006-06-19 A | 2006-07-06 → 2006-07-12 (+6d) | 14d → 18d | 0% → 79% | 15d → 15.5d |  |  |
| 102 | Creation of Management Dev Distro | 2006-06-19 A | 2006-06-19 A |  | 0% → 100% | 49d → none |  |  |
| 103 | Development Posting | 2006-06-20 → 2006-06-22 A (+2d) | 2006-06-27 → 2006-06-29 A (+2d) |  | 0% → 100% | 49d → none |  |  |
| 104 | Development Review | 2006-06-28 → 2006-07-03 A (+5d) | 2006-07-03 → 2006-07-06 A (+3d) |  | 0% → 100% | 49d → none |  | constraint none → start no earlier than 2006-07-03 |
| 105 | Development Final Fixes | 2006-07-04 → 2006-07-10 (+6d) | 2006-07-05 → 2006-07-11 (+6d) |  |  | 49d → 20d |  | constraint finish no earlier than 2005-04-06 → start no earlier than 2006-07-10 |
| 106 | Post to Catalog | 2006-07-06 → 2006-07-12 (+6d) | 2006-07-06 → 2006-07-12 (+6d) |  |  | 49d → 20d |  |  |
| 107 | **Project Phases 2.0** | 2006-06-08 A | 2006-07-13 → 2006-07-26 (+13d) | 26d → 35d | 0% → 73% | 10d → 5.5d |  |  |
| 108 | Design Posting | 2006-06-08 A | 2006-06-15 A |  | 0% → 100% | 44d → none |  |  |
| 109 | Design Review | 2006-06-16 A | 2006-06-21 A |  | 0% → 100% | 44d → none |  |  |
| 110 | Design Final Fixes | 2006-06-22 A | 2006-06-23 A |  | 0% → 100% | 44d → none |  |  |
| 111 | Creation of Dev Distro | 2006-06-26 A | 2006-06-26 A |  | 0% → 100% | 44d → none |  |  |
| 112 | Development Posting | 2006-06-27 → 2006-07-06 A (+9d) | 2006-07-04 → 2006-07-13 A (+9d) |  | 0% → 100% | 44d → none |  | constraint start no earlier than 2005-03-30 → start no earlier than 2006-07-06 |
| 113 | Development Review | 2006-07-05 → 2006-07-18 (+13d) | 2006-07-10 → 2006-07-21 (+11d) |  |  | 44d → 5.5d |  | constraint none → finish no earlier than 2006-07-21 |

| ID | Task | Start | Finish | Duration | Complete | Total float | Other |
| --- | --- | --- | --- | --- | --- | --- | --- |
| 114 | Development Final Fixes | 2006-07-11 → 2006-07-24 (+13d) | 2006-07-12 → 2006-07-25 (+13d) |  |  | 44d → 10d | constraint finish no earlier than 2005-04-06 → finish no earlier than 2006-07-25 |
| 115 | Post to Catalog | 2006-07-13 → 2006-07-26 (+13d) | 2006-07-13 → 2006-07-26 (+13d) |  |  | 44d → 10d |  |
| 116 | **Review Score Calculator** | 2006-06-08 A | 2006-07-13 → 2006-07-19 A (+6d) | 26d → 30d | 0% → 100% | 10d → none |  |
| 117 | Design Posting | 2006-06-08 A | 2006-06-15 A |  | 0% → 100% | 44d → none |  |
| 118 | Design Review | 2006-06-16 A | 2006-06-21 A |  | 0% → 100% | 44d → none |  |
| 119 | Design Final Fixes | 2006-06-22 A | 2006-06-23 A |  | 0% → 100% | 44d → none |  |
| 120 | Creation of Dev Distro | 2006-06-26 A | 2006-06-26 A |  | 0% → 100% | 44d → none |  |
| 121 | Development Posting | 2006-06-27 → 2006-06-29 A (+2d) | 2006-07-04 → 2006-07-06 A (+2d) |  | 0% → 100% | 44d → none | constraint start no earlier than 2005-03-30 → start no earlier than 2006-06-29 |
| 122 | Development Review | 2006-07-05 → 2006-07-10 A (+5d) | 2006-07-10 → 2006-07-13 A (+3d) |  | 0% → 100% | 44d → none | constraint none → finish no earlier than 2006-07-13 |
| 123 | Development Final Fixes | 2006-07-11 → 2006-07-17 A (+6d) | 2006-07-12 → 2006-07-18 A (+6d) |  | 0% → 100% | 44d → none | constraint finish no earlier than 2005-04-06 → finish no earlier than 2006-07-18 |
| 124 | Post to Catalog | 2006-07-13 → 2006-07-19 A (+6d) | 2006-07-13 → 2006-07-19 A (+6d) |  | 0% → 100% | 44d → none |  |
| 125 | **Review Score Aggregator** | 2006-06-08 A | 2006-07-13 → 2006-07-19 (+6d) | 26d → 30d | 0% → 73% | 10d → 10.5d |  |
| 126 | Design Posting | 2006-06-08 A | 2006-06-15 A |  | 0% → 100% | 44d → none |  |
| 127 | Design Review | 2006-06-16 A | 2006-06-21 A |  | 0% → 100% | 44d → none |  |
| 128 | Design Final Fixes | 2006-06-22 A | 2006-06-23 A |  | 0% → 100% | 44d → none |  |
| 129 | Creation of Dev Distro | 2006-06-26 A | 2006-06-26 A |  | 0% → 100% | 44d → none |  |
| 130 | Development Posting | 2006-06-27 → 2006-06-29 A (+2d) | 2006-07-04 → 2006-07-06 A (+2d) |  | 0% → 100% | 44d → none | constraint start no earlier than 2005-03-30 → start no earlier than 2006-06-29 |
| 131 | Development Review | 2006-07-05 → 2006-07-10 (+5d) | 2006-07-10 → 2006-07-13 (+3d) |  |  | 44d → 11.5d | constraint none → finish no earlier than 2006-07-13 |
| 132 | Development Final Fixes | 2006-07-11 → 2006-07-17 (+6d) | 2006-07-12 → 2006-07-18 (+6d) |  |  | 44d → 10.5d | constraint finish no earlier than 2005-04-06 → finish no earlier than 2006-07-18 |
| 133 | Post to Catalog | 2006-07-13 → 2006-07-19 (+6d) | 2006-07-13 → 2006-07-19 (+6d) |  |  | 44d → 14d |  |
| 134 | **Project Management (2 dev)** | 2006-06-08 A | 2006-07-13 → 2006-07-20 (+7d) | 26d → 31d | 0% → 93% | 10d → 9.5d |  |
| 135 | Design Posting | 2006-06-08 A | 2006-06-15 A |  | 0% → 100% | 44d → none |  |
| 136 | Design Review | 2006-06-16 A | 2006-06-21 A |  | 0% → 100% | 44d → none |  |
| 137 | Design Final Fixes | 2006-06-22 A | 2006-06-23 A |  | 0% → 100% | 44d → none |  |
| 138 | **Project Management Development** | 2006-06-26 A | 2006-07-13 → 2006-07-19 A (+6d) | 14d → 18d | 0% → 100% | 10d → none |  |
| 139 | Creation of Management Dev Distro | 2006-06-26 A | 2006-06-26 A |  | 0% → 100% | 44d → none |  |
| 140 | Development Posting | 2006-06-27 → 2006-06-29 A (+2d) | 2006-07-04 → 2006-07-06 A (+2d) |  | 0% → 100% | 44d → none | constraint start no earlier than 2005-03-30 → start no earlier than 2006-06-29 |
| 141 | Development Review | 2006-07-05 → 2006-07-07 A (+2d) | 2006-07-10 → 2006-07-14 A (+4d) | 4d → 6d | 0% → 100% | 44d → none | constraint none → finish no earlier than 2006-07-14 |
| 142 | Development Final Fixes | 2006-07-11 → 2006-07-17 A (+6d) | 2006-07-12 → 2006-07-18 A (+6d) |  | 0% → 100% | 44d → none | constraint finish no earlier than 2005-04-06 → finish no earlier than 2006-07-18 |
| 143 | Post to Catalog | 2006-07-13 → 2006-07-19 A (+6d) | 2006-07-13 → 2006-07-19 A (+6d) |  | 0% → 100% | 44d → none |  |
| 144 | **Project Persistence Development** | 2006-06-26 A | 2006-07-13 → 2006-07-20 (+7d) | 14d → 19d | 0% → 79% | 10d → 9.5d |  |
| 145 | Creation of Management Dev Distro | 2006-06-26 A | 2006-06-26 A |  | 0% → 100% | 44d → none |  |
| 146 | Development Posting | 2006-06-27 → 2006-06-29 A (+2d) | 2006-07-04 → 2006-07-06 A (+2d) |  | 0% → 100% | 44d → none | constraint start no earlier than 2005-03-30 → start no earlier than 2006-06-29 |
| 147 | Development Review | 2006-07-05 → 2006-07-10 A (+5d) | 2006-07-10 → 2006-07-13 A (+3d) |  | 0% → 100% | 44d → none | constraint none → finish no earlier than 2006-07-13 |
| 148 | Development Final Fixes | 2006-07-11 → 2006-07-18 (+7d) | 2006-07-12 → 2006-07-19 (+7d) |  |  | 44d → 9.5d | constraint finish no earlier than 2005-04-06 → finish no earlier than 2006-07-19 |
| 149 | Post to Catalog | 2006-07-13 → 2006-07-20 (+7d) | 2006-07-13 → 2006-07-20 (+7d) |  |  | 44d → 14d |  |
| 150 | **Resource Management** | 2006-06-08 A | 2006-07-13 → 2006-07-28 (+15d) | 26d → 37d | 0% → 62% | 10d → 3.5d |  |
| 151 | Design Posting | 2006-06-08 A | 2006-06-15 A |  | 0% → 100% | 44d → none |  |
| 152 | Design Review | 2006-06-16 A | 2006-06-21 A |  | 0% → 100% | 44d → none |  |
| 153 | Design Final Fixes | 2006-06-22 A | 2006-06-23 A |  | 0% → 100% | 44d → none |  |
| 154 | **Resource Management Development** | 2006-06-26 A | 2006-07-13 → 2006-07-26 (+13d) | 14d → 23d | 0% → 44% | 10d → 5.5d |  |
| 155 | Creation of Management Dev Distro | 2006-06-26 A | 2006-06-26 A |  | 0% → 100% | 44d → none |  |
| 156 | Development Posting | 2006-06-27 → 2006-07-06 A (+9d) | 2006-07-04 → 2006-07-13 A (+9d) |  | 0% → 100% | 44d → none | constraint start no earlier than 2005-03-30 → start no earlier than 2006-07-13 |
| 157 | Development Review | 2006-07-05 → 2006-07-14 (+9d) | 2006-07-10 → 2006-07-21 (+11d) | 4d → 6d |  | 44d → 10d | constraint none → start no earlier than 2006-07-14 |
| 158 | Development Final Fixes | 2006-07-11 → 2006-07-24 (+13d) | 2006-07-12 → 2006-07-25 (+13d) |  |  | 44d → 10d | constraint finish no earlier than 2005-04-06 → finish no earlier than 2006-07-25 |
| 159 | Post to Catalog | 2006-07-13 → 2006-07-26 (+13d) | 2006-07-13 → 2006-07-26 (+13d) |  |  | 44d → 10d |  |
| 160 | **Resource Persistence Development** | 2006-06-26 A | 2006-07-13 → 2006-07-28 (+15d) | 14d → 25d | 0% → 50% | 10d → 3.5d |  |
| 161 | Creation of Management Dev Distro | 2006-06-26 A | 2006-06-26 A |  | 0% → 100% | 44d → none |  |
| 162 | Development Posting | 2006-06-27 → 2006-07-06 A (+9d) | 2006-07-04 → 2006-07-13 A (+9d) |  | 0% → 100% | 44d → none | constraint start no earlier than 2005-03-30 → start no earlier than 2006-07-06 |
| 163 | Development Review | 2006-07-05 → 2006-07-18 (+13d) | 2006-07-10 → 2006-07-21 (+11d) |  |  | 44d → 5.5d | constraint none → finish no earlier than 2006-07-21 |
| 164 | Development Final Fixes | 2006-07-11 → 2006-07-26 (+15d) | 2006-07-12 → 2006-07-27 (+15d) |  |  | 44d → 3.5d | constraint finish no earlier than 2005-04-06 → finish no earlier than 2006-07-27 |
| 165 | Post to Catalog | 2006-07-13 → 2006-07-28 (+15d) | 2006-07-13 → 2006-07-28 (+15d) |  |  | 44d → 8d |  |
| 166 | **Deliverable Management** | 2006-06-08 A | 2006-07-13 → 2006-07-28 (+15d) | 26d → 37d | 0% → 65% | 10d → 3.5d |  |
| 167 | Design Posting | 2006-06-08 A | 2006-06-15 A |  | 0% → 100% | 44d → none |  |
| 168 | Design Review | 2006-06-16 A | 2006-06-21 A |  | 0% → 100% | 44d → none |  |
| 169 | Design Final Fixes | 2006-06-22 A | 2006-06-23 A |  | 0% → 100% | 44d → none |  |
| 170 | **Deliverable Management Development** | 2006-06-26 A | 2006-07-13 → 2006-07-27 (+14d) | 14d → 24d | 0% → 50% | 10d → 4.5d |  |
| 171 | Creation of Management Dev Distro | 2006-06-26 A | 2006-06-26 A |  | 0% → 100% | 44d → none |  |
| 172 | Development Posting | 2006-06-27 → 2006-07-06 A (+9d) | 2006-07-04 → 2006-07-13 A (+9d) |  | 0% → 100% | 44d → none | constraint start no earlier than 2005-03-30 → start no earlier than 2006-07-06 |
| 173 | Development Review | 2006-07-05 → 2006-07-19 (+14d) | 2006-07-10 → 2006-07-24 (+14d) |  |  | 44d → 4.5d | constraint none → finish no earlier than 2006-07-24 |
| 174 | Development Final Fixes | 2006-07-11 → 2006-07-25 (+14d) | 2006-07-12 → 2006-07-26 (+14d) |  |  | 44d → 9d | constraint finish no earlier than 2005-04-06 → finish no earlier than 2006-07-20 |
| 175 | Post to Catalog | 2006-07-13 → 2006-07-27 (+14d) | 2006-07-13 → 2006-07-27 (+14d) |  |  | 44d → 9d |  |
| 176 | **Deliverable Persistence Development** | 2006-06-26 A | 2006-07-13 → 2006-07-28 (+15d) | 14d → 25d | 0% → 50% | 10d → 3.5d |  |
| 177 | Creation of Management Dev Distro | 2006-06-26 A | 2006-06-26 A |  | 0% → 100% | 44d → none |  |
| 178 | Development Posting | 2006-06-27 → 2006-07-06 A (+9d) | 2006-07-04 → 2006-07-13 A (+9d) |  | 0% → 100% | 44d → none | constraint start no earlier than 2005-03-30 → start no earlier than 2006-07-06 |
| 179 | Development Review | 2006-07-05 → 2006-07-19 (+14d) | 2006-07-10 → 2006-07-24 (+14d) |  |  | 44d → 4.5d | constraint none → finish no earlier than 2006-07-24 |
| 180 | Development Final Fixes | 2006-07-11 → 2006-07-26 (+15d) | 2006-07-12 → 2006-07-27 (+15d) |  |  | 44d → 3.5d | constraint finish no earlier than 2005-04-06 → finish no earlier than 2006-07-27 |
| 181 | Post to Catalog | 2006-07-13 → 2006-07-28 (+15d) | 2006-07-13 → 2006-07-28 (+15d) |  |  | 44d → 8d |  |
| 182 | **Search Builder 1.3** | 2006-06-08 A | 2006-07-13 → 2006-07-31 (+18d) | 26d → 38d | 0% → 61% | 10d → 2.5d |  |
| 183 | Design Posting | 2006-06-08 A | 2006-06-15 A |  | 0% → 100% | 44d → none |  |

| ID | Task | Start | Finish | Duration | Complete | Total float | Other |
| --- | --- | --- | --- | --- | --- | --- | --- |
| 184 | Design Review | 2006-06-16 A | 2006-06-21 A |  | 0% → 100% | 44d → none |  |
| 185 | Design Final Fixes | 2006-06-22 A | 2006-06-23 A |  | 0% → 100% | 44d → none |  |
| 186 | Creation of Dev Distro | 2006-06-26 A | 2006-06-26 A |  | 0% → 100% | 44d → none |  |
| 187 | Development Posting | 2006-06-27 → 2006-07-06 A (+9d) | 2006-07-04 → 2006-07-13 A (+9d) |  | 0% → 100% | 44d → none | constraint start no earlier than 2005-03-30 → start no earlier than 2006-07-06 |
| 188 | Development Review | 2006-07-05 → 2006-07-14 (+9d) | 2006-07-10 → 2006-07-26 (+16d) | 4d → 9d |  | 44d → 7d | constraint none → finish no earlier than 2006-07-26 |
| 189 | Development Final Fixes | 2006-07-11 → 2006-07-27 (+16d) | 2006-07-12 → 2006-07-28 (+16d) |  |  | 44d → 7d |  |
| 190 | Post to Catalog | 2006-07-13 → 2006-07-31 (+18d) | 2006-07-13 → 2006-07-31 (+18d) |  |  | 44d → 7d |  |
| 191 | **Phase Management** | 2006-06-08 A | 2006-07-13 → 2006-08-02 (+20d) | 26d → 40d | 0% → 65% | 10d → 0.5d |  |
| 192 | Design Posting | 2006-06-08 A | 2006-06-15 A |  | 0% → 100% | 44d → none |  |
| 193 | Design Review | 2006-06-16 A | 2006-06-21 A |  | 0% → 100% | 44d → none |  |
| 194 | Design Final Fixes | 2006-06-22 A | 2006-06-23 A |  | 0% → 100% | 44d → none |  |
| 195 | **Phase Management Development** | 2006-06-26 A | 2006-07-13 → 2006-08-02 (+20d) | 14d → 28d | 0% → 50% | 10d → 0.5d |  |
| 196 | Creation of Management Dev Distro | 2006-06-26 A | 2006-06-26 A |  | 0% → 100% | 44d → none |  |
| 197 | Development Posting | 2006-06-27 → 2006-07-13 A (+16d) | 2006-07-04 → 2006-07-20 A (+16d) |  | 0% → 100% | 44d → none | constraint start no earlier than 2005-03-30 → start no earlier than 2006-07-13 |
| 198 | Development Review | 2006-07-05 → 2006-07-25 (+20d) | 2006-07-10 → 2006-07-28 (+18d) |  |  | 44d → 0.5d | constraint none → finish no earlier than 2006-07-28 |
| 199 | Development Final Fixes | 2006-07-11 → 2006-07-31 (+20d) | 2006-07-12 → 2006-08-01 (+20d) |  |  | 44d → 5d | constraint finish no earlier than 2005-04-06 → finish no earlier than 2006-08-01 |
| 200 | Post to Catalog | 2006-07-13 → 2006-08-02 (+20d) | 2006-07-13 → 2006-08-02 (+20d) |  |  | 44d → 5d |  |
| 201 | **Phase Persistence Development** | 2006-06-26 A | 2006-07-13 → 2006-08-02 (+20d) | 14d → 28d | 0% → 50% | 10d → 0.5d |  |
| 202 | Creation of Management Dev Distro | 2006-06-26 A | 2006-06-26 A |  | 0% → 100% | 44d → none |  |
| 203 | Development Posting | 2006-06-27 → 2006-07-13 A (+16d) | 2006-07-04 → 2006-07-20 A (+16d) |  | 0% → 100% | 44d → none | constraint start no earlier than 2005-03-30 → start no earlier than 2006-07-13 |
| 204 | Development Review | 2006-07-05 → 2006-07-24 (+19d) | 2006-07-10 → 2006-07-27 (+17d) |  |  | 44d → 1.5d | constraint none → finish no earlier than 2006-07-27 |
| 205 | Development Final Fixes | 2006-07-11 → 2006-07-31 (+20d) | 2006-07-12 → 2006-08-01 (+20d) |  |  | 44d → 0.5d | constraint finish no earlier than 2005-04-06 → finish no earlier than 2006-08-01 |
| 206 | Post to Catalog | 2006-07-13 → 2006-08-02 (+20d) | 2006-07-13 → 2006-08-02 (+20d) |  |  | 44d → 5d |  |
| 207 | **Project Phase Template** | 2006-06-08 A | 2006-07-13 → 2006-07-19 A (+6d) | 26d → 30d | 0% → 100% | 10d → none |  |
| 208 | Design Posting | 2006-06-08 A | 2006-06-15 A |  | 0% → 100% | 44d → none |  |
| 209 | Design Review | 2006-06-16 A | 2006-06-21 A |  | 0% → 100% | 44d → none |  |
| 210 | Design Final Fixes | 2006-06-22 A | 2006-06-23 A |  | 0% → 100% | 44d → none |  |
| 211 | Creation of Dev Distro | 2006-06-26 A | 2006-06-26 A |  | 0% → 100% | 44d → none |  |
| 212 | Development Posting | 2006-06-27 → 2006-06-29 A (+2d) | 2006-07-04 → 2006-07-06 A (+2d) |  | 0% → 100% | 44d → none | constraint start no earlier than 2005-03-30 → start no earlier than 2006-06-29 |
| 213 | Development Review | 2006-07-05 → 2006-07-10 A (+5d) | 2006-07-10 → 2006-07-13 A (+3d) |  | 0% → 100% | 44d → none | constraint none → finish no earlier than 2006-07-13 |
| 214 | Development Final Fixes | 2006-07-11 → 2006-07-17 A (+6d) | 2006-07-12 → 2006-07-18 A (+6d) |  | 0% → 100% | 44d → none | constraint finish no earlier than 2005-04-06 → finish no earlier than 2006-07-18 |
| 215 | Post to Catalog | 2006-07-13 → 2006-07-19 A (+6d) | 2006-07-13 → 2006-07-19 A (+6d) |  | 0% → 100% | 44d → none |  |
| 216 | **Online Review Login (custom)** | 2006-06-08 A | 2006-07-13 → 2006-08-01 (+19d) | 26d → 39d | 0% → 73% | 10d → 1.5d |  |
| 217 | Design Posting | 2006-06-08 A | 2006-06-15 A |  | 0% → 100% | 10d → none |  |
| 218 | Design Review | 2006-06-16 A | 2006-06-21 A |  | 0% → 100% | 10d → none |  |
| 219 | Design Final Fixes | 2006-06-22 A | 2006-06-23 A |  | 0% → 100% | 10d → none |  |
| 220 | Creation of Dev Distro | 2006-06-26 A | 2006-06-26 A |  | 0% → 100% | 10d → none |  |
| 221 | Development Posting | 2006-06-27 → 2006-07-06 A (+9d) | 2006-07-04 → 2006-07-13 A (+9d) |  | 0% → 100% | 10d → none | constraint start no earlier than 2005-03-30 → start no earlier than 2006-07-06 |
| 222 | Development Review | 2006-07-05 → 2006-07-24 (+19d) | 2006-07-10 → 2006-07-27 (+17d) |  |  | 10d → 1.5d | constraint none → finish no earlier than 2006-07-27 |
| 223 | Development Final Fixes | 2006-07-11 → 2006-07-28 (+17d) | 2006-07-12 → 2006-07-31 (+19d) |  |  | 10d → 6d | constraint finish no earlier than 2005-04-06 → finish no earlier than 2006-07-25 |
| 224 | Post to Catalog | 2006-07-13 → 2006-08-01 (+19d) | 2006-07-13 → 2006-08-01 (+19d) |  |  | 10d → 6d |  |
| 225 | **User Project Data Store (custom)** | 2006-06-15 A | 2006-07-20 → 2006-07-26 (+6d) | 26d → 30d | 0% → 73% | 5d → 5.5d |  |
| 226 | Design Posting | 2006-06-15 A | 2006-06-22 A |  | 0% → 100% | 2d → none |  |
| 227 | Design Review | 2006-06-23 A | 2006-06-28 A |  | 0% → 100% | 2d → none |  |
| 228 | Design Final Fixes | 2006-06-29 A | 2006-06-30 A |  | 0% → 100% | 2d → none |  |
| 229 | Creation of Dev Distro | 2006-07-03 A | 2006-07-03 A |  | 0% → 100% | 2d → none |  |
| 230 | Development Posting | 2006-07-04 → 2006-07-06 A (+2d) | 2006-07-11 → 2006-07-13 A (+2d) |  | 0% → 100% | 2d → none | constraint start no earlier than 2005-03-30 → start no earlier than 2006-07-06 |
| 231 | Development Review | 2006-07-12 → 2006-07-18 (+6d) | 2006-07-17 → 2006-07-21 (+4d) |  |  | 2d → 5.5d | constraint none → finish no earlier than 2006-07-21 |
| 232 | Development Final Fixes | 2006-07-18 → 2006-07-24 (+6d) | 2006-07-19 → 2006-07-25 (+6d) |  |  | 2d → 10d |  |
| 233 | Post to Catalog | 2006-07-20 → 2006-07-26 (+6d) | 2006-07-20 → 2006-07-26 (+6d) |  |  | 2d → 10d |  |
| 234 | **Online Review Ajax Support (custom)** | 2006-06-15 A | 2006-07-20 → 2006-07-31 (+11d) | 26d → 33d | 0% → 73% | 5d → 2.5d |  |
| 235 | Design Posting | 2006-06-15 A | 2006-06-22 A |  | 0% → 100% | 2d → none |  |
| 236 | Design Review | 2006-06-23 A | 2006-06-28 A |  | 0% → 100% | 2d → none |  |
| 237 | Design Final Fixes | 2006-06-29 A | 2006-06-30 A |  | 0% → 100% | 2d → none |  |
| 238 | Creation of Dev Distro | 2006-07-03 A | 2006-07-03 A |  | 0% → 100% | 2d → none |  |
| 239 | Development Posting | 2006-07-04 → 2006-07-06 A (+2d) | 2006-07-11 → 2006-07-13 A (+2d) |  | 0% → 100% | 2d → none | constraint start no earlier than 2005-03-30 → start no earlier than 2006-07-06 |
| 240 | Development Review | 2006-07-12 → 2006-07-21 (+9d) | 2006-07-17 → 2006-07-26 (+9d) |  |  | 2d → 2.5d | constraint none → finish no earlier than 2006-07-26 |
| 241 | Development Final Fixes | 2006-07-18 → 2006-07-27 (+9d) | 2006-07-19 → 2006-07-28 (+9d) |  |  | 2d → 7d | constraint finish no earlier than 2005-04-06 → finish no earlier than 2006-07-25 |
| 242 | Post to Catalog | 2006-07-20 → 2006-07-31 (+11d) | 2006-07-20 → 2006-07-31 (+11d) |  |  | 2d → 7d |  |
| 243 | **Online Review Deliverables (custom)** | 2006-06-15 A | 2006-07-20 → 2006-07-26 (+6d) | 26d → 30d | 0% → 73% | 5d → 5.5d |  |
| 244 | Design Posting | 2006-06-15 A | 2006-06-22 A |  | 0% → 100% | 2d → none |  |
| 245 | Design Review | 2006-06-23 A | 2006-06-28 A |  | 0% → 100% | 2d → none |  |
| 246 | Design Final Fixes | 2006-06-29 A | 2006-06-30 A |  | 0% → 100% | 2d → none |  |
| 247 | Creation of Dev Distro | 2006-07-03 A | 2006-07-03 A |  | 0% → 100% | 2d → none |  |
| 248 | Development Posting | 2006-07-04 → 2006-07-06 A (+2d) | 2006-07-11 → 2006-07-13 A (+2d) |  | 0% → 100% | 2d → none | constraint start no earlier than 2005-03-30 → start no earlier than 2006-07-06 |
| 249 | Development Review | 2006-07-12 → 2006-07-18 (+6d) | 2006-07-17 → 2006-07-21 (+4d) |  |  | 2d → 5.5d | constraint none → finish no earlier than 2006-07-21 |
| 250 | Development Final Fixes | 2006-07-18 → 2006-07-24 (+6d) | 2006-07-19 → 2006-07-25 (+6d) |  |  | 2d → 10d | constraint finish no earlier than 2005-04-06 → finish no earlier than 2006-07-25 |
| 251 | Post to Catalog | 2006-07-20 → 2006-07-26 (+6d) | 2006-07-20 → 2006-07-26 (+6d) |  |  | 2d → 10d |  |
| 252 | **Online Review Phases (custom)** | 2006-06-15 A | 2006-07-24 → 2006-08-03 (+10d) | 28d → 35.5d | 0% → 62% | 3d → 0d |  |
| 253 | Design Posting | 2006-06-15 A | 2006-06-26 A |  | 0% → 100% | 4d → none |  |

| ID | Task | Start | Finish | Duration | Complete | Total float | Predecessors | Other |
| --- | --- | --- | --- | --- | --- | --- | --- | --- |
| 254 | Design Review | 2006-06-28 → 2006-06-27 A (-1d) | 2006-07-03 A | 4d → 5d | 0% → 100% | 3d → none |  | constraint finish no earlier than 2006-07-03 → start no earlier than 2006-06-27 |
| 255 | Design Final Fixes | 2006-07-04 → 2006-07-06 A (+2d) | 2006-07-05 → 2006-07-10 A (+5d) | 2d → 3d | 0% → 100% | 3d → none |  | constraint none → finish no earlier than 2006-07-10 |
| 256 | Creation of Dev Distro | 2006-07-05 → 2006-07-11 A (+6d) | 2006-07-05 → 2006-07-11 A (+6d) | 0d → 1d | 0% → 100% | 3d → none |  |  |
| 257 | Development Posting | 2006-07-06 → 2006-07-20 (+14d) | 2006-07-13 → 2006-07-27 (+14d) |  |  | 3d → 0d |  | constraint start no earlier than 2005-03-30 → start no earlier than 2006-07-20 |
| 258 | Development Review | 2006-07-14 → 2006-07-28 (+14d) | 2006-07-19 → 2006-08-01 (+13d) | 4d → 3d |  | 3d → 0d |  | constraint none → finish no earlier than 2006-08-01 |
| 259 | Development Final Fixes | 2006-07-20 → 2006-08-02 (+13d) | 2006-07-21 → 2006-08-02 (+12d) | 2d → 1d |  | 3d → 0d |  | constraint finish no earlier than 2005-04-06 → start no earlier than 2006-08-02 |
| 260 | Post to Catalog | 2006-07-24 → 2006-08-03 (+10d) | 2006-07-24 → 2006-08-03 (+10d) | 1d → 0.5d |  | 3d → 0d |  |  |
| 261 | **Auto Pilot** | 2006-06-22 A | 2006-07-27 → 2006-08-02 (+6d) | 26d → 30d | 0% → 70% | 0d → 0.5d |  |  |
| 262 | Design Posting | 2006-06-22 A | 2006-06-29 A |  | 0% → 100% | 0d → none |  |  |
| 263 | Design Review | 2006-06-30 → 2006-07-03 A (+3d) | 2006-07-05 → 2006-07-06 A (+1d) |  | 0% → 100% | 0d → none |  | constraint finish no earlier than 2005-03-21 → finish no earlier than 2006-07-06 |
| 264 | Design Final Fixes | 2006-07-06 → 2006-07-10 A (+4d) | 2006-07-07 → 2006-07-11 A (+4d) |  | 0% → 100% | 0d → none |  | constraint none → finish no earlier than 2006-07-11 |
| 265 | Creation of Dev Distro | 2006-07-10 → 2006-07-12 A (+2d) | 2006-07-10 → 2006-07-12 A (+2d) |  | 0% → 100% | 0d → none |  |  |
| 266 | Development Posting | 2006-07-11 → 2006-07-13 A (+2d) | 2006-07-18 → 2006-07-20 A (+2d) |  | 0% → 100% | 0d → none |  |  |
| 267 | Development Review | 2006-07-19 → 2006-07-21 (+2d) | 2006-07-24 → 2006-07-27 (+3d) | 4d → 5d |  | 0d → 6d |  | constraint none → start no earlier than 2006-07-21 |
| 268 | Development Final Fixes | 2006-07-25 → 2006-07-31 (+6d) | 2006-07-26 → 2006-08-01 (+6d) |  |  | 0d → 0.5d |  | constraint finish no earlier than 2005-04-06 → finish no earlier than 2006-08-01 |
| 269 | Post to Catalog | 2006-07-27 → 2006-08-02 (+6d) | 2006-07-27 → 2006-08-02 (+6d) |  |  | 0d → 0.5d |  |  |
| 270 | **Auto Screening Tool (2 dev)** | 2006-06-15 → 2006-06-29 A (+14d) | 2006-07-20 → 2006-08-10 (+21d) | 26d → 31d | 0% → 47% | 5d → 44.5d |  |  |
| 271 | Design Posting | 2006-06-15 → 2006-06-29 A (+14d) | 2006-06-22 → 2006-07-06 A (+14d) |  | 0% → 100% | 2d → none |  | constraint start no earlier than 2006-06-15 → start no earlier than 2006-06-29 |
| 272 | Design Review | 2006-06-23 → 2006-07-10 A (+17d) | 2006-06-28 → 2006-07-19 A (+21d) | 4d → 8d | 0% → 100% | 2d → none |  | constraint finish no earlier than 2005-03-21 → finish no earlier than 2006-07-13 |
| 273 | Design Final Fixes | 2006-06-29 → 2006-07-20 (+21d) | 2006-06-30 → 2006-07-21 (+21d) |  |  | 2d → 44.5d |  | constraint none → finish no earlier than 2006-07-20 |
| 274 | Creation of Dev Distro | 2006-07-03 → 2006-07-24 (+21d) | 2006-07-03 → 2006-07-24 (+21d) |  |  | 2d → 44.5d |  |  |
| 275 | Development Posting | 2006-07-04 → 2006-07-25 (+21d) | 2006-07-11 → 2006-08-01 (+21d) |  |  | 2d → 44.5d |  |  |
| 276 | Development Review | 2006-07-12 → 2006-08-02 (+21d) | 2006-07-17 → 2006-08-07 (+21d) |  |  | 2d → 44.5d |  |  |
| 277 | Development Final Fixes | 2006-07-18 → 2006-08-08 (+21d) | 2006-07-19 → 2006-08-09 (+21d) |  |  | 2d → 44.5d |  |  |
| 278 | Post to Catalog | 2006-07-20 → 2006-08-10 (+21d) | 2006-07-20 → 2006-08-10 (+21d) |  |  | 2d → 44.5d |  |  |
| 279 | **Auto Screening Management (Custom)** | 2006-06-15 A | 2006-07-20 → 2006-07-26 (+6d) | 26d → 30d | 0% → 88% | 5d → 5.5d |  |  |
| 280 | Design Posting | 2006-06-15 A | 2006-06-22 A |  | 0% → 100% | 2d → none |  |  |
| 281 | Design Review | 2006-06-23 A | 2006-06-28 A |  | 0% → 100% | 2d → none |  |  |
| 282 | Design Final Fixes | 2006-06-29 A | 2006-06-30 A |  | 0% → 100% | 2d → none |  |  |
| 283 | Creation of Dev Distro | 2006-07-03 → 2006-07-06 A (+3d) | 2006-07-03 → 2006-07-06 A (+3d) |  | 0% → 100% | 2d → none |  |  |
| 284 | Development Posting | 2006-07-04 → 2006-07-07 A (+3d) | 2006-07-11 → 2006-07-14 A (+3d) |  | 0% → 100% | 2d → none |  | constraint start no earlier than 2005-03-30 → start no earlier than 2006-07-13 |
| 285 | Development Review | 2006-07-12 → 2006-07-17 A (+5d) | 2006-07-17 → 2006-07-20 A (+3d) |  | 0% → 100% | 2d → none |  |  |
| 286 | Development Final Fixes | 2006-07-18 → 2006-07-24 (+6d) | 2006-07-19 → 2006-07-25 (+6d) |  |  | 2d → 5.5d |  | constraint finish no earlier than 2005-04-06 → finish no earlier than 2006-07-25 |
| 287 | Post to Catalog | 2006-07-20 → 2006-07-26 (+6d) | 2006-07-20 → 2006-07-26 (+6d) |  |  | 2d → 5.5d |  |  |
| 288 | **Assembly Competitions** | 2006-06-26 → 2006-06-27 A (+1d) | 2006-08-24 → 2006-08-31 (+7d) | 44d → 47.5d | 0% → 5% |  |  |  |
| 289 | **Scorecard Admin Assembly** | 2006-06-26 → 2006-06-27 A (+1d) | 2006-08-11 → 2006-08-16 (+5d) | 35d → 37d | 0% → 15% | 9d → 10.5d |  |  |
| 290 | **Setup** | 2006-06-26 → 2006-06-27 A (+1d) | 2006-07-11 → 2006-07-18 A (+7d) | 12d → 16d | 0% → 100% | 16d → none |  |  |
| 291 | Divide Spec and Arch Deliverables | 2006-06-26 → 2006-06-27 A (+1d) | 2006-06-28 → 2006-06-29 A (+1d) |  | 0% → 100% | 41d → none |  |  |
| 292 | TopCoder Website Content Creation/Updates | 2006-06-28 → 2006-07-04 A (+6d) | 2006-06-30 → 2006-07-06 A (+6d) |  | 0% → 100% | 39d → none |  |  |
| 293 | TopCoder Website Informaiton Posted | 2006-07-05 → 2006-07-11 A (+6d) | 2006-07-05 → 2006-07-11 A (+6d) |  | 0% → 100% | 9d → none |  |  |
| 294 | Package Components | 2006-07-11 → 2006-07-18 A (+7d) | 2006-07-11 → 2006-07-18 A (+7d) |  | 0% → 100% | 11d → none |  |  |
| 295 | **Test Case Development** |  | 2006-07-14 → 2006-07-21 (+7d) | 7d → 12d |  | 29d → 28.5d |  |  |
| 296 | Submit tests |  | 2006-07-13 → 2006-07-20 (+7d) | 6d → 11d |  | 29d → 28.5d | 293 → none | constraint start no earlier than 2006-03-22 → finish no earlier than 2006-07-20 |
| 297 | Screen test cases | 2006-07-14 → 2006-07-21 (+7d) | 2006-07-14 → 2006-07-21 (+7d) |  |  | 29d → 28.5d |  |  |
| 298 | Team Formation | 2006-07-06 → 2006-07-14 (+8d) | 2006-07-13 → 2006-07-21 (+8d) |  |  | 9d → 28.5d |  | constraint start no earlier than 2006-07-03 → finish no earlier than 2006-07-21 |
| 299 | **Development** | 2006-07-14 → 2006-07-19 (+5d) | 2006-08-11 → 2006-08-16 (+5d) |  |  | 9d → 10.5d |  |  |
| 300 | **Opening Round** | 2006-07-14 → 2006-07-19 (+5d) | 2006-08-11 → 2006-08-16 (+5d) |  |  | 9d → 10.5d |  |  |
| 301 | **Team Development** | 2006-07-14 → 2006-07-19 (+5d) | 2006-07-24 → 2006-07-27 (+3d) |  |  | 9d → 10.5d |  |  |
| 302 | **Development of Use Cases** | 2006-07-14 → 2006-07-19 (+5d) | 2006-07-24 → 2006-07-27 (+3d) |  |  | 9d → 10.5d |  |  |
| 303 | Create Unit Tests | 2006-07-14 → 2006-07-19 (+5d) | 2006-07-19 → 2006-07-24 (+5d) |  |  | 9d → 11.5d | 294, 298 → 294 |  |
| 304 | Convert Prototype | 2006-07-14 → 2006-07-19 (+5d) | 2006-07-19 → 2006-07-24 (+5d) |  |  | 9d → 11.5d | 294, 298 → 294 |  |
| 305 | Configure components | 2006-07-14 → 2006-07-19 (+5d) | 2006-07-18 → 2006-07-21 (+3d) |  |  | 10d → 12.5d | 294, 298 → 294 |  |
| 306 | Test | 2006-07-20 → 2006-07-26 (+6d) | 2006-07-24 → 2006-07-27 (+3d) | 3d → 2d |  | 9d → 10.5d |  | constraint none → finish no earlier than 2006-07-27 |
| 307 | **Test case challenge** | 2006-07-25 → 2006-07-28 (+3d) | 2006-07-26 → 2006-07-31 (+5d) |  |  | 9d → 10.5d |  |  |
| 308 | Submit Challenges | 2006-07-25 → 2006-07-28 (+3d) | 2006-07-25 → 2006-07-28 (+3d) |  |  | 9d → 10.5d |  | constraint none → start no earlier than 2006-07-28 |
| 309 | Appeals response | 2006-07-26 → 2006-07-31 (+5d) | 2006-07-26 → 2006-07-31 (+5d) |  |  | 9d → 10.5d |  | resources Reviewer3; Reviewer2; Reviewer1; Assembly Manager; Architect → albertwang |
| 310 | **Review** | 2006-07-27 → 2006-07-31 (+4d) | 2006-08-11 → 2006-08-16 (+5d) | 12d → 13d |  | 9d → 10.5d |  |  |
| 311 | Score Testcases | 2006-07-27 → 2006-07-31 (+4d) | 2006-07-27 → 2006-07-31 (+4d) |  |  | 10d → 12.5d | 307 → 308 |  |
| 312 | Score Submissions | 2006-07-27 → 2006-08-01 (+5d) | 2006-07-28 → 2006-08-02 (+5d) |  |  | 9d → 10.5d |  |  |
| 313 | Review Code | 2006-07-31 → 2006-08-03 (+3d) | 2006-08-01 → 2006-08-04 (+3d) |  |  | 9d → 10.5d |  |  |
| 314 | Appeals | 2006-08-02 → 2006-08-07 (+5d) | 2006-08-02 → 2006-08-07 (+5d) |  |  | 9d → 10.5d |  |  |
| 315 | Appeals Response | 2006-08-03 → 2006-08-08 (+5d) | 2006-08-03 → 2006-08-08 (+5d) |  |  | 9d → 10.5d |  |  |
| 316 | Final Fixes | 2006-08-04 → 2006-08-09 (+5d) | 2006-08-08 → 2006-08-11 (+3d) |  |  | 9d → 10.5d |  |  |
| 317 | Final Review | 2006-08-09 → 2006-08-14 (+5d) | 2006-08-09 → 2006-08-14 (+5d) |  |  | 9d → 10.5d |  |  |
| 318 | Feedback | 2006-08-10 → 2006-08-15 (+5d) | 2006-08-11 → 2006-08-16 (+5d) |  |  | 9d → 10.5d |  |  |
| 319 | **Project Review Assembly** | 2006-07-07 → 2006-07-20 (+13d) | 2006-08-24 → 2006-08-31 (+7d) | 35d → 30.5d |  |  |  |  |
| 320 | **Setup** | 2006-07-07 → 2006-07-20 (+13d) | 2006-07-28 → 2006-08-04 (+7d) | 16d → 11.5d |  | 15d → 10.5d |  |  |
| 321 | Divide Spec and Arch Deliverables | 2006-07-07 → 2006-07-20 (+13d) | 2006-07-07 → 2006-07-20 (+13d) |  |  | 34d → 29.5d | 38FS-15d → 48FS-15d, 57FS-15d, 66FS-15d, 82FS-15d, 91FS-15d, 107FS-15d, 116FS-15d, 125FS-15d, 134FS-15d, 150FS-15d, 166FS-15d, 182FS-15d, 191FS-15d, 207FS-15d, 216FS-15d, 225FS-15d, 234FS-15d, 243FS-15d, 261FS-15d, 279FS-15d | constraint start no earlier than 2006-03-29 → start no earlier than 2006-07-20 |
| 322 | Topcoder Website Content Created/Updated | 2006-07-14 → 2006-07-20 (+6d) | 2006-07-20 → 2006-07-27 (+7d) |  |  |  | 38FS-10d → 48FS-10d, 57FS-10d, 66FS-10d, 82FS-10d, 91FS-10d, 107FS-10d, 116FS-10d, 125FS-10d, 134FS-10d, 150FS-10d, 166FS-10d, 182FS-10d, 191FS-10d, 207FS-10d, 216FS-10d, 225FS-10d, 234FS-10d, 243FS-10d, 252FS-10d, 261FS-10d, 279FS-10d | was named TopCoder Website Content Creation |
| 323 | TopCoder Website Informaiton Posted | 2006-07-21 → 2006-07-27 (+6d) | 2006-07-21 → 2006-07-28 (+7d) |  |  | 14d → 17d | 38FS-5d → 261FS-5d, 48FS-5d, 57FS-5d, 66FS-5d, 82FS-5d, 91FS-5d, 107FS-5d, 116FS-5d, 125FS-5d, 134FS-5d, 150FS-5d, 166FS-5d, 182FS-5d, 191FS-5d, 207FS-5d, 216FS-5d, 225FS-5d, 234FS-5d, 243FS-5d, 252FS-5d, 279FS-5d |  |

| ID | Task | Start | Finish | Duration | Total float | Predecessors | Other |
| --- | --- | --- | --- | --- | --- | --- | --- |
| 324 | Package Components | 2006-07-28 → 2006-08-03 (+6d) | 2006-07-28 → 2006-08-04 (+7d) |  |  | 38 → 261, 279, 48, 57, 66, 82, 91, 107, 116, 125, 134, 150, 166, 182, 191, 207, 216, 225, 234, 243, 252 |  |
| 325 | **Test Case Development** | 2006-07-24 → 2006-07-28 (+4d) | 2006-08-01 → 2006-08-08 (+7d) |  |  |  |  |
| 326 | Submit tests | 2006-07-24 → 2006-07-28 (+4d) | 2006-07-31 → 2006-08-07 (+7d) |  |  |  |  |
| 327 | Screen test cases | 2006-08-01 → 2006-08-07 (+6d) | 2006-08-01 → 2006-08-08 (+7d) |  |  |  |  |
| 328 | Team Formation | 2006-07-24 → 2006-07-28 (+4d) |  | 10d → 5d | 14d → 19d |  |  |
| 329 | **Development** | 2006-07-31 → 2006-08-04 (+4d) | 2006-08-24 → 2006-08-31 (+7d) |  |  |  |  |
| 330 | **Opening Round** | 2006-07-31 → 2006-08-04 (+4d) | 2006-08-24 → 2006-08-31 (+7d) |  |  |  |  |
| 331 | **Team Development** | 2006-07-31 → 2006-08-04 (+4d) | 2006-08-08 → 2006-08-15 (+7d) |  |  |  |  |
| 332 | **Development of Use Cases** | 2006-07-31 → 2006-08-04 (+4d) | 2006-08-08 → 2006-08-15 (+7d) |  |  |  |  |
| 333 | Create Unit Tests | 2006-07-31 → 2006-08-04 (+4d) | 2006-08-03 → 2006-08-10 (+7d) |  |  |  |  |
| 334 | Convert Prototype | 2006-07-31 → 2006-08-04 (+4d) | 2006-08-03 → 2006-08-10 (+7d) |  |  |  |  |
| 335 | Configure components | 2006-07-31 → 2006-08-04 (+4d) | 2006-08-03 → 2006-08-10 (+7d) |  |  |  |  |
| 336 | Test | 2006-08-04 → 2006-08-10 (+6d) | 2006-08-08 → 2006-08-15 (+7d) |  |  |  |  |
| 337 | **Test case challenge** | 2006-08-09 → 2006-08-15 (+6d) | 2006-08-10 → 2006-08-17 (+7d) |  |  |  |  |
| 338 | Submit Challenges | 2006-08-09 → 2006-08-15 (+6d) | 2006-08-09 → 2006-08-16 (+7d) |  |  |  |  |
| 339 | Appeals response | 2006-08-10 → 2006-08-16 (+6d) | 2006-08-10 → 2006-08-17 (+7d) |  |  |  |  |
| 340 | **Review** | 2006-08-11 → 2006-08-17 (+6d) | 2006-08-24 → 2006-08-31 (+7d) |  |  |  |  |
| 341 | Score Testcases | 2006-08-11 → 2006-08-17 (+6d) | 2006-08-11 → 2006-08-18 (+7d) |  |  |  |  |
| 342 | Score Submissions | 2006-08-11 → 2006-08-17 (+6d) | 2006-08-14 → 2006-08-21 (+7d) |  |  |  |  |
| 343 | Review Code | 2006-08-15 → 2006-08-21 (+6d) | 2006-08-16 → 2006-08-23 (+7d) |  |  |  |  |
| 344 | Appeals | 2006-08-17 → 2006-08-23 (+6d) | 2006-08-17 → 2006-08-24 (+7d) |  |  |  |  |
| 345 | Appeals Response | 2006-08-18 → 2006-08-24 (+6d) | 2006-08-18 → 2006-08-25 (+7d) |  |  |  |  |
| 346 | Final Fixes | 2006-08-21 → 2006-08-25 (+4d) | 2006-08-23 → 2006-08-30 (+7d) |  |  |  |  |
| 347 | Final Review | 2006-08-24 → 2006-08-30 (+6d) | 2006-08-24 → 2006-08-31 (+7d) |  |  |  |  |
| 348 | **Project Admin and Details Assembly** | 2006-07-07 → 2006-07-20 (+13d) | 2006-08-24 → 2006-08-31 (+7d) | 35d → 30.5d |  |  |  |
| 349 | **Setup** | 2006-07-07 → 2006-07-20 (+13d) | 2006-07-28 → 2006-08-04 (+7d) | 16d → 11.5d | 15d → 10.5d |  |  |
| 350 | Divide Spec and Arch Deliverables | 2006-07-07 → 2006-07-20 (+13d) | 2006-07-07 → 2006-07-20 (+13d) |  | 34d → 29.5d | 38FS-15d → 48FS-15d, 57FS-15d, 150FS-15d, 166FS-15d, 182FS-15d, 191FS-15d, 207FS-15d, 216FS-15d, 225FS-15d, 234FS-15d, 243FS-15d, 252FS-15d, 279FS-15d, 66FS-15d, 82FS-15d, 91FS-15d, 107FS-15d, 116FS-15d, 125FS-15d, 134FS-15d | constraint start no earlier than 2006-03-29 → start no earlier than 2006-07-20 |
| 351 | TopCoder Website Content Creation | 2006-07-14 → 2006-07-20 (+6d) | 2006-07-20 → 2006-07-27 (+7d) |  |  | 38FS-10d → 261FS-10d, 279FS-10d, 48FS-10d, 57FS-10d, 66FS-10d, 82FS-10d, 91FS-10d, 107FS-10d, 116FS-10d, 125FS-10d, 134FS-10d, 150FS-10d, 166FS-10d, 182FS-10d, 191FS-10d, 207FS-10d, 216FS-10d, 225FS-10d, 234FS-10d, 243FS-10d, 252FS-10d |  |
| 352 | TopCoder Website Informaiton Posted | 2006-07-21 → 2006-07-27 (+6d) | 2006-07-21 → 2006-07-28 (+7d) |  | 14d → 19d | 38FS-5d → 261FS-5d, 279FS-5d, 48FS-5d, 57FS-5d, 66FS-5d, 82FS-5d, 91FS-5d, 107FS-5d, 116FS-5d, 125FS-5d, 134FS-5d, 150FS-5d, 166FS-5d, 182FS-5d, 191FS-5d, 207FS-5d, 216FS-5d, 225FS-5d, 234FS-5d, 243FS-5d, 252FS-5d |  |
| 353 | Package Components | 2006-07-28 → 2006-08-03 (+6d) | 2006-07-28 → 2006-08-04 (+7d) |  |  | 38 → 261, 279, 48, 57, 66, 82, 91, 107, 116, 125, 134, 150, 166, 182, 191, 207, 216, 225, 234, 243, 252 |  |
| 354 | **Test Case Development** | 2006-07-24 → 2006-07-25 (+1d) | 2006-08-01 → 2006-08-07 (+6d) | 7d → 10d | 17d → 17.5d |  |  |
| 355 | Submit tests | 2006-07-24 → 2006-07-25 (+1d) | 2006-07-31 → 2006-08-04 (+4d) | 6d → 9d | 17d → 17.5d | 352 → none | constraint start no earlier than 2006-03-22 → finish no earlier than 2006-08-04 |
| 356 | Screen test cases | 2006-08-01 → 2006-08-07 (+6d) | 2006-08-01 → 2006-08-07 (+6d) |  | 17d → 17.5d |  |  |
| 357 | Team Formation | 2006-07-24 → 2006-07-28 (+4d) |  | 10d → 5d | 14d → 19d |  |  |
| 358 | **Development** | 2006-07-31 → 2006-08-04 (+4d) | 2006-08-24 → 2006-08-31 (+7d) |  |  |  |  |
| 359 | **Opening Round** | 2006-07-31 → 2006-08-04 (+4d) | 2006-08-24 → 2006-08-31 (+7d) |  |  |  |  |
| 360 | **Team Development** | 2006-07-31 → 2006-08-04 (+4d) | 2006-08-08 → 2006-08-15 (+7d) |  |  |  |  |
| 361 | **Development of Use Cases** | 2006-07-31 → 2006-08-04 (+4d) | 2006-08-08 → 2006-08-15 (+7d) |  |  |  |  |
| 362 | Create Unit Tests | 2006-07-31 → 2006-08-04 (+4d) | 2006-08-03 → 2006-08-10 (+7d) |  |  |  |  |
| 363 | Convert Prototype | 2006-07-31 → 2006-08-04 (+4d) | 2006-08-03 → 2006-08-10 (+7d) |  |  |  |  |
| 364 | Configure components | 2006-07-31 → 2006-08-04 (+4d) | 2006-08-03 → 2006-08-10 (+7d) |  |  |  |  |
| 365 | Test | 2006-08-04 → 2006-08-10 (+6d) | 2006-08-08 → 2006-08-15 (+7d) |  |  |  |  |
| 366 | **Test case challenge** | 2006-08-09 → 2006-08-15 (+6d) | 2006-08-10 → 2006-08-17 (+7d) |  |  |  |  |
| 367 | Submit Challenges | 2006-08-09 → 2006-08-15 (+6d) | 2006-08-09 → 2006-08-16 (+7d) |  |  |  |  |
| 368 | Appeals response | 2006-08-10 → 2006-08-16 (+6d) | 2006-08-10 → 2006-08-17 (+7d) |  |  |  |  |
| 369 | **Review** | 2006-08-11 → 2006-08-17 (+6d) | 2006-08-24 → 2006-08-31 (+7d) |  |  |  |  |
| 370 | Score Testcases | 2006-08-11 → 2006-08-17 (+6d) | 2006-08-11 → 2006-08-18 (+7d) |  |  |  |  |
| 371 | Score Submissions | 2006-08-11 → 2006-08-17 (+6d) | 2006-08-14 → 2006-08-21 (+7d) |  |  |  |  |
| 372 | Review Code | 2006-08-15 → 2006-08-21 (+6d) | 2006-08-16 → 2006-08-23 (+7d) |  |  |  |  |
| 373 | Appeals | 2006-08-17 → 2006-08-23 (+6d) | 2006-08-17 → 2006-08-24 (+7d) |  |  |  |  |
| 374 | Appeals Response | 2006-08-18 → 2006-08-24 (+6d) | 2006-08-18 → 2006-08-25 (+7d) |  |  |  |  |
| 375 | Final Fixes | 2006-08-21 → 2006-08-25 (+4d) | 2006-08-23 → 2006-08-30 (+7d) |  |  |  |  |
| 376 | Final Review | 2006-08-24 → 2006-08-30 (+6d) | 2006-08-24 → 2006-08-31 (+7d) |  |  |  |  |
| 392 | **Testing Iteration** | 2006-09-18 → 2006-08-28 (-21d) | 2006-09-21 → 2006-09-01 (-20d) |  | 10d → 28d |  |  |
| 393 | Test Plan Execution | 2006-09-18 → 2006-08-28 (-21d) | 2006-09-21 → 2006-08-30 (-22d) | 4d → 2d | 10d → 28d | 405 → 391 |  |
| 398 | **Deployment to QA** | 2006-08-25 → 2006-08-31 (+6d) | 2006-09-14 → 2006-09-21 (+7d) |  | 10d → 14d |  |  |
| 399 | Merge code and deploy to QA | 2006-08-25 → 2006-08-31 (+6d) | 2006-08-30 → 2006-09-07 (+8d) |  | 10d → 14d |  |  |
| 400 | **Testing Iteration** | 2006-08-31 → 2006-09-07 (+7d) | 2006-09-14 → 2006-09-21 (+7d) |  | 10d → 14d |  |  |
| 401 | Test Plan Execution | 2006-08-31 → 2006-09-07 (+7d) | 2006-09-06 → 2006-09-13 (+7d) |  | 10d → 14d |  |  |
| 402 | User Acceptance Testing | 2006-09-07 → 2006-09-13 (+6d) | 2006-09-13 → 2006-09-20 (+7d) |  | 10d → 14d |  |  |
| 403 | PM Certification | 2006-09-14 → 2006-09-20 (+6d) | 2006-09-14 → 2006-09-21 (+7d) |  | 10d → 14d |  |  |
| 404 | **Deployment to Production** | 2006-09-15 → 2006-09-21 (+6d) | 2006-09-21 → 2006-09-22 (+1d) | 5d → 1d | 10d → 14d |  |  |
| 405 | Deployment | 2006-09-15 → 2006-09-21 (+6d) | 2006-09-15 → 2006-09-22 (+7d) |  | 10d → 14d |  |  |
| 406 | **Support** | 2006-08-25 → 2006-08-31 (+6d) | 2006-10-06 → 2006-10-13 (+7d) |  |  |  |  |
| 407 | Capture DRs | 2006-08-25 → 2006-08-31 (+6d) | 2006-09-15 → 2006-09-22 (+7d) |  |  |  |  |
| 408 | Release Fix | 2006-09-18 → 2006-09-22 (+4d) | 2006-10-06 → 2006-10-13 (+7d) |  |  |  |  |
| 409 | Send out how-to info to users |  | 2006-09-22 → 2006-09-25 (+3d) |  | 10d → 14d |  |  |
| 410 | Beta Release to internal users |  | 2006-09-22 → 2006-09-25 (+3d) |  | 10d → 14d |  |  |

## Version 12 (saved 2006-07-26)

Note of the change: updated project plan

Last finish stays 2006-10-13.

Changed:

| ID | Task | Start | Finish | Duration | Total float | Other |
| --- | --- | --- | --- | --- | --- | --- |
| 327 | Screen test cases | 2006-08-07 → 2006-08-08 (+1d) |  | 1d → 0.5d |  | constraint none → start no earlier than 2006-08-08 |
| 354 | **Test Case Development** | 2006-07-25 → 2006-07-28 (+3d) | 2006-08-07 → 2006-08-08 (+1d) | 10d → 8d | 17.5d → 16.5d |  |
| 355 | Submit tests | 2006-07-25 → 2006-07-28 (+3d) | 2006-08-04 → 2006-08-07 (+3d) | 9d → 7d | 17.5d → 16.5d | constraint finish no earlier than 2006-08-04 → start no earlier than 2006-07-28 |
| 356 | Screen test cases | 2006-08-07 → 2006-08-08 (+1d) | 2006-08-07 → 2006-08-08 (+1d) |  | 17.5d → 16.5d |  |

## Version 13 (saved 2006-08-01)

Note of the change: uupdated

Last finish 2006-10-13 → 2006-10-19 (+6d). Complete tasks 182 → 185.

Added:

| ID | Task | Duration | Start | Finish | Predecessors | Constraint | Resources |
| --- | --- | --- | --- | --- | --- | --- | --- |
| 288 | Online Review Change Request #1 | 1d? | 2006-08-10 | 2006-08-10 | 252 |  | Winning Developer |
| 289 | Change Request #2 | 1d? | 2004-01-27 | 2004-01-27 |  |  |  |
| 380 | Update Warehouse Load Script | 2d | 2006-07-31 | 2006-08-01 |  | start no earlier than 2006-07-31 | brain_cn |
| 381 | Create List of Deprecated Tables in TCS_CATALOG | 1d? | 2006-08-02 | 2006-08-02 | 380 |  |  |
| 382 | Create Drop and Alter Tables Script for TCS_CATALOG | 1d? | 2006-08-03 | 2006-08-03 | 381 |  |  |
| 384 | Integrate Events to populate project_results table | 2d | 2006-08-11 | 2006-08-14 | 383 |  | brain_cn |

Changed:

| ID | Task | Start | Finish | Duration | Complete | Total float | Predecessors | Other |
| --- | --- | --- | --- | --- | --- | --- | --- | --- |
| 1 | **TopCoder Online Review/Scorecard Project** | 2005-06-29 A → 2004-01-27 A (-519d) | 2006-10-13 → 2006-10-19 (+6d) | 336.5d? → 712d? |  |  |  |  |
| 252 | **Online Review Phases (custom)** |  | 2006-08-03 → 2006-08-09 (+6d) | 35.5d → 40d | 62% → 61% |  |  |  |
| 260 | Post to Catalog | 2006-08-03 → 2006-08-09 (+6d) | 2006-08-03 → 2006-08-09 (+6d) | 0.5d → 1d |  |  |  | constraint none → finish no earlier than 2006-08-09 |
| 290 | **Assembly Competitions** |  | 2006-08-31 → 2006-09-07 (+7d) | 47.5d → 52d | 5% → 14% |  |  |  |
| 291 | **Scorecard Admin Assembly** |  | 2006-08-16 → 2006-08-22 (+6d) | 37d → 41d | 15% → 37% | 10.5d → 11d |  |  |
| 297 | **Test Case Development** | 2006-07-06 A | 2006-07-21 A |  | 0% → 100% | 28.5d → none |  |  |
| 298 | Submit tests | 2006-07-06 A | 2006-07-20 A |  | 0% → 100% | 28.5d → none |  |  |
| 299 | Screen test cases | 2006-07-21 A | 2006-07-21 A |  | 0% → 100% | 28.5d → none |  | resources none → albertwang (winner) |
| 301 | **Development** | 2006-07-19 → 2006-07-26 (+7d) | 2006-08-16 → 2006-08-22 (+6d) | 21d → 20d |  | 10.5d → 11d |  |  |
| 302 | **Opening Round** | 2006-07-19 → 2006-07-26 (+7d) | 2006-08-16 → 2006-08-22 (+6d) | 21d → 20d |  | 10.5d → 11d |  |  |
| 303 | **Team Development** | 2006-07-19 → 2006-07-26 (+7d) | 2006-07-27 → 2006-08-02 (+6d) | 7d → 6d |  | 10.5d → 11d |  |  |
| 304 | **Development of Use Cases** | 2006-07-19 → 2006-07-26 (+7d) | 2006-07-27 → 2006-08-02 (+6d) | 7d → 6d |  | 10.5d → 11d |  |  |
| 305 | Create Unit Tests | 2006-07-19 → 2006-07-26 (+7d) | 2006-07-24 → 2006-07-31 (+7d) |  |  | 11.5d → 11d |  | constraint start no earlier than 2006-03-28 → finish no earlier than 2006-07-31 |
| 306 | Convert Prototype | 2006-07-19 → 2006-07-26 (+7d) | 2006-07-24 → 2006-07-31 (+7d) |  |  | 11.5d → 11d |  | constraint start no earlier than 2006-03-29 → finish no earlier than 2006-07-31 |
| 307 | Configure components | 2006-07-19 → 2006-07-27 (+8d) | 2006-07-21 → 2006-07-31 (+10d) |  |  | 12.5d → 11d |  | constraint start no earlier than 2006-03-29 → finish no earlier than 2006-07-31 |
| 308 | Test | 2006-07-26 → 2006-08-01 (+6d) | 2006-07-27 → 2006-08-02 (+6d) |  |  | 10.5d → 11d |  |  |
| 309 | **Test case challenge** | 2006-07-28 → 2006-08-03 (+6d) | 2006-07-31 → 2006-08-04 (+4d) |  |  | 10.5d → 11d |  |  |
| 310 | Submit Challenges | 2006-07-28 → 2006-08-03 (+6d) | 2006-07-28 → 2006-08-03 (+6d) |  |  | 10.5d → 11d |  |  |
| 311 | Appeals response | 2006-07-31 → 2006-08-04 (+4d) | 2006-07-31 → 2006-08-04 (+4d) |  |  | 10.5d → 11d |  |  |
| 312 | **Review** | 2006-07-31 → 2006-08-04 (+4d) | 2006-08-16 → 2006-08-22 (+6d) |  |  | 10.5d → 11d |  |  |
| 313 | Score Testcases | 2006-07-31 → 2006-08-04 (+4d) | 2006-07-31 → 2006-08-04 (+4d) |  |  | 12.5d → 13d |  |  |
| 314 | Score Submissions | 2006-08-01 → 2006-08-07 (+6d) | 2006-08-02 → 2006-08-08 (+6d) |  |  | 10.5d → 11d |  |  |
| 315 | Review Code | 2006-08-03 → 2006-08-09 (+6d) | 2006-08-04 → 2006-08-10 (+6d) |  |  | 10.5d → 11d |  |  |
| 316 | Appeals | 2006-08-07 → 2006-08-11 (+4d) | 2006-08-07 → 2006-08-11 (+4d) |  |  | 10.5d → 11d |  |  |
| 317 | Appeals Response | 2006-08-08 → 2006-08-14 (+6d) | 2006-08-08 → 2006-08-14 (+6d) |  |  | 10.5d → 11d |  |  |
| 318 | Final Fixes | 2006-08-09 → 2006-08-15 (+6d) | 2006-08-11 → 2006-08-17 (+6d) |  |  | 10.5d → 11d |  |  |
| 319 | Final Review | 2006-08-14 → 2006-08-18 (+4d) | 2006-08-14 → 2006-08-18 (+4d) |  |  | 10.5d → 11d |  |  |
| 320 | Feedback | 2006-08-15 → 2006-08-21 (+6d) | 2006-08-16 → 2006-08-22 (+6d) |  |  | 10.5d → 11d |  |  |
| 321 | **Project Review Assembly** | 2006-07-20 A | 2006-08-31 → 2006-09-07 (+7d) | 30.5d → 35d | 0% → 2% |  |  |  |
| 322 | **Setup** | 2006-07-20 A | 2006-08-04 → 2006-08-10 (+6d) | 11.5d → 16d | 0% → 13% | 10.5d → 19d |  |  |
| 323 | Divide Spec and Arch Deliverables | 2006-07-20 A | 2006-07-20 A |  | 0% → 100% | 29.5d → none |  |  |
| 324 | Topcoder Website Content Created/Updated | 2006-07-20 → 2006-07-27 (+7d) | 2006-07-27 → 2006-08-02 (+6d) |  |  |  |  |  |
| 325 | TopCoder Website Informaiton Posted | 2006-07-27 → 2006-08-03 (+7d) | 2006-07-28 → 2006-08-03 (+6d) |  |  | 17.5d → 19d |  |  |
| 326 | Package Components | 2006-08-03 → 2006-08-10 (+7d) | 2006-08-04 → 2006-08-10 (+6d) |  |  |  |  |  |
| 327 | **Test Case Development** | 2006-07-28 → 2006-07-27 (-1d) |  | 7d → 8.5d |  | 17d → 21.5d |  |  |
| 328 | Submit tests | 2006-07-28 → 2006-07-27 (-1d) |  | 6d → 8d |  | 17.5d → 21.5d | 325 → none | constraint start no earlier than 2006-03-22 → finish no earlier than 2006-08-07 |
| 330 | Team Formation | 2006-07-28 → 2006-08-03 (+6d) | 2006-08-04 → 2006-08-10 (+6d) | 5d → 6d |  |  | 325 → 325FS-1d |  |
| 331 | **Development** | 2006-08-04 → 2006-08-11 (+7d) | 2006-08-31 → 2006-09-07 (+7d) |  |  |  |  |  |
| 332 | **Opening Round** | 2006-08-04 → 2006-08-11 (+7d) | 2006-08-31 → 2006-09-07 (+7d) |  |  |  |  |  |
| 333 | **Team Development** | 2006-08-04 → 2006-08-11 (+7d) | 2006-08-15 → 2006-08-21 (+6d) |  |  |  |  |  |
| 334 | **Development of Use Cases** | 2006-08-04 → 2006-08-11 (+7d) | 2006-08-15 → 2006-08-21 (+6d) |  |  |  |  |  |
| 335 | Create Unit Tests | 2006-08-04 → 2006-08-11 (+7d) | 2006-08-10 → 2006-08-16 (+6d) |  |  |  |  |  |
| 336 | Convert Prototype | 2006-08-04 → 2006-08-11 (+7d) | 2006-08-10 → 2006-08-16 (+6d) |  |  |  |  |  |
| 337 | Configure components | 2006-08-04 → 2006-08-11 (+7d) | 2006-08-10 → 2006-08-16 (+6d) |  |  |  |  |  |
| 338 | Test | 2006-08-10 → 2006-08-17 (+7d) | 2006-08-15 → 2006-08-21 (+6d) |  |  |  |  |  |
| 339 | **Test case challenge** | 2006-08-15 → 2006-08-22 (+7d) | 2006-08-17 → 2006-08-23 (+6d) |  |  |  |  |  |
| 340 | Submit Challenges | 2006-08-15 → 2006-08-22 (+7d) | 2006-08-16 → 2006-08-22 (+6d) |  |  |  |  |  |
| 341 | Appeals response | 2006-08-16 → 2006-08-23 (+7d) | 2006-08-17 → 2006-08-23 (+6d) |  |  |  |  |  |
| 342 | **Review** | 2006-08-17 → 2006-08-24 (+7d) | 2006-08-31 → 2006-09-07 (+7d) |  |  |  |  |  |
| 343 | Score Testcases | 2006-08-17 → 2006-08-24 (+7d) | 2006-08-18 → 2006-08-24 (+6d) |  |  |  |  |  |
| 344 | Score Submissions | 2006-08-17 → 2006-08-24 (+7d) | 2006-08-21 → 2006-08-25 (+4d) |  |  |  |  |  |
| 345 | Review Code | 2006-08-21 → 2006-08-28 (+7d) | 2006-08-23 → 2006-08-29 (+6d) |  |  |  |  |  |
| 346 | Appeals | 2006-08-23 → 2006-08-30 (+7d) | 2006-08-24 → 2006-08-30 (+6d) |  |  |  |  |  |
| 347 | Appeals Response | 2006-08-24 → 2006-08-31 (+7d) | 2006-08-25 → 2006-08-31 (+6d) |  |  |  |  |  |
| 348 | Final Fixes | 2006-08-25 → 2006-09-01 (+7d) | 2006-08-30 → 2006-09-06 (+7d) |  |  |  |  |  |
| 349 | Final Review | 2006-08-30 → 2006-09-07 (+8d) | 2006-08-31 → 2006-09-07 (+7d) |  |  |  |  |  |
| 350 | **Project Admin and Details Assembly** |  | 2006-08-31 → 2006-09-07 (+7d) | 30.5d → 35d |  |  |  |  |
| 351 | **Setup** |  | 2006-08-04 → 2006-08-10 (+6d) | 11.5d → 16d |  | 10.5d → 15d |  |  |
| 353 | TopCoder Website Content Creation | 2006-07-20 → 2006-07-27 (+7d) | 2006-07-27 → 2006-08-02 (+6d) |  |  |  |  |  |
| 354 | TopCoder Website Informaiton Posted | 2006-07-27 → 2006-08-03 (+7d) | 2006-07-28 → 2006-08-03 (+6d) |  |  |  |  |  |
| 355 | Package Components | 2006-08-03 → 2006-08-10 (+7d) | 2006-08-04 → 2006-08-10 (+6d) |  |  |  |  |  |
| 359 | Team Formation | 2006-07-28 → 2006-08-04 (+7d) | 2006-08-04 → 2006-08-10 (+6d) |  |  |  |  |  |
| 360 | **Development** | 2006-08-04 → 2006-08-11 (+7d) | 2006-08-31 → 2006-09-07 (+7d) |  |  |  |  |  |
| 361 | **Opening Round** | 2006-08-04 → 2006-08-11 (+7d) | 2006-08-31 → 2006-09-07 (+7d) |  |  |  |  |  |
| 362 | **Team Development** | 2006-08-04 → 2006-08-11 (+7d) | 2006-08-15 → 2006-08-21 (+6d) |  |  |  |  |  |
| 363 | **Development of Use Cases** | 2006-08-04 → 2006-08-11 (+7d) | 2006-08-15 → 2006-08-21 (+6d) |  |  |  |  |  |
| 364 | Create Unit Tests | 2006-08-04 → 2006-08-11 (+7d) | 2006-08-10 → 2006-08-16 (+6d) |  |  |  |  |  |
| 365 | Convert Prototype | 2006-08-04 → 2006-08-11 (+7d) | 2006-08-10 → 2006-08-16 (+6d) |  |  |  |  |  |
| 366 | Configure components | 2006-08-04 → 2006-08-11 (+7d) | 2006-08-10 → 2006-08-16 (+6d) |  |  |  |  |  |
| 367 | Test | 2006-08-10 → 2006-08-17 (+7d) | 2006-08-15 → 2006-08-21 (+6d) |  |  |  |  |  |

| ID | Task | Start | Finish | Duration | Total float | Predecessors | Other |
| --- | --- | --- | --- | --- | --- | --- | --- |
| 368 | **Test case challenge** | 2006-08-15 → 2006-08-22 (+7d) | 2006-08-17 → 2006-08-23 (+6d) |  |  |  |  |
| 369 | Submit Challenges | 2006-08-15 → 2006-08-22 (+7d) | 2006-08-16 → 2006-08-22 (+6d) |  |  |  |  |
| 370 | Appeals response | 2006-08-16 → 2006-08-23 (+7d) | 2006-08-17 → 2006-08-23 (+6d) |  |  |  |  |
| 371 | **Review** | 2006-08-17 → 2006-08-24 (+7d) | 2006-08-31 → 2006-09-07 (+7d) |  |  |  |  |
| 372 | Score Testcases | 2006-08-17 → 2006-08-24 (+7d) | 2006-08-18 → 2006-08-24 (+6d) |  |  |  |  |
| 373 | Score Submissions | 2006-08-17 → 2006-08-24 (+7d) | 2006-08-21 → 2006-08-25 (+4d) |  |  |  |  |
| 374 | Review Code | 2006-08-21 → 2006-08-28 (+7d) | 2006-08-23 → 2006-08-29 (+6d) |  |  |  |  |
| 375 | Appeals | 2006-08-23 → 2006-08-30 (+7d) | 2006-08-24 → 2006-08-30 (+6d) |  |  |  |  |
| 376 | Appeals Response | 2006-08-24 → 2006-08-31 (+7d) | 2006-08-25 → 2006-08-31 (+6d) |  |  |  |  |
| 377 | Final Fixes | 2006-08-25 → 2006-09-01 (+7d) | 2006-08-30 → 2006-09-06 (+7d) |  |  |  |  |
| 378 | Final Review | 2006-08-30 → 2006-09-07 (+8d) | 2006-08-31 → 2006-09-07 (+7d) |  |  |  |  |
| 379 | **Migration Assembly** | 2006-07-27 → 2006-07-31 (+4d) |  | 27.5d → 26d? | 28d → 32d |  |  |
| 383 | Create Conversion Scripts (from old OR Tables to New) | 2006-08-11 → 2006-08-04 (-7d) | 2006-08-16 → 2006-08-10 (-6d) | 3d → 5d | 28d → 32d | 363FS-2d, 334FS-2d → 382 | was named Create Conversion Scripts; resources none → brain_cn |
| 385 | **Update Content Pages** | 2006-08-16 → 2006-08-15 (-1d) | 2006-08-17 → 2006-08-23 (+6d) | 1d → 7d | 28d → 32d | 383 → none |  |
| 386 | Update Active Contest Page | 2006-08-16 → 2006-08-15 (-1d) | 2006-08-17 → 2006-08-15 (-2d) |  | 28d → 32d | none → 384 | resources none → brain_cn |
| 387 | Update Contest Status Page |  | 2006-08-17 → 2006-08-16 (-1d) |  | 28d → 32d | none → 386 | resources none → brain_cn |
| 388 | Display Scorecards | 2006-08-16 → 2006-08-17 (+1d) |  |  | 28d → 32d | none → 387 | resources none → brain_cn |
| 389 | Send Component Project Information | 2006-08-16 → 2006-08-18 (+2d) | 2006-08-17 → 2006-08-18 (+1d) |  | 28d → 32d | none → 388 | resources none → brain_cn |
| 390 | Send Competitor Registration | 2006-08-16 → 2006-08-21 (+5d) | 2006-08-17 → 2006-08-21 (+4d) |  | 28d → 32d | none → 389 | resources none → brain_cn |
| 391 | Send Reviewer Registration | 2006-08-16 → 2006-08-22 (+6d) | 2006-08-17 → 2006-08-22 (+5d) |  | 28d → 32d | none → 390 | resources none → brain_cn |
| 392 | Send Data to Warehouse | 2006-08-16 → 2006-08-23 (+7d) | 2006-08-17 → 2006-08-23 (+6d) |  | 28d → 32d | none → 391 | resources none → brain_cn |
| 393 | Test Case Development | 2006-07-27 → 2006-08-24 (+28d) | 2006-08-02 → 2006-08-30 (+28d) |  | 49.5d → 34d | none → 392 | resources none → brain_cn |
| 394 | Test Case Review | 2006-08-03 → 2006-08-31 (+28d) | 2006-08-03 → 2006-08-31 (+28d) |  | 49.5d → 34d |  |  |
| 395 | Integration with On-Site Plasma Scoreboard | 2006-08-17 → 2006-08-24 (+7d) | 2006-08-24 → 2006-08-25 (+1d) | 5d → 2d | 28d → 32d |  |  |
| 396 | **Certification** | 2006-08-24 → 2006-08-28 (+4d) |  | 7d → 6d | 28d → 32d |  |  |
| 397 | Deployment To TopCoder QA | 2006-08-24 → 2006-08-28 (+4d) | 2006-08-28 → 2006-08-29 (+1d) |  | 28d → 32d |  | resources none → brain_cn; Dan Ulery |
| 398 | **Testing Iteration** | 2006-08-28 → 2006-08-30 (+2d) |  | 4d → 3d | 28d → 32d |  |  |
| 399 | Test Plan Execution | 2006-08-28 → 2006-08-30 (+2d) |  | 2d → 1d | 28d → 32d |  | resources none → Dan Ulery; brain_cn |
| 400 | Application Bu Fixes, Implemeted | 2006-08-30 → 2006-08-31 (+1d) |  |  | 28d → 32d |  | resources none → brain_cn |
| 401 | Project Manager Certification | 2006-09-01 → 2006-09-05 (+4d) |  |  | 28d → 32d |  | resources none → lorienorman |
| 402 | **Deployment** |  | 2006-09-22 → 2006-09-28 (+6d) | 43.5d → 48d |  |  |  |
| 404 | **Deployment to QA** | 2006-08-31 → 2006-09-08 (+8d) | 2006-09-21 → 2006-09-27 (+6d) |  |  |  |  |
| 405 | Merge code and deploy to QA | 2006-08-31 → 2006-09-08 (+8d) | 2006-09-07 → 2006-09-13 (+6d) |  |  |  |  |
| 406 | **Testing Iteration** | 2006-09-07 → 2006-09-14 (+7d) | 2006-09-21 → 2006-09-27 (+6d) |  |  |  |  |
| 407 | Test Plan Execution | 2006-09-07 → 2006-09-14 (+7d) | 2006-09-13 → 2006-09-19 (+6d) |  |  |  |  |
| 408 | User Acceptance Testing | 2006-09-13 → 2006-09-20 (+7d) | 2006-09-20 → 2006-09-26 (+6d) |  |  |  |  |
| 409 | PM Certification | 2006-09-20 → 2006-09-27 (+7d) | 2006-09-21 → 2006-09-27 (+6d) |  |  |  |  |
| 410 | **Deployment to Production** | 2006-09-21 → 2006-09-28 (+7d) | 2006-09-22 → 2006-09-28 (+6d) |  |  |  |  |
| 411 | Deployment | 2006-09-21 → 2006-09-28 (+7d) | 2006-09-22 → 2006-09-28 (+6d) |  |  |  |  |
| 412 | **Support** | 2006-08-31 → 2006-09-08 (+8d) | 2006-10-13 → 2006-10-19 (+6d) |  |  |  |  |
| 413 | Capture DRs | 2006-08-31 → 2006-09-08 (+8d) | 2006-09-22 → 2006-09-28 (+6d) |  |  |  |  |
| 414 | Release Fix | 2006-09-22 → 2006-09-29 (+7d) | 2006-10-13 → 2006-10-19 (+6d) |  |  |  |  |
| 415 | Send out how-to info to users | 2006-09-22 → 2006-09-29 (+7d) | 2006-09-25 → 2006-09-29 (+4d) |  |  |  |  |
| 416 | Beta Release to internal users | 2006-09-22 → 2006-09-29 (+7d) | 2006-09-25 → 2006-09-29 (+4d) |  |  |  |  |

## Version 14 (saved 2006-08-21)

Last finish stays 2006-10-19. Complete tasks 185 → 191.

Changed:

| ID | Task | Start | Finish | Duration | Complete | Total float | Predecessors | Other |
| --- | --- | --- | --- | --- | --- | --- | --- | --- |
| 1 | **TopCoder Online Review/Scorecard Project** |  |  |  | 65% → 66% |  |  |  |
| 290 | **Assembly Competitions** |  |  |  | 14% → 21% |  |  |  |
| 291 | **Scorecard Admin Assembly** |  | 2006-08-22 → 2006-08-25 (+3d) | 41d → 44d | 37% → 61% | 11d → 8d |  |  |
| 301 | **Development** | 2006-07-26 A | 2006-08-22 → 2006-08-25 (+3d) | 20d → 23d | 0% → 46% | 11d → 8d |  |  |
| 302 | **Opening Round** | 2006-07-26 A | 2006-08-22 → 2006-08-25 (+3d) | 20d → 23d | 0% → 46% | 11d → 8d |  |  |
| 303 | **Team Development** | 2006-07-26 A | 2006-08-02 → 2006-08-07 A (+5d) | 6d → 9d | 0% → 100% | 11d → none |  |  |
| 304 | **Development of Use Cases** | 2006-07-26 A | 2006-08-02 → 2006-08-07 A (+5d) | 6d → 9d | 0% → 100% | 11d → none |  |  |
| 305 | Create Unit Tests | 2006-07-26 A | 2006-07-31 A |  | 0% → 100% | 11d → none |  |  |
| 306 | Convert Prototype | 2006-07-26 A | 2006-07-31 A |  | 0% → 100% | 11d → none |  |  |
| 307 | Configure components | 2006-07-27 A | 2006-07-31 A |  | 0% → 100% | 11d → none |  |  |
| 308 | Test | 2006-08-01 → 2006-08-04 A (+3d) | 2006-08-02 → 2006-08-07 A (+5d) |  | 0% → 100% | 11d → none |  | constraint finish no earlier than 2006-07-27 → finish no earlier than 2006-08-07 |
| 309 | **Test case challenge** | 2006-08-03 → 2006-08-08 (+5d) | 2006-08-04 → 2006-08-09 (+5d) |  |  | 11d → 8d |  |  |
| 310 | Submit Challenges | 2006-08-03 → 2006-08-08 (+5d) | 2006-08-03 → 2006-08-08 (+5d) |  |  | 11d → 8d |  |  |
| 311 | Appeals response | 2006-08-04 → 2006-08-09 (+5d) | 2006-08-04 → 2006-08-09 (+5d) |  |  | 11d → 8d |  |  |
| 312 | **Review** | 2006-08-04 → 2006-08-09 (+5d) | 2006-08-22 → 2006-08-25 (+3d) |  |  | 11d → 8d |  |  |
| 313 | Score Testcases | 2006-08-04 → 2006-08-09 (+5d) | 2006-08-04 → 2006-08-09 (+5d) |  |  | 13d → 10d |  |  |
| 314 | Score Submissions | 2006-08-07 → 2006-08-10 (+3d) | 2006-08-08 → 2006-08-11 (+3d) |  |  | 11d → 8d |  |  |
| 315 | Review Code | 2006-08-09 → 2006-08-14 (+5d) | 2006-08-10 → 2006-08-15 (+5d) |  |  | 11d → 8d |  |  |
| 316 | Appeals | 2006-08-11 → 2006-08-16 (+5d) | 2006-08-11 → 2006-08-16 (+5d) |  |  | 11d → 8d |  |  |
| 317 | Appeals Response | 2006-08-14 → 2006-08-17 (+3d) | 2006-08-14 → 2006-08-17 (+3d) |  |  | 11d → 8d |  |  |
| 318 | Final Fixes | 2006-08-15 → 2006-08-18 (+3d) | 2006-08-17 → 2006-08-22 (+5d) |  |  | 11d → 8d |  |  |
| 319 | Final Review | 2006-08-18 → 2006-08-23 (+5d) | 2006-08-18 → 2006-08-23 (+5d) |  |  | 11d → 8d |  |  |
| 320 | Feedback | 2006-08-21 → 2006-08-24 (+3d) | 2006-08-22 → 2006-08-25 (+3d) |  |  | 11d → 8d |  |  |
| 362 | **Team Development** |  | 2006-08-21 → 2006-08-25 (+4d) | 7d → 11d |  | 0d → 8d |  |  |
| 363 | **Development of Use Cases** |  | 2006-08-21 → 2006-08-25 (+4d) | 7d → 11d |  | 0d → 8d |  |  |
| 367 | Test |  | 2006-08-21 → 2006-08-25 (+4d) | 3d → 7d |  | 0d → 8d |  |  |
| 368 | **Test case challenge** | 2006-08-22 → 2006-08-25 (+3d) | 2006-08-23 → 2006-08-28 (+5d) |  |  | 0d → 7d | 367 → none |  |
| 369 | Submit Challenges | 2006-08-22 → 2006-08-25 (+3d) | 2006-08-22 → 2006-08-25 (+3d) |  |  | 0d → 7d |  | constraint none → start no earlier than 2006-08-25 |
| 370 | Appeals response | 2006-08-23 → 2006-08-28 (+5d) | 2006-08-23 → 2006-08-28 (+5d) |  |  | 0d → 7d |  |  |
| 371 | **Review** | 2006-08-24 → 2006-08-25 (+1d) |  | 10d → 9d |  |  |  |  |
| 372 | Score Testcases | 2006-08-24 → 2006-08-25 (+1d) | 2006-08-24 → 2006-08-25 (+1d) |  |  | 1d → 8d | 368 → none | constraint none → start no earlier than 2006-08-25 |
| 373 | Score Submissions | 2006-08-24 → 2006-08-25 (+1d) | 2006-08-25 → 2006-08-28 (+3d) |  |  | 0d → 7d | 368 → none | constraint none → start no earlier than 2006-08-25 |
| 374 | Review Code | 2006-08-28 → 2006-08-25 (-3d) |  | 2d → 3d |  |  | 372, 373 → none | constraint none → start no earlier than 2006-08-25 |
| 379 | **Migration Assembly** | 2006-07-31 A |  |  | 0% → 6% |  |  |  |
| 381 | Create List of Deprecated Tables in TCS_CATALOG | 2006-08-02 A | 2006-08-02 A |  | 0% → 100% | 32d → none |  |  |
| 382 | Create Drop and Alter Tables Script for TCS_CATALOG | 2006-08-03 A | 2006-08-03 A |  | 0% → 100% | 32d → none |  |  |
| 402 | **Deployment** |  | 2006-09-28 → 2006-09-25 (-3d) | 48d → 45d |  | 15d → 18d |  |  |
| 404 | **Deployment to QA** | 2006-09-08 → 2006-09-01 (-7d) | 2006-09-27 → 2006-09-22 (-5d) | 14d → 15d |  | 14d → 17d |  |  |
| 405 | Merge code and deploy to QA | 2006-09-08 → 2006-09-01 (-7d) | 2006-09-13 → 2006-09-08 (-5d) | 4d → 5d |  | 14d → 17d | 290 → 376 |  |
| 406 | **Testing Iteration** | 2006-09-14 → 2006-09-11 (-3d) | 2006-09-27 → 2006-09-22 (-5d) |  |  | 14d → 17d |  |  |
| 407 | Test Plan Execution | 2006-09-14 → 2006-09-11 (-3d) | 2006-09-19 → 2006-09-14 (-5d) |  |  | 14d → 17d |  |  |
| 408 | User Acceptance Testing | 2006-09-20 → 2006-09-15 (-5d) | 2006-09-26 → 2006-09-21 (-5d) |  |  | 14d → 17d |  |  |
| 409 | PM Certification | 2006-09-27 → 2006-09-22 (-5d) | 2006-09-27 → 2006-09-22 (-5d) |  |  | 14d → 17d |  |  |
| 410 | **Deployment to Production** | 2006-09-28 → 2006-09-25 (-3d) | 2006-09-28 → 2006-09-25 (-3d) |  |  | 14d → 17d |  |  |
| 411 | Deployment | 2006-09-28 → 2006-09-25 (-3d) | 2006-09-28 → 2006-09-25 (-3d) |  |  | 14d → 17d |  |  |
| 415 | Send out how-to info to users | 2006-09-29 → 2006-09-26 (-3d) | 2006-09-29 → 2006-09-26 (-3d) |  |  | 14d → 17d |  |  |
| 416 | Beta Release to internal users | 2006-09-29 → 2006-09-26 (-3d) | 2006-09-29 → 2006-09-26 (-3d) |  |  | 14d → 17d |  |  |
