# TopCoder Software Project Plan

How a schedule from MS Project changed from version to version. A marks actual dates.

## Version 1 (saved 2006-03-08)

Note of the change: updated project plan to include assembly competition setup, updated UML to include state diagram

| ID | WBS | Task | Duration | Start | Finish | Predecessors | Complete | Total float | Constraint |
| --- | --- | --- | --- | --- | --- | --- | --- | --- | --- |
| 1 | 1 | **TopCoder Online Review/Scorecard Project** | 289.5d? | 2005-06-29 A | 2006-08-08 |  | 3% | 0d |  |
| 2 |  | Kick Off Meeting | 0.33d? | 2006-03-02 | 2006-03-02 |  |  | 13.67d | start no earlier than 2006-03-02 |
| 3 |  | Creation of TopCoder Application Forum | 1d | 2006-03-02 A | 2006-03-03 A | 2 | 100% |  | start no earlier than 2005-06-29 |
| 4 |  | Assign Client Permissions to Forums | 1d | 2006-03-02 A | 2006-03-02 A |  | 100% |  | start no earlier than 2005-06-29 |
| 5 |  | Create SVN module for Application | 1d | 2005-06-29 A | 2005-06-29 A |  | 100% |  | start no earlier than 2005-06-29 |
| 6 |  | Key Stakeholder Meetings | 1.5d | 2006-03-06 | 2006-03-07 |  |  | 10.5d | start no earlier than 2006-03-06 |
| 7 | 1.6 | **Application Specification** | 19.5d? | 2006-03-02 A | 2006-03-29 |  | 13% | 0d |  |
| 8 | 1.6.1 | **Requirement Specification Draft** | 1d | 2006-03-03 A | 2006-03-03 A |  | 100% |  |  |
| 9 |  | Fill in Scope | 1d | 2006-03-03 A | 2006-03-03 A |  | 100% |  | start no earlier than 2006-03-03 |
| 10 |  | Review Meeting | 0.5d | 2006-03-06 A | 2006-03-06 A | 8 | 100% |  |  |
| 11 |  | Create/Update Use Cases | 2d | 2006-03-02 A | 2006-03-03 A |  | 100% |  | start no earlier than 2006-03-02 |
| 12 | 1.6.4 | **Module Specification** | 6d? | 2006-03-06 | 2006-03-14 |  |  | 0d |  |
| 13 |  | Create/Update Activity Diagram | 3d | 2006-03-06 | 2006-03-09 | 10 |  | 0d | finish no earlier than 2005-01-14 |
| 14 |  | Fill in Logic Requirements for use cases and activity diagrams | 2d | 2006-03-09 | 2006-03-13 | 13 |  | 0d |  |
| 15 |  | Review Meeting | 1d? | 2006-03-13 | 2006-03-14 | 14 |  | 0d | start no earlier than 2006-03-10 |
| 16 |  | Create Site Map | 1d? | 2006-03-14 | 2006-03-15 | 15 |  | 0d |  |
| 17 |  | Review Meeting | 0.5d | 2006-03-15 | 2006-03-15 | 16 |  | 0d |  |
| 18 |  | Create Site Definition | 2d | 2006-03-15 | 2006-03-16 | 17FS-1d |  | 3.5d |  |
| 19 |  | Prototype Revision 1 | 5d | 2006-03-17 | 2006-03-23 | 18 |  | 3.5d |  |
| 20 |  | Architecture Diagram Draft | 2d | 2006-03-16 | 2006-03-17 | 17 |  | 0d | start no earlier than 2005-01-19 |
| 21 |  | Fill in Technical Requirements | 1d? | 2006-03-20 | 2006-03-20 | 20 |  | 0d |  |
| 22 |  | Review Meeting | 0.5d | 2006-03-21 | 2006-03-21 | 13, 21 |  | 0d |  |
| 23 |  | Prototype Revision 2 Review | 0.5d | 2006-03-21 | 2006-03-21 | 22 |  | 0d |  |
| 24 |  | Complete QA Plan | 2d | 2006-03-22 | 2006-03-23 | 23 |  | 0d |  |
| 25 |  | Review Meeting | 0.5d | 2006-03-24 | 2006-03-24 | 24 |  | 0d |  |
| 26 |  | Update Final Specification Deliverables | 2d | 2006-03-24 | 2006-03-28 | 25 |  | 0d |  |
| 27 |  | Final Specification Presentation | 1d? | 2006-03-28 | 2006-03-29 | 26 |  | 0d |  |
| 28 | 1.7 | **Application Architecture** | 19d | 2006-03-29 | 2006-04-25 |  |  | 0d |  |
| 29 | 1.7.1 | **UML Diagrams** | 14d | 2006-03-29 | 2006-04-18 | 7 |  | 0d |  |
| 30 |  | Update Site Map and Site Definition | 3d | 2006-03-29 | 2006-04-03 | 7 |  | 0d |  |
| 31 |  | Component Sequence Diagrams | 5d | 2006-04-03 | 2006-04-10 | 30 |  | 0d | finish no earlier than 2005-02-04 |
| 32 |  | Component Interface Diagram | 5d | 2006-04-10 | 2006-04-17 | 31 |  | 0d | finish no earlier than 2005-02-04 |
| 33 |  | Component Diagram | 1d | 2006-04-17 | 2006-04-18 | 32 |  | 0d |  |
| 34 |  | Physical Data Model Definition | 3d | 2006-04-18 | 2006-04-21 | 29 |  | 0.5d | finish no earlier than 2005-02-04 |
| 35 |  | PM Review | 1d | 2006-04-21 | 2006-04-24 | 29, 34 |  | 0.5d |  |
| 36 |  | Application Architecture Presentation | 0.5d | 2006-04-24 | 2006-04-24 | 35 |  | 0.5d |  |
| 37 |  | Component Specifications | 5d | 2006-04-18 | 2006-04-25 | 29 |  | 0d | finish no earlier than 2005-02-11 |
| 38 |  | Application Design Specification | 3d | 2006-04-18 | 2006-04-21 | 29 |  | 2d |  |
| 39 | 1.8 | **Component Production** | 26d | 2006-04-25 | 2006-05-31 |  |  | 0d |  |
| 40 |  | Design Posting | 6d | 2006-04-25 | 2006-05-03 | 28 |  | 0d | start no earlier than 2005-03-09 |
| 41 |  | Design Review | 4d | 2006-05-03 | 2006-05-09 | 40 |  | 0d | finish no earlier than 2005-03-21 |
| 42 |  | Design Final Fixes | 2d | 2006-05-09 | 2006-05-11 | 41 |  | 0d |  |
| 43 |  | Creation of Dev Distro | 1d | 2006-05-11 | 2006-05-12 | 42 |  | 0d |  |
| 44 |  | Development Posting | 6d | 2006-05-12 | 2006-05-22 | 43 |  | 0d | start no earlier than 2005-03-30 |
| 45 |  | Development Review | 4d | 2006-05-22 | 2006-05-26 | 44 |  | 0d |  |
| 46 |  | Development Final Fixes | 2d | 2006-05-26 | 2006-05-30 | 45 |  | 0d | finish no earlier than 2005-04-06 |
| 47 |  | Post to Catalog | 1d | 2006-05-30 | 2006-05-31 | 46 |  | 0d |  |
| 48 | 1.9 | **Assembly Competitions** | 34d | 2006-05-10 | 2006-06-27 |  |  | 0d |  |
| 49 | 1.9.1 | **Setup** | 16d | 2006-05-10 | 2006-06-01 |  |  | 10d |  |
| 50 |  | Divide Use Cases for Competitions | 1d | 2006-05-10 | 2006-05-11 | 39FS-15d |  | 33d | start no earlier than 2006-03-29 |
| 51 |  | TopCoder Website Informaiton Posted | 1d | 2006-05-17 | 2006-05-18 | 39FS-10d |  | 5d | start no earlier than 2006-05-17 |
| 52 |  | Package Components | 1d | 2006-05-31 | 2006-06-01 | 47 |  | 0d |  |
| 53 | 1.9.2 | **Test Case Development** | 5d | 2006-05-18 | 2006-05-25 |  |  | 5d |  |
| 54 |  | Submit tests | 4d | 2006-05-18 | 2006-05-24 | 51 |  | 5d | start no earlier than 2006-03-22 |
| 55 |  | Screen test cases | 1d | 2006-05-24 | 2006-05-25 | 54 |  | 5d |  |
| 56 |  | Team Formation | 10d | 2006-05-18 | 2006-06-01 | 51 |  | 18d |  |
| 57 | 1.9.4 | **Development** | 18d | 2006-06-01 | 2006-06-27 |  |  | 0d |  |
| 58 | 1.9.4.1 | **Opening Round** | 18d | 2006-06-01 | 2006-06-27 |  |  | 0d |  |
| 59 | 1.9.4.1.1 | **Team Development** | 6d | 2006-06-01 | 2006-06-09 |  |  | 0d |  |
| 60 | 1.9.4.1.1.1 | **Development of Use Cases** | 6d | 2006-06-01 | 2006-06-09 |  |  | 0d |  |
| 61 |  | Create Unit Tests | 3d | 2006-06-01 | 2006-06-06 | 52, 53 |  | 0d | start no earlier than 2006-03-28 |
| 62 |  | Convert Prototype | 3d | 2006-06-01 | 2006-06-06 | 52, 53 |  | 0d | start no earlier than 2006-03-29 |
| 63 |  | Configure components | 3d | 2006-06-01 | 2006-06-06 | 52, 53 |  | 0d | start no earlier than 2006-03-29 |
| 64 |  | Test | 3d | 2006-06-06 | 2006-06-09 | 61, 62, 63 |  | 0d |  |
| 65 | 1.9.4.1.2 | **Test case challenge** | 2d | 2006-06-09 | 2006-06-13 | 64 |  | 0d |  |
| 66 |  | Submit Challenges | 1d | 2006-06-09 | 2006-06-12 |  |  | 0d |  |
| 67 |  | Appeals response | 1d | 2006-06-12 | 2006-06-13 | 66 |  | 0d |  |
| 68 | 1.9.4.1.3 | **Review** | 10d | 2006-06-13 | 2006-06-27 |  |  | 0d |  |
| 69 |  | Score Testcases | 1d | 2006-06-13 | 2006-06-14 | 65 |  | 1d |  |
| 70 |  | Score Submissions | 2d | 2006-06-13 | 2006-06-15 | 65 |  | 0d |  |

| ID | WBS | Task | Duration | Start | Finish | Predecessors | Total float | Constraint |
| --- | --- | --- | --- | --- | --- | --- | --- | --- |
| 71 |  | Review Code | 2d | 2006-06-15 | 2006-06-19 | 69, 70 | 0d |  |
| 72 |  | Appeals | 1d | 2006-06-19 | 2006-06-20 | 71 | 0d |  |
| 73 |  | Appeals Response | 1d | 2006-06-20 | 2006-06-21 | 72 | 0d |  |
| 74 |  | Final Fixes | 3d | 2006-06-21 | 2006-06-26 | 73 | 0d |  |
| 75 |  | Final Review/PM Certification | 1d | 2006-06-26 | 2006-06-27 | 74 | 0d |  |
| 76 | 1.9.4.2 | **Round Two** | 18d | 2006-06-01 | 2006-06-27 |  | 0d |  |
| 77 | 1.9.4.2.1 | **Team Development** | 6d | 2006-06-01 | 2006-06-09 |  | 0d |  |
| 78 | 1.9.4.2.1.1 | **Development of Use Cases** | 6d | 2006-06-01 | 2006-06-09 |  | 0d |  |
| 79 |  | Create Unit Tests | 3d | 2006-06-01 | 2006-06-06 | 52, 53 | 0d | start no earlier than 2006-03-29 |
| 80 |  | Convert Prototype | 3d | 2006-06-01 | 2006-06-06 | 52, 53 | 0d | start no earlier than 2006-03-29 |
| 81 |  | Configure components | 3d | 2006-06-01 | 2006-06-06 | 52, 53 | 0d | start no earlier than 2006-03-28 |
| 82 |  | Test | 3d | 2006-06-06 | 2006-06-09 | 79, 80, 81 | 0d |  |
| 83 | 1.9.4.2.2 | **Test case challenge** | 2d | 2006-06-09 | 2006-06-13 | 82 | 0d |  |
| 84 |  | Submit Challenges | 1d | 2006-06-09 | 2006-06-12 |  | 0d |  |
| 85 |  | Appeals response | 1d | 2006-06-12 | 2006-06-13 | 84 | 0d |  |
| 86 | 1.9.4.2.3 | **Review** | 10d | 2006-06-13 | 2006-06-27 |  | 0d |  |
| 87 |  | Score Testcases | 1d | 2006-06-13 | 2006-06-14 | 83 | 1d |  |
| 88 |  | Score Submissions | 2d | 2006-06-13 | 2006-06-15 | 83 | 0d |  |
| 89 |  | Review Code | 2d | 2006-06-15 | 2006-06-19 | 87, 88 | 0d |  |
| 90 |  | Appeals | 1d | 2006-06-19 | 2006-06-20 | 89 | 0d |  |
| 91 |  | Appeals Response | 1d | 2006-06-20 | 2006-06-21 | 90 | 0d |  |
| 92 |  | Final Fixes | 3d | 2006-06-21 | 2006-06-26 | 91 | 0d |  |
| 93 |  | Final Review/ PM Certification | 1d | 2006-06-26 | 2006-06-27 | 92 | 0d |  |
| 94 | 1.10 | **Deployment** | 5d | 2006-06-27 | 2006-07-04 |  | 15d |  |
| 95 |  | Deployment to Customer QA | 5d | 2006-06-27 | 2006-07-04 | 48 | 15d | finish no earlier than 2005-05-27 |
| 96 | 1.11 | **Testing Iteration** | 10d? | 2006-07-04 | 2006-07-18 |  | 15d |  |
| 97 |  | Test Plan Execution | 5d? | 2006-07-04 | 2006-07-11 | 95 | 15d | finish no earlier than 2005-06-03 |
| 98 |  | User Acceptance Testing | 5d? | 2006-07-11 | 2006-07-18 | 97 | 15d | finish no earlier than 2005-06-03 |
| 99 | 1.12 | **Support** | 30d | 2006-06-27 | 2006-08-08 |  | 0d |  |
| 100 |  | Capture DRs | 15d | 2006-06-27 | 2006-07-18 | 48 | 0d |  |
| 101 |  | Release Fix | 15d | 2006-07-18 | 2006-08-08 | 100 | 0d |  |

## Version 2 (saved 2006-04-10)

Last finish 2006-08-08 → 2006-08-28 (+20d). Complete tasks 6 → 11.

Changed:

| ID | Task | Start | Finish | Duration | Complete | Total float | Predecessors | Other |
| --- | --- | --- | --- | --- | --- | --- | --- | --- |
| 1 | **TopCoder Online Review/Scorecard Project** |  | 2006-08-08 → 2006-08-28 (+20d) | 289.5d? → 303.5d? | 3% → 12% |  |  |  |
| 6 | Key Stakeholder Meetings | 2006-03-06 A | 2006-03-07 A |  | 0% → 100% | 10.5d → none |  |  |
| 7 | **Application Specification** |  | 2006-03-29 → 2006-04-18 (+20d) | 19.5d? → 33.5d? | 13% → 48% |  |  |  |
| 12 | **Module Specification** | 2006-03-06 → 2006-03-09 A (+3d) | 2006-03-14 → 2006-04-04 (+21d) | 6d? → 18.5d | 0% → 94% | 0d → 1.5d |  |  |
| 13 | Create/Update Activity Diagram | 2006-03-06 → 2006-03-15 A (+9d) | 2006-03-09 → 2006-03-28 A (+19d) | 3d → 10d | 0% → 100% | 0d → none |  | constraint finish no earlier than 2005-01-14 → finish no earlier than 2006-03-28 |
| 14 | Fill in Logic Requirements for use cases and activity diagrams | 2006-03-09 A | 2006-03-13 → 2006-04-03 A (+21d) | 2d → 5d | 0% → 100% | 0d → none |  |  |
| 15 | Review Meeting | 2006-03-13 → 2006-04-04 (+22d) | 2006-03-14 → 2006-04-04 (+21d) | 1d? → 1d |  | 0d → 1.5d |  |  |
| 16 | Create Site Map | 2006-03-14 → 2006-04-04 A (+21d) | 2006-03-15 → 2006-04-04 A (+20d) |  | 0% → 100% | 0d → none | 15 → none | constraint none → start no earlier than 2006-04-04 |
| 17 | Review Meeting | 2006-03-15 → 2006-04-03 (+19d) | 2006-03-15 → 2006-04-03 (+19d) |  |  | 0d → 5.5d | 16 → none | constraint none → start no earlier than 2006-04-03 |
| 18 | Create Site Definition | 2006-03-15 → 2006-04-04 (+20d) | 2006-03-16 → 2006-04-04 (+19d) | 2d → 1d |  | 3.5d → 4d | 17FS-1d → none | constraint none → start no earlier than 2006-04-04 |
| 19 | Prototype Revision 1 | 2006-03-17 → 2006-03-20 A (+3d) | 2006-03-23 → 2006-04-06 (+14d) | 5d → 14d | 0% → 11% | 3.5d → 0d | 18 → none | constraint none → finish no earlier than 2006-04-06 |
| 20 | Architecture Diagram Draft | 2006-03-16 → 2006-03-22 A (+6d) | 2006-03-17 → 2006-03-23 A (+6d) | 2d → 1d | 0% → 100% | 0d → none |  |  |
| 21 | Fill in Technical Requirements | 2006-03-20 → 2006-04-04 (+15d) | 2006-03-20 → 2006-04-04 (+15d) | 1d? → 0.5d |  | 0d → 2d |  | constraint none → start no earlier than 2006-04-04 |
| 22 | Review Meeting | 2006-03-21 → 2006-04-07 (+17d) | 2006-03-21 → 2006-04-10 (+20d) | 0.5d → 2d |  |  | 13, 21 → 19 | constraint none → start no earlier than 2006-04-07 |
| 23 | Prototype Revision 2 Review | 2006-03-21 → 2006-04-11 (+21d) | 2006-03-21 → 2006-04-12 (+22d) | 0.5d → 2d |  |  |  | constraint none → start no earlier than 2006-04-11 |
| 24 | Complete QA Plan | 2006-03-22 → 2006-04-05 (+14d) | 2006-03-23 → 2006-04-05 (+13d) | 2d → 1d |  | 0d → 8.5d | 23 → 12 |  |
| 25 | Review Meeting | 2006-03-24 → 2006-04-13 (+20d) | 2006-03-24 → 2006-04-13 (+20d) |  |  |  | 24 → 23 |  |
| 26 | Update Final Specification Deliverables | 2006-03-24 → 2006-04-13 (+20d) | 2006-03-28 → 2006-04-17 (+20d) |  |  |  |  | constraint none → start no earlier than 2006-04-06 |
| 27 | Final Specification Presentation | 2006-03-28 → 2006-04-17 (+20d) | 2006-03-29 → 2006-04-18 (+20d) |  |  |  |  |  |
| 28 | **Application Architecture** | 2006-03-29 → 2006-04-18 (+20d) | 2006-04-25 → 2006-05-15 (+20d) |  |  |  |  |  |
| 29 | **UML Diagrams** | 2006-03-29 → 2006-04-18 (+20d) | 2006-04-18 → 2006-05-08 (+20d) |  |  |  |  |  |
| 30 | Update Site Map and Site Definition | 2006-03-29 → 2006-04-18 (+20d) | 2006-04-03 → 2006-04-21 (+18d) |  |  |  |  |  |
| 31 | Component Sequence Diagrams | 2006-04-03 → 2006-04-21 (+18d) | 2006-04-10 → 2006-04-28 (+18d) |  |  |  |  |  |
| 32 | Component Interface Diagram | 2006-04-10 → 2006-04-28 (+18d) | 2006-04-17 → 2006-05-05 (+18d) |  |  |  |  |  |
| 33 | Component Diagram | 2006-04-17 → 2006-05-05 (+18d) | 2006-04-18 → 2006-05-08 (+20d) |  |  |  |  |  |
| 34 | Physical Data Model Definition | 2006-04-18 → 2006-05-08 (+20d) | 2006-04-21 → 2006-05-11 (+20d) |  |  |  |  |  |
| 35 | PM Review | 2006-04-21 → 2006-05-11 (+20d) | 2006-04-24 → 2006-05-12 (+18d) |  |  |  |  |  |
| 36 | Application Architecture Presentation | 2006-04-24 → 2006-05-12 (+18d) | 2006-04-24 → 2006-05-12 (+18d) |  |  |  |  |  |
| 37 | Component Specifications | 2006-04-18 → 2006-05-08 (+20d) | 2006-04-25 → 2006-05-15 (+20d) |  |  |  |  |  |
| 38 | Application Design Specification | 2006-04-18 → 2006-05-08 (+20d) | 2006-04-21 → 2006-05-11 (+20d) |  |  |  |  |  |
| 39 | **Component Production** | 2006-04-25 → 2006-05-15 (+20d) | 2006-05-31 → 2006-06-20 (+20d) |  |  |  |  |  |
| 40 | Design Posting | 2006-04-25 → 2006-05-15 (+20d) | 2006-05-03 → 2006-05-23 (+20d) |  |  |  |  |  |
| 41 | Design Review | 2006-05-03 → 2006-05-23 (+20d) | 2006-05-09 → 2006-05-29 (+20d) |  |  |  |  |  |
| 42 | Design Final Fixes | 2006-05-09 → 2006-05-29 (+20d) | 2006-05-11 → 2006-05-31 (+20d) |  |  |  |  |  |
| 43 | Creation of Dev Distro | 2006-05-11 → 2006-05-31 (+20d) | 2006-05-12 → 2006-06-01 (+20d) |  |  |  |  |  |
| 44 | Development Posting | 2006-05-12 → 2006-06-01 (+20d) | 2006-05-22 → 2006-06-09 (+18d) |  |  |  |  |  |
| 45 | Development Review | 2006-05-22 → 2006-06-09 (+18d) | 2006-05-26 → 2006-06-15 (+20d) |  |  |  |  |  |
| 46 | Development Final Fixes | 2006-05-26 → 2006-06-15 (+20d) | 2006-05-30 → 2006-06-19 (+20d) |  |  |  |  |  |
| 47 | Post to Catalog | 2006-05-30 → 2006-06-19 (+20d) | 2006-05-31 → 2006-06-20 (+20d) |  |  |  |  |  |
| 48 | **Assembly Competitions** | 2006-05-10 → 2006-05-30 (+20d) | 2006-06-27 → 2006-07-17 (+20d) |  |  |  |  |  |
| 49 | **Setup** | 2006-05-10 → 2006-05-30 (+20d) | 2006-06-01 → 2006-06-21 (+20d) |  |  |  |  |  |
| 50 | Divide Use Cases for Competitions | 2006-05-10 → 2006-05-30 (+20d) | 2006-05-11 → 2006-05-31 (+20d) |  |  |  |  |  |
| 51 | TopCoder Website Informaiton Posted | 2006-05-17 → 2006-06-06 (+20d) | 2006-05-18 → 2006-06-07 (+20d) |  |  |  |  |  |
| 52 | Package Components | 2006-05-31 → 2006-06-20 (+20d) | 2006-06-01 → 2006-06-21 (+20d) |  |  |  |  |  |
| 53 | **Test Case Development** | 2006-05-18 → 2006-06-07 (+20d) | 2006-05-25 → 2006-06-14 (+20d) |  |  |  |  |  |
| 54 | Submit tests | 2006-05-18 → 2006-06-07 (+20d) | 2006-05-24 → 2006-06-13 (+20d) |  |  |  |  |  |
| 55 | Screen test cases | 2006-05-24 → 2006-06-13 (+20d) | 2006-05-25 → 2006-06-14 (+20d) |  |  |  |  |  |
| 56 | Team Formation | 2006-05-18 → 2006-06-07 (+20d) | 2006-06-01 → 2006-06-21 (+20d) |  |  |  |  |  |
| 57 | **Development** | 2006-06-01 → 2006-06-21 (+20d) | 2006-06-27 → 2006-07-17 (+20d) |  |  |  |  |  |
| 58 | **Opening Round** | 2006-06-01 → 2006-06-21 (+20d) | 2006-06-27 → 2006-07-17 (+20d) |  |  |  |  |  |
| 59 | **Team Development** | 2006-06-01 → 2006-06-21 (+20d) | 2006-06-09 → 2006-06-29 (+20d) |  |  |  |  |  |
| 60 | **Development of Use Cases** | 2006-06-01 → 2006-06-21 (+20d) | 2006-06-09 → 2006-06-29 (+20d) |  |  |  |  |  |
| 61 | Create Unit Tests | 2006-06-01 → 2006-06-21 (+20d) | 2006-06-06 → 2006-06-26 (+20d) |  |  |  | 52, 53 → 52, 53, 47 |  |
| 62 | Convert Prototype | 2006-06-01 → 2006-06-21 (+20d) | 2006-06-06 → 2006-06-26 (+20d) |  |  |  |  |  |
| 63 | Configure components | 2006-06-01 → 2006-06-21 (+20d) | 2006-06-06 → 2006-06-26 (+20d) |  |  |  |  |  |
| 64 | Test | 2006-06-06 → 2006-06-26 (+20d) | 2006-06-09 → 2006-06-29 (+20d) |  |  |  |  |  |
| 65 | **Test case challenge** | 2006-06-09 → 2006-06-29 (+20d) | 2006-06-13 → 2006-07-03 (+20d) |  |  |  |  |  |
| 66 | Submit Challenges | 2006-06-09 → 2006-06-29 (+20d) | 2006-06-12 → 2006-06-30 (+18d) |  |  |  |  |  |
| 67 | Appeals response | 2006-06-12 → 2006-06-30 (+18d) | 2006-06-13 → 2006-07-03 (+20d) |  |  |  |  |  |
| 68 | **Review** | 2006-06-13 → 2006-07-03 (+20d) | 2006-06-27 → 2006-07-17 (+20d) |  |  |  |  |  |
| 69 | Score Testcases | 2006-06-13 → 2006-07-03 (+20d) | 2006-06-14 → 2006-07-04 (+20d) |  |  |  |  |  |
| 70 | Score Submissions | 2006-06-13 → 2006-07-03 (+20d) | 2006-06-15 → 2006-07-05 (+20d) |  |  |  |  |  |
| 71 | Review Code | 2006-06-15 → 2006-07-05 (+20d) | 2006-06-19 → 2006-07-07 (+18d) |  |  |  |  |  |
| 72 | Appeals | 2006-06-19 → 2006-07-07 (+18d) | 2006-06-20 → 2006-07-10 (+20d) |  |  |  |  |  |
| 73 | Appeals Response | 2006-06-20 → 2006-07-10 (+20d) | 2006-06-21 → 2006-07-11 (+20d) |  |  |  |  |  |
| 74 | Final Fixes | 2006-06-21 → 2006-07-11 (+20d) | 2006-06-26 → 2006-07-14 (+18d) |  |  |  |  |  |
| 75 | Final Review/PM Certification | 2006-06-26 → 2006-07-14 (+18d) | 2006-06-27 → 2006-07-17 (+20d) |  |  |  |  |  |
| 76 | **Round Two** | 2006-06-01 → 2006-06-21 (+20d) | 2006-06-27 → 2006-07-17 (+20d) |  |  |  |  |  |
| 77 | **Team Development** | 2006-06-01 → 2006-06-21 (+20d) | 2006-06-09 → 2006-06-29 (+20d) |  |  |  |  |  |
| 78 | **Development of Use Cases** | 2006-06-01 → 2006-06-21 (+20d) | 2006-06-09 → 2006-06-29 (+20d) |  |  |  |  |  |

| ID | Task | Start | Finish | Duration |
| --- | --- | --- | --- | --- |
| 79 | Create Unit Tests | 2006-06-01 → 2006-06-21 (+20d) | 2006-06-06 → 2006-06-26 (+20d) |  |
| 80 | Convert Prototype | 2006-06-01 → 2006-06-21 (+20d) | 2006-06-06 → 2006-06-26 (+20d) |  |
| 81 | Configure components | 2006-06-01 → 2006-06-21 (+20d) | 2006-06-06 → 2006-06-26 (+20d) |  |
| 82 | Test | 2006-06-06 → 2006-06-26 (+20d) | 2006-06-09 → 2006-06-29 (+20d) |  |
| 83 | **Test case challenge** | 2006-06-09 → 2006-06-29 (+20d) | 2006-06-13 → 2006-07-03 (+20d) |  |
| 84 | Submit Challenges | 2006-06-09 → 2006-06-29 (+20d) | 2006-06-12 → 2006-06-30 (+18d) |  |
| 85 | Appeals response | 2006-06-12 → 2006-06-30 (+18d) | 2006-06-13 → 2006-07-03 (+20d) |  |
| 86 | **Review** | 2006-06-13 → 2006-07-03 (+20d) | 2006-06-27 → 2006-07-17 (+20d) |  |
| 87 | Score Testcases | 2006-06-13 → 2006-07-03 (+20d) | 2006-06-14 → 2006-07-04 (+20d) |  |
| 88 | Score Submissions | 2006-06-13 → 2006-07-03 (+20d) | 2006-06-15 → 2006-07-05 (+20d) |  |
| 89 | Review Code | 2006-06-15 → 2006-07-05 (+20d) | 2006-06-19 → 2006-07-07 (+18d) |  |
| 90 | Appeals | 2006-06-19 → 2006-07-07 (+18d) | 2006-06-20 → 2006-07-10 (+20d) |  |
| 91 | Appeals Response | 2006-06-20 → 2006-07-10 (+20d) | 2006-06-21 → 2006-07-11 (+20d) |  |
| 92 | Final Fixes | 2006-06-21 → 2006-07-11 (+20d) | 2006-06-26 → 2006-07-14 (+18d) |  |
| 93 | Final Review/ PM Certification | 2006-06-26 → 2006-07-14 (+18d) | 2006-06-27 → 2006-07-17 (+20d) |  |
| 94 | **Deployment** | 2006-06-27 → 2006-07-17 (+20d) | 2006-07-04 → 2006-07-24 (+20d) |  |
| 95 | Deployment to Customer QA | 2006-06-27 → 2006-07-17 (+20d) | 2006-07-04 → 2006-07-24 (+20d) |  |
| 96 | **Testing Iteration** | 2006-07-04 → 2006-07-24 (+20d) | 2006-07-18 → 2006-08-07 (+20d) | 10d? → 10d |
| 97 | Test Plan Execution | 2006-07-04 → 2006-07-24 (+20d) | 2006-07-11 → 2006-07-31 (+20d) | 5d? → 5d |
| 98 | User Acceptance Testing | 2006-07-11 → 2006-07-31 (+20d) | 2006-07-18 → 2006-08-07 (+20d) | 5d? → 5d |
| 99 | **Support** | 2006-06-27 → 2006-07-17 (+20d) | 2006-08-08 → 2006-08-28 (+20d) |  |
| 100 | Capture DRs | 2006-06-27 → 2006-07-17 (+20d) | 2006-07-18 → 2006-08-07 (+20d) |  |
| 101 | Release Fix | 2006-07-18 → 2006-08-07 (+20d) | 2006-08-08 → 2006-08-28 (+20d) |  |

## Version 3 (saved 2006-04-17)

Last finish 2006-08-28 → 2006-09-01 (+4d). Complete tasks 11 → 20.

Removed: 18 Create Site Definition

Changed:

| ID | Task | Start | Finish | Duration | Complete | Total float | Predecessors | Other |
| --- | --- | --- | --- | --- | --- | --- | --- | --- |
| 1 | **TopCoder Online Review/Scorecard Project** |  | 2006-08-28 → 2006-09-01 (+4d) | 303.5d? → 307.5d? | 12% → 20% |  |  |  |
| 7 | **Application Specification** |  |  |  | 48% → 98% |  |  |  |
| 12 | **Module Specification** |  | 2006-04-04 A |  | 94% → 100% | 1.5d → none |  |  |
| 15 | Review Meeting | 2006-04-04 A | 2006-04-04 A |  | 0% → 100% | 1.5d → none |  |  |
| 17 | Review Meeting | 2006-04-03 A | 2006-04-03 A |  | 0% → 100% | 5.5d → none |  |  |
| 18 | Prototype Revision 1 |  | 2006-04-06 A |  | 11% → 100% | 0d → none |  |  |
| 20 | Fill in Technical Requirements | 2006-04-04 A | 2006-04-04 A |  | 0% → 100% | 2d → none |  |  |
| 21 | Review Meeting | 2006-04-07 A | 2006-04-10 A |  | 0% → 100% | 0d → none |  |  |
| 22 | Prototype Revision 2 Review | 2006-04-11 A | 2006-04-12 A |  | 0% → 100% | 0d → none |  |  |
| 23 | Complete QA Plan | 2006-04-05 A | 2006-04-05 A |  | 0% → 100% | 8.5d → none |  |  |
| 24 | Review Meeting | 2006-04-13 A | 2006-04-13 A |  | 0% → 100% | 0d → none |  |  |
| 25 | Update Final Specification Deliverables | 2006-04-13 A | 2006-04-17 A |  | 0% → 100% | 0d → none |  |  |
| 27 | **Application Architecture** |  | 2006-05-15 → 2006-05-19 (+4d) | 19d → 23d |  |  |  |  |
| 28 | **UML Diagrams** |  | 2006-05-08 → 2006-05-10 (+2d) | 14d → 16d |  |  |  |  |
| 29 | Update Site Map |  | 2006-04-21 → 2006-04-25 (+4d) | 3d → 5d |  | 0d → 11d |  | was named Update Site Map and Site Definition; resources none → Kim Ruhl; Petar Canic |
| 30 | Component Sequence Diagrams | 2006-04-21 → 2006-04-18 (-3d) | 2006-04-28 → 2006-04-27 (-1d) | 5d → 7d |  |  | 29 → 7 |  |
| 31 | Component Interface Diagram | 2006-04-28 → 2006-04-27 (-1d) | 2006-05-05 → 2006-05-08 (+3d) | 5d → 7d |  |  |  |  |
| 32 | Component Diagram | 2006-05-05 → 2006-05-08 (+3d) | 2006-05-08 → 2006-05-10 (+2d) | 1d → 2d |  |  |  |  |
| 33 | Physical Data Model Definition | 2006-05-08 → 2006-05-10 (+2d) | 2006-05-11 → 2006-05-17 (+6d) | 3d → 5d |  |  |  |  |
| 34 | PM Review | 2006-05-11 → 2006-05-17 (+6d) | 2006-05-12 → 2006-05-18 (+6d) |  |  |  |  |  |
| 35 | Application Architecture Presentation | 2006-05-12 → 2006-05-18 (+6d) | 2006-05-12 → 2006-05-18 (+6d) |  |  |  |  |  |
| 36 | Component Specifications | 2006-05-08 → 2006-05-10 (+2d) | 2006-05-15 → 2006-05-19 (+4d) | 5d → 7d |  |  |  |  |
| 37 | Application Design Specification | 2006-05-08 → 2006-05-10 (+2d) | 2006-05-11 → 2006-05-17 (+6d) | 3d → 5d |  |  |  |  |
| 38 | **Component Production** | 2006-05-15 → 2006-05-19 (+4d) | 2006-06-20 → 2006-06-26 (+6d) |  |  |  |  |  |
| 39 | Design Posting | 2006-05-15 → 2006-05-19 (+4d) | 2006-05-23 → 2006-05-29 (+6d) |  |  |  |  |  |
| 40 | Design Review | 2006-05-23 → 2006-05-29 (+6d) | 2006-05-29 → 2006-06-02 (+4d) |  |  |  |  |  |
| 41 | Design Final Fixes | 2006-05-29 → 2006-06-02 (+4d) | 2006-05-31 → 2006-06-06 (+6d) |  |  |  |  |  |
| 42 | Creation of Dev Distro | 2006-05-31 → 2006-06-06 (+6d) | 2006-06-01 → 2006-06-07 (+6d) |  |  |  |  |  |
| 43 | Development Posting | 2006-06-01 → 2006-06-07 (+6d) | 2006-06-09 → 2006-06-15 (+6d) |  |  |  |  |  |
| 44 | Development Review | 2006-06-09 → 2006-06-15 (+6d) | 2006-06-15 → 2006-06-21 (+6d) |  |  |  |  |  |
| 45 | Development Final Fixes | 2006-06-15 → 2006-06-21 (+6d) | 2006-06-19 → 2006-06-23 (+4d) |  |  |  |  |  |
| 46 | Post to Catalog | 2006-06-19 → 2006-06-23 (+4d) | 2006-06-20 → 2006-06-26 (+6d) |  |  |  |  |  |
| 47 | **Assembly Competitions** | 2006-05-30 → 2006-06-05 (+6d) | 2006-07-17 → 2006-07-21 (+4d) |  |  |  |  |  |
| 48 | **Setup** | 2006-05-30 → 2006-06-05 (+6d) | 2006-06-21 → 2006-06-27 (+6d) |  |  |  |  |  |
| 49 | Divide Use Cases for Competitions | 2006-05-30 → 2006-06-05 (+6d) | 2006-05-31 → 2006-06-06 (+6d) |  |  |  |  |  |
| 50 | TopCoder Website Informaiton Posted | 2006-06-06 → 2006-06-12 (+6d) | 2006-06-07 → 2006-06-13 (+6d) |  |  |  |  |  |
| 51 | Package Components | 2006-06-20 → 2006-06-26 (+6d) | 2006-06-21 → 2006-06-27 (+6d) |  |  |  |  |  |
| 52 | **Test Case Development** | 2006-06-07 → 2006-06-13 (+6d) | 2006-06-14 → 2006-06-20 (+6d) |  |  |  |  |  |
| 53 | Submit tests | 2006-06-07 → 2006-06-13 (+6d) | 2006-06-13 → 2006-06-19 (+6d) |  |  |  |  |  |
| 54 | Screen test cases | 2006-06-13 → 2006-06-19 (+6d) | 2006-06-14 → 2006-06-20 (+6d) |  |  |  |  |  |
| 55 | Team Formation | 2006-06-07 → 2006-06-13 (+6d) | 2006-06-21 → 2006-06-27 (+6d) |  |  |  |  |  |
| 56 | **Development** | 2006-06-21 → 2006-06-27 (+6d) | 2006-07-17 → 2006-07-21 (+4d) |  |  |  |  |  |
| 57 | **Opening Round** | 2006-06-21 → 2006-06-27 (+6d) | 2006-07-17 → 2006-07-21 (+4d) |  |  |  |  |  |
| 58 | **Team Development** | 2006-06-21 → 2006-06-27 (+6d) | 2006-06-29 → 2006-07-05 (+6d) |  |  |  |  |  |
| 59 | **Development of Use Cases** | 2006-06-21 → 2006-06-27 (+6d) | 2006-06-29 → 2006-07-05 (+6d) |  |  |  |  |  |
| 60 | Create Unit Tests | 2006-06-21 → 2006-06-27 (+6d) | 2006-06-26 → 2006-06-30 (+4d) |  |  |  |  |  |
| 61 | Convert Prototype | 2006-06-21 → 2006-06-27 (+6d) | 2006-06-26 → 2006-06-30 (+4d) |  |  |  |  |  |
| 62 | Configure components | 2006-06-21 → 2006-06-27 (+6d) | 2006-06-26 → 2006-06-30 (+4d) |  |  |  |  |  |
| 63 | Test | 2006-06-26 → 2006-06-30 (+4d) | 2006-06-29 → 2006-07-05 (+6d) |  |  |  |  |  |
| 64 | **Test case challenge** | 2006-06-29 → 2006-07-05 (+6d) | 2006-07-03 → 2006-07-07 (+4d) |  |  |  |  |  |
| 65 | Submit Challenges | 2006-06-29 → 2006-07-05 (+6d) | 2006-06-30 → 2006-07-06 (+6d) |  |  |  |  |  |
| 66 | Appeals response | 2006-06-30 → 2006-07-06 (+6d) | 2006-07-03 → 2006-07-07 (+4d) |  |  |  |  |  |
| 67 | **Review** | 2006-07-03 → 2006-07-07 (+4d) | 2006-07-17 → 2006-07-21 (+4d) |  |  |  |  |  |
| 68 | Score Testcases | 2006-07-03 → 2006-07-07 (+4d) | 2006-07-04 → 2006-07-10 (+6d) |  |  |  |  |  |
| 69 | Score Submissions | 2006-07-03 → 2006-07-07 (+4d) | 2006-07-05 → 2006-07-11 (+6d) |  |  |  |  |  |
| 70 | Review Code | 2006-07-05 → 2006-07-11 (+6d) | 2006-07-07 → 2006-07-13 (+6d) |  |  |  |  |  |
| 71 | Appeals | 2006-07-07 → 2006-07-13 (+6d) | 2006-07-10 → 2006-07-14 (+4d) |  |  |  |  |  |
| 72 | Appeals Response | 2006-07-10 → 2006-07-14 (+4d) | 2006-07-11 → 2006-07-17 (+6d) |  |  |  |  |  |
| 73 | Final Fixes | 2006-07-11 → 2006-07-17 (+6d) | 2006-07-14 → 2006-07-20 (+6d) |  |  |  |  |  |
| 74 | Final Review/PM Certification | 2006-07-14 → 2006-07-20 (+6d) | 2006-07-17 → 2006-07-21 (+4d) |  |  |  |  |  |
| 75 | **Round Two** | 2006-06-21 → 2006-06-27 (+6d) | 2006-07-17 → 2006-07-21 (+4d) |  |  |  |  |  |
| 76 | **Team Development** | 2006-06-21 → 2006-06-27 (+6d) | 2006-06-29 → 2006-07-05 (+6d) |  |  |  |  |  |
| 77 | **Development of Use Cases** | 2006-06-21 → 2006-06-27 (+6d) | 2006-06-29 → 2006-07-05 (+6d) |  |  |  |  |  |
| 78 | Create Unit Tests | 2006-06-21 → 2006-06-27 (+6d) | 2006-06-26 → 2006-06-30 (+4d) |  |  |  |  |  |
| 79 | Convert Prototype | 2006-06-21 → 2006-06-27 (+6d) | 2006-06-26 → 2006-06-30 (+4d) |  |  |  |  |  |
| 80 | Configure components | 2006-06-21 → 2006-06-27 (+6d) | 2006-06-26 → 2006-06-30 (+4d) |  |  |  |  |  |
| 81 | Test | 2006-06-26 → 2006-06-30 (+4d) | 2006-06-29 → 2006-07-05 (+6d) |  |  |  |  |  |
| 82 | **Test case challenge** | 2006-06-29 → 2006-07-05 (+6d) | 2006-07-03 → 2006-07-07 (+4d) |  |  |  |  |  |
| 83 | Submit Challenges | 2006-06-29 → 2006-07-05 (+6d) | 2006-06-30 → 2006-07-06 (+6d) |  |  |  |  |  |
| 84 | Appeals response | 2006-06-30 → 2006-07-06 (+6d) | 2006-07-03 → 2006-07-07 (+4d) |  |  |  |  |  |

| ID | Task | Start | Finish | Duration | Total float |
| --- | --- | --- | --- | --- | --- |
| 85 | **Review** | 2006-07-03 → 2006-07-07 (+4d) | 2006-07-17 → 2006-07-21 (+4d) |  |  |
| 86 | Score Testcases | 2006-07-03 → 2006-07-07 (+4d) | 2006-07-04 → 2006-07-10 (+6d) |  |  |
| 87 | Score Submissions | 2006-07-03 → 2006-07-07 (+4d) | 2006-07-05 → 2006-07-11 (+6d) |  |  |
| 88 | Review Code | 2006-07-05 → 2006-07-11 (+6d) | 2006-07-07 → 2006-07-13 (+6d) |  |  |
| 89 | Appeals | 2006-07-07 → 2006-07-13 (+6d) | 2006-07-10 → 2006-07-14 (+4d) |  |  |
| 90 | Appeals Response | 2006-07-10 → 2006-07-14 (+4d) | 2006-07-11 → 2006-07-17 (+6d) |  |  |
| 91 | Final Fixes | 2006-07-11 → 2006-07-17 (+6d) | 2006-07-14 → 2006-07-20 (+6d) |  |  |
| 92 | Final Review/ PM Certification | 2006-07-14 → 2006-07-20 (+6d) | 2006-07-17 → 2006-07-21 (+4d) |  |  |
| 93 | **Deployment** | 2006-07-17 → 2006-07-21 (+4d) | 2006-07-24 → 2006-08-02 (+9d) | 5d → 8d | 15d → 2d |
| 94 | Deployment to Customer QA | 2006-07-17 → 2006-07-21 (+4d) | 2006-07-24 → 2006-08-02 (+9d) | 5d → 8d | 15d → 2d |
| 95 | **Testing Iteration** | 2006-07-24 → 2006-08-02 (+9d) | 2006-08-07 → 2006-08-30 (+23d) | 10d → 20d | 15d → 2d |
| 96 | Test Plan Execution | 2006-07-24 → 2006-08-02 (+9d) | 2006-07-31 → 2006-08-16 (+16d) | 5d → 10d | 15d → 2d |
| 97 | User Acceptance Testing | 2006-07-31 → 2006-08-16 (+16d) | 2006-08-07 → 2006-08-30 (+23d) | 5d → 10d | 15d → 2d |
| 98 | **Support** | 2006-07-17 → 2006-07-21 (+4d) | 2006-08-28 → 2006-09-01 (+4d) |  |  |
| 99 | Capture DRs | 2006-07-17 → 2006-07-21 (+4d) | 2006-08-07 → 2006-08-11 (+4d) |  |  |
| 100 | Release Fix | 2006-08-07 → 2006-08-11 (+4d) | 2006-08-28 → 2006-09-01 (+4d) |  |  |

## Version 4 (saved 2006-04-25)

Note of the change: updated based on review from Brenden

Last finish 2006-09-01 → 2006-09-08 (+7d). Complete tasks 20 → 21.

Added:

| ID | Task | Duration | Start | Finish | Predecessors | Constraint | Resources |
| --- | --- | --- | --- | --- | --- | --- | --- |
| 28 | Test Scenarios | 10d | 2006-04-21 | 2006-05-04 | 23 | finish no earlier than 2006-05-04 | Brian Chang |

Changed:

| ID | Task | Start | Finish | Duration | Complete | Total float | Predecessors | Other |
| --- | --- | --- | --- | --- | --- | --- | --- | --- |
| 1 | **TopCoder Online Review/Scorecard Project** |  | 2006-09-01 → 2006-09-08 (+7d) | 307.5d? → 312.5d? |  |  |  |  |
| 7 | **Application Specification** |  | 2006-04-18 A |  | 98% → 100% | 0d → none |  |  |
| 26 | Final Specification Presentation | 2006-04-17 A | 2006-04-18 A |  | 0% → 100% | 0d → none |  |  |
| 27 | **Application Architecture** |  | 2006-05-19 → 2006-05-26 (+7d) | 23d → 28d |  |  |  |  |
| 31 | Component Sequence Diagrams |  |  |  |  |  |  | resources Component Architect → WishingBone |
| 32 | Component Interface Diagram |  |  |  |  |  |  | resources Component Architect → WishingBone |
| 33 | Component Diagram |  |  |  |  |  |  | resources Component Architect → WishingBone |
| 34 | Physical Data Model Definition |  |  |  |  | 0.5d → 0d |  | resources Component Architect → WishingBone |
| 35 | PM Review | 2006-05-17 → 2006-05-10 (-7d) | 2006-05-18 → 2006-05-11 (-7d) |  |  | 0.5d → 10.5d | 29, 34 → 29 |  |
| 36 | Application Architecture Presentation | 2006-05-18 → 2006-05-11 (-7d) | 2006-05-18 → 2006-05-11 (-7d) |  |  | 0.5d → 10.5d |  |  |
| 37 | Component Specifications | 2006-05-10 → 2006-05-17 (+7d) | 2006-05-19 → 2006-05-26 (+7d) |  |  |  | 29 → 34 |  |
| 38 | Application Design Specification | 2006-05-10 → 2006-05-17 (+7d) | 2006-05-17 → 2006-05-24 (+7d) |  |  |  | 29 → 34 |  |
| 39 | **Component Production** | 2006-05-19 → 2006-05-26 (+7d) | 2006-06-26 → 2006-07-03 (+7d) |  |  |  |  |  |
| 40 | Design Posting | 2006-05-19 → 2006-05-26 (+7d) | 2006-05-29 → 2006-06-05 (+7d) |  |  |  |  |  |
| 41 | Design Review | 2006-05-29 → 2006-06-05 (+7d) | 2006-06-02 → 2006-06-09 (+7d) |  |  |  |  |  |
| 42 | Design Final Fixes | 2006-06-02 → 2006-06-09 (+7d) | 2006-06-06 → 2006-06-13 (+7d) |  |  |  |  |  |
| 43 | Creation of Dev Distro | 2006-06-06 → 2006-06-13 (+7d) | 2006-06-07 → 2006-06-14 (+7d) |  |  |  |  |  |
| 44 | Development Posting | 2006-06-07 → 2006-06-14 (+7d) | 2006-06-15 → 2006-06-22 (+7d) |  |  |  |  |  |
| 45 | Development Review | 2006-06-15 → 2006-06-22 (+7d) | 2006-06-21 → 2006-06-28 (+7d) |  |  |  |  |  |
| 46 | Development Final Fixes | 2006-06-21 → 2006-06-28 (+7d) | 2006-06-23 → 2006-06-30 (+7d) |  |  |  |  |  |
| 47 | Post to Catalog | 2006-06-23 → 2006-06-30 (+7d) | 2006-06-26 → 2006-07-03 (+7d) |  |  |  |  |  |
| 48 | **Assembly Competitions** | 2006-06-05 → 2006-06-12 (+7d) | 2006-07-21 → 2006-07-28 (+7d) |  |  |  |  |  |
| 49 | **Setup** | 2006-06-05 → 2006-06-12 (+7d) | 2006-06-27 → 2006-07-04 (+7d) |  |  |  |  |  |
| 50 | Divide Use Cases for Competitions | 2006-06-05 → 2006-06-12 (+7d) | 2006-06-06 → 2006-06-13 (+7d) |  |  |  |  |  |
| 51 | TopCoder Website Informaiton Posted | 2006-06-12 → 2006-06-19 (+7d) | 2006-06-13 → 2006-06-20 (+7d) |  |  |  |  |  |
| 52 | Package Components | 2006-06-26 → 2006-07-03 (+7d) | 2006-06-27 → 2006-07-04 (+7d) |  |  |  |  |  |
| 53 | **Test Case Development** | 2006-06-13 → 2006-06-20 (+7d) | 2006-06-20 → 2006-06-27 (+7d) |  |  |  |  |  |
| 54 | Submit tests | 2006-06-13 → 2006-06-20 (+7d) | 2006-06-19 → 2006-06-26 (+7d) |  |  |  |  |  |
| 55 | Screen test cases | 2006-06-19 → 2006-06-26 (+7d) | 2006-06-20 → 2006-06-27 (+7d) |  |  |  |  |  |
| 56 | Team Formation | 2006-06-13 → 2006-06-20 (+7d) | 2006-06-27 → 2006-07-04 (+7d) |  |  |  |  |  |
| 57 | **Development** | 2006-06-27 → 2006-07-04 (+7d) | 2006-07-21 → 2006-07-28 (+7d) |  |  |  |  |  |
| 58 | **Opening Round** | 2006-06-27 → 2006-07-04 (+7d) | 2006-07-21 → 2006-07-28 (+7d) |  |  |  |  |  |
| 59 | **Team Development** | 2006-06-27 → 2006-07-04 (+7d) | 2006-07-05 → 2006-07-12 (+7d) |  |  |  |  |  |
| 60 | **Development of Use Cases** | 2006-06-27 → 2006-07-04 (+7d) | 2006-07-05 → 2006-07-12 (+7d) |  |  |  |  |  |
| 61 | Create Unit Tests | 2006-06-27 → 2006-07-04 (+7d) | 2006-06-30 → 2006-07-07 (+7d) |  |  |  |  |  |
| 62 | Convert Prototype | 2006-06-27 → 2006-07-04 (+7d) | 2006-06-30 → 2006-07-07 (+7d) |  |  |  |  |  |
| 63 | Configure components | 2006-06-27 → 2006-07-04 (+7d) | 2006-06-30 → 2006-07-07 (+7d) |  |  |  |  |  |
| 64 | Test | 2006-06-30 → 2006-07-07 (+7d) | 2006-07-05 → 2006-07-12 (+7d) |  |  |  |  |  |
| 65 | **Test case challenge** | 2006-07-05 → 2006-07-12 (+7d) | 2006-07-07 → 2006-07-14 (+7d) |  |  |  |  |  |
| 66 | Submit Challenges | 2006-07-05 → 2006-07-12 (+7d) | 2006-07-06 → 2006-07-13 (+7d) |  |  |  |  |  |
| 67 | Appeals response | 2006-07-06 → 2006-07-13 (+7d) | 2006-07-07 → 2006-07-14 (+7d) |  |  |  |  |  |
| 68 | **Review** | 2006-07-07 → 2006-07-14 (+7d) | 2006-07-21 → 2006-07-28 (+7d) |  |  |  |  |  |
| 69 | Score Testcases | 2006-07-07 → 2006-07-14 (+7d) | 2006-07-10 → 2006-07-17 (+7d) |  |  |  |  |  |
| 70 | Score Submissions | 2006-07-07 → 2006-07-14 (+7d) | 2006-07-11 → 2006-07-18 (+7d) |  |  |  |  |  |
| 71 | Review Code | 2006-07-11 → 2006-07-18 (+7d) | 2006-07-13 → 2006-07-20 (+7d) |  |  |  |  |  |
| 72 | Appeals | 2006-07-13 → 2006-07-20 (+7d) | 2006-07-14 → 2006-07-21 (+7d) |  |  |  |  |  |
| 73 | Appeals Response | 2006-07-14 → 2006-07-21 (+7d) | 2006-07-17 → 2006-07-24 (+7d) |  |  |  |  |  |
| 74 | Final Fixes | 2006-07-17 → 2006-07-24 (+7d) | 2006-07-20 → 2006-07-27 (+7d) |  |  |  |  |  |
| 75 | Final Review/PM Certification | 2006-07-20 → 2006-07-27 (+7d) | 2006-07-21 → 2006-07-28 (+7d) |  |  |  |  |  |
| 76 | **Round Two** | 2006-06-27 → 2006-07-04 (+7d) | 2006-07-21 → 2006-07-28 (+7d) |  |  |  |  |  |
| 77 | **Team Development** | 2006-06-27 → 2006-07-04 (+7d) | 2006-07-05 → 2006-07-12 (+7d) |  |  |  |  |  |
| 78 | **Development of Use Cases** | 2006-06-27 → 2006-07-04 (+7d) | 2006-07-05 → 2006-07-12 (+7d) |  |  |  |  |  |
| 79 | Create Unit Tests | 2006-06-27 → 2006-07-04 (+7d) | 2006-06-30 → 2006-07-07 (+7d) |  |  |  |  |  |
| 80 | Convert Prototype | 2006-06-27 → 2006-07-04 (+7d) | 2006-06-30 → 2006-07-07 (+7d) |  |  |  |  |  |
| 81 | Configure components | 2006-06-27 → 2006-07-04 (+7d) | 2006-06-30 → 2006-07-07 (+7d) |  |  |  |  |  |
| 82 | Test | 2006-06-30 → 2006-07-07 (+7d) | 2006-07-05 → 2006-07-12 (+7d) |  |  |  |  |  |
| 83 | **Test case challenge** | 2006-07-05 → 2006-07-12 (+7d) | 2006-07-07 → 2006-07-14 (+7d) |  |  |  |  |  |
| 84 | Submit Challenges | 2006-07-05 → 2006-07-12 (+7d) | 2006-07-06 → 2006-07-13 (+7d) |  |  |  |  |  |
| 85 | Appeals response | 2006-07-06 → 2006-07-13 (+7d) | 2006-07-07 → 2006-07-14 (+7d) |  |  |  |  |  |
| 86 | **Review** | 2006-07-07 → 2006-07-14 (+7d) | 2006-07-21 → 2006-07-28 (+7d) |  |  |  |  |  |
| 87 | Score Testcases | 2006-07-07 → 2006-07-14 (+7d) | 2006-07-10 → 2006-07-17 (+7d) |  |  |  |  |  |
| 88 | Score Submissions | 2006-07-07 → 2006-07-14 (+7d) | 2006-07-11 → 2006-07-18 (+7d) |  |  |  |  |  |
| 89 | Review Code | 2006-07-11 → 2006-07-18 (+7d) | 2006-07-13 → 2006-07-20 (+7d) |  |  |  |  |  |
| 90 | Appeals | 2006-07-13 → 2006-07-20 (+7d) | 2006-07-14 → 2006-07-21 (+7d) |  |  |  |  |  |
| 91 | Appeals Response | 2006-07-14 → 2006-07-21 (+7d) | 2006-07-17 → 2006-07-24 (+7d) |  |  |  |  |  |
| 92 | Final Fixes | 2006-07-17 → 2006-07-24 (+7d) | 2006-07-20 → 2006-07-27 (+7d) |  |  |  |  |  |
| 93 | Final Review/ PM Certification | 2006-07-20 → 2006-07-27 (+7d) | 2006-07-21 → 2006-07-28 (+7d) |  |  |  |  |  |
| 94 | **Deployment** | 2006-07-21 → 2006-07-28 (+7d) | 2006-08-02 → 2006-08-09 (+7d) |  |  |  |  |  |
| 95 | Deployment to Customer QA | 2006-07-21 → 2006-07-28 (+7d) | 2006-08-02 → 2006-08-09 (+7d) |  |  |  |  |  |
| 96 | **Testing Iteration** | 2006-08-02 → 2006-08-09 (+7d) | 2006-08-30 → 2006-09-06 (+7d) |  |  |  |  |  |

| ID | Task | Start | Finish |
| --- | --- | --- | --- |
| 97 | Test Plan Execution | 2006-08-02 → 2006-08-09 (+7d) | 2006-08-16 → 2006-08-23 (+7d) |
| 98 | User Acceptance Testing | 2006-08-16 → 2006-08-23 (+7d) | 2006-08-30 → 2006-09-06 (+7d) |
| 99 | **Support** | 2006-07-21 → 2006-07-28 (+7d) | 2006-09-01 → 2006-09-08 (+7d) |
| 100 | Capture DRs | 2006-07-21 → 2006-07-28 (+7d) | 2006-08-11 → 2006-08-18 (+7d) |
| 101 | Release Fix | 2006-08-11 → 2006-08-18 (+7d) | 2006-09-01 → 2006-09-08 (+7d) |

## Version 5 (saved 2006-05-23)

Last finish 2006-09-08 → 2006-09-07 (-1d). Complete tasks 21 → 23.

Added:

| ID | Task | Duration | Start | Finish | Predecessors |
| --- | --- | --- | --- | --- | --- |
| 51 | TopCoder Website Content Creation | 5d | 2006-06-23 | 2006-06-29 | 39FS-5d |
| 77 | PM Review/Certification | 1d | 2006-07-27 | 2006-07-27 | 76 |
| 83 | PM Certification | 1d | 2006-08-15 | 2006-08-15 | 82 |
| 87 | Send out how-to info to users | 1d | 2006-07-28 | 2006-07-28 | 77 |
| 88 | Beta Release to internal users | 1d | 2006-08-16 | 2006-08-16 | 78 |

Removed: 76 Round Two; 77 Team Development; 78 Development of Use Cases; 79 Create Unit Tests; 80 Convert Prototype; 81 Configure components; 82 Test; 83 Test case challenge; 84 Submit Challenges; 85 Appeals response; 86 Review; 87 Score Testcases; 88 Score Submissions; 89 Review Code; 90 Appeals; 91 Appeals Response; 92 Final Fixes; 93 Final Review/ PM Certification

Changed:

| ID | Task | Start | Finish | Duration | Complete | Total float | Predecessors | Other |
| --- | --- | --- | --- | --- | --- | --- | --- | --- |
| 1 | **TopCoder Online Review/Scorecard Project** |  | 2006-09-08 → 2006-09-07 (-1d) | 312.5d? → 312d? | 20% → 36% |  |  |  |
| 27 | **Application Architecture** | 2006-04-18 A | 2006-05-26 → 2006-05-24 (-2d) | 28d → 26.5d | 0% → 63% |  |  |  |
| 28 | Test Scenarios | 2006-04-21 → 2006-05-08 A (+17d) | 2006-05-04 → 2006-05-19 A (+15d) |  | 0% → 100% | 15.5d → none |  | constraint finish no earlier than 2006-05-04 → start no earlier than 2006-05-08; resources Brian Chang → Dean Brodrick |
| 29 | Update Site Map | 2006-04-18 A | 2006-04-25 A |  | 0% → 100% | 11d → none |  |  |
| 30 | Physical Data Model Definition | 2006-05-10 → 2006-04-18 A (-22d) | 2006-05-17 → 2006-04-25 (-22d) |  | 0% → 95% | 0d → 21.5d | 31 → 7 |  |
| 31 | **UML Diagrams** | 2006-04-18 → 2006-04-20 A (+2d) |  | 16d → 15d | 0% → 64% |  |  |  |
| 32 | Component Sequence Diagrams | 2006-04-18 → 2006-04-20 A (+2d) | 2006-04-27 → 2006-04-28 (+1d) |  | 0% → 95% | 0d → 3d |  | constraint finish no earlier than 2005-02-04 → start no earlier than 2006-04-20 |
| 33 | Component Interface Diagram | 2006-04-27 → 2006-05-01 A (+4d) |  | 7d → 6d | 0% → 50% |  |  |  |
| 34 | Component Diagram | 2006-05-08 → 2006-05-09 (+1d) |  |  |  |  |  |  |
| 35 | PM Review | 2006-05-10 → 2006-05-11 (+1d) |  |  |  | 10.5d → 8.5d |  |  |
| 36 | Application Architecture Presentation | 2006-05-11 → 2006-05-12 (+1d) | 2006-05-11 → 2006-05-12 (+1d) |  |  | 10.5d → 8.5d |  |  |
| 37 | Component Specifications | 2006-05-17 → 2006-05-11 (-6d) | 2006-05-26 → 2006-05-17 (-9d) | 7d → 5d |  |  | 30 → 31 |  |
| 38 | Application Design Specification | 2006-05-17 → 2006-05-18 (+1d) |  |  |  | 2d → 0d | 30 → 37 |  |
| 39 | **Component Production** | 2006-05-26 → 2006-05-25 (-1d) | 2006-07-03 → 2006-06-29 (-4d) |  |  |  |  |  |
| 40 | Design Posting | 2006-05-26 → 2006-05-25 (-1d) | 2006-06-05 → 2006-06-01 (-4d) |  |  |  |  |  |
| 41 | Design Review | 2006-06-05 → 2006-06-02 (-3d) | 2006-06-09 → 2006-06-07 (-2d) |  |  |  |  |  |
| 42 | Design Final Fixes | 2006-06-09 → 2006-06-08 (-1d) | 2006-06-13 → 2006-06-09 (-4d) |  |  |  |  |  |
| 43 | Creation of Dev Distro | 2006-06-13 → 2006-06-12 (-1d) | 2006-06-14 → 2006-06-12 (-2d) |  |  |  |  |  |
| 44 | Development Posting | 2006-06-14 → 2006-06-13 (-1d) | 2006-06-22 → 2006-06-20 (-2d) |  |  |  |  |  |
| 45 | Development Review | 2006-06-22 → 2006-06-21 (-1d) | 2006-06-28 → 2006-06-26 (-2d) |  |  |  |  |  |
| 46 | Development Final Fixes | 2006-06-28 → 2006-06-27 (-1d) | 2006-06-30 → 2006-06-28 (-2d) |  |  |  |  |  |
| 47 | Post to Catalog | 2006-06-30 → 2006-06-29 (-1d) | 2006-07-03 → 2006-06-29 (-4d) |  |  |  |  |  |
| 48 | **Assembly Competitions** | 2006-06-12 → 2006-06-09 (-3d) | 2006-07-28 → 2006-07-27 (-1d) | 34d → 35d |  |  |  |  |
| 49 | **Setup** | 2006-06-12 → 2006-06-09 (-3d) | 2006-07-04 → 2006-06-30 (-4d) |  |  |  |  |  |
| 50 | Divide Use Cases for Competitions | 2006-06-12 → 2006-06-09 (-3d) | 2006-06-13 → 2006-06-09 (-4d) |  |  | 33d → 34d |  |  |
| 52 | TopCoder Website Informaiton Posted | 2006-06-19 → 2006-06-16 (-3d) | 2006-06-20 → 2006-06-16 (-4d) |  |  |  |  |  |
| 53 | Package Components | 2006-07-03 → 2006-06-30 (-3d) | 2006-07-04 → 2006-06-30 (-4d) |  |  |  |  |  |
| 54 | **Test Case Development** | 2006-06-20 → 2006-06-19 (-1d) | 2006-06-27 → 2006-06-23 (-4d) |  |  |  |  |  |
| 55 | Submit tests | 2006-06-20 → 2006-06-19 (-1d) | 2006-06-26 → 2006-06-22 (-4d) |  |  |  |  |  |
| 56 | Screen test cases | 2006-06-26 → 2006-06-23 (-3d) | 2006-06-27 → 2006-06-23 (-4d) |  |  |  |  |  |
| 57 | Team Formation | 2006-06-20 → 2006-06-19 (-1d) | 2006-07-04 → 2006-06-30 (-4d) |  |  | 18d → 19d |  |  |
| 58 | **Development** | 2006-07-04 → 2006-07-03 (-1d) | 2006-07-28 → 2006-07-27 (-1d) | 18d → 19d |  |  |  |  |
| 59 | **Opening Round** | 2006-07-04 → 2006-07-03 (-1d) | 2006-07-28 → 2006-07-27 (-1d) | 18d → 19d |  |  |  |  |
| 60 | **Team Development** | 2006-07-04 → 2006-07-03 (-1d) | 2006-07-12 → 2006-07-10 (-2d) |  |  |  |  |  |
| 61 | **Development of Use Cases** | 2006-07-04 → 2006-07-03 (-1d) | 2006-07-12 → 2006-07-10 (-2d) |  |  |  |  |  |
| 62 | Create Unit Tests | 2006-07-04 → 2006-07-03 (-1d) | 2006-07-07 → 2006-07-05 (-2d) |  |  |  |  |  |
| 63 | Convert Prototype | 2006-07-04 → 2006-07-03 (-1d) | 2006-07-07 → 2006-07-05 (-2d) |  |  |  |  |  |
| 64 | Configure components | 2006-07-04 → 2006-07-03 (-1d) | 2006-07-07 → 2006-07-05 (-2d) |  |  |  |  |  |
| 65 | Test | 2006-07-07 → 2006-07-06 (-1d) | 2006-07-12 → 2006-07-10 (-2d) |  |  |  |  |  |
| 66 | **Test case challenge** | 2006-07-12 → 2006-07-11 (-1d) | 2006-07-14 → 2006-07-12 (-2d) |  |  |  |  |  |
| 67 | Submit Challenges | 2006-07-12 → 2006-07-11 (-1d) | 2006-07-13 → 2006-07-11 (-2d) |  |  |  |  |  |
| 68 | Appeals response | 2006-07-13 → 2006-07-12 (-1d) | 2006-07-14 → 2006-07-12 (-2d) |  |  |  |  |  |
| 69 | **Review** | 2006-07-14 → 2006-07-13 (-1d) | 2006-07-28 → 2006-07-27 (-1d) | 10d → 11d |  |  |  |  |
| 70 | Score Testcases | 2006-07-14 → 2006-07-13 (-1d) | 2006-07-17 → 2006-07-13 (-4d) |  |  |  |  |  |
| 71 | Score Submissions | 2006-07-14 → 2006-07-13 (-1d) | 2006-07-18 → 2006-07-14 (-4d) |  |  |  |  |  |
| 72 | Review Code | 2006-07-18 → 2006-07-17 (-1d) | 2006-07-20 → 2006-07-18 (-2d) |  |  |  |  |  |
| 73 | Appeals | 2006-07-20 → 2006-07-19 (-1d) | 2006-07-21 → 2006-07-19 (-2d) |  |  |  |  |  |
| 74 | Appeals Response | 2006-07-21 → 2006-07-20 (-1d) | 2006-07-24 → 2006-07-20 (-4d) |  |  |  |  |  |
| 75 | Final Fixes | 2006-07-24 → 2006-07-21 (-3d) | 2006-07-27 → 2006-07-25 (-2d) |  |  |  |  |  |
| 76 | Final Review | 2006-07-27 → 2006-07-26 (-1d) | 2006-07-28 → 2006-07-26 (-2d) |  |  |  |  | was named Final Review/PM Certification |
| 78 | **Deployment** |  | 2006-08-09 → 2006-08-15 (+6d) | 8d → 13d |  | 2d → 16d |  |  |
| 79 | Deployment |  | 2006-08-09 → 2006-08-02 (-7d) | 8d → 4d |  | 2d → 16d |  | was named Deployment to Customer QA |
| 80 | **Testing Iteration** | 2006-08-09 → 2006-08-03 (-6d) | 2006-09-06 → 2006-08-15 (-22d) | 20d → 9d |  | 2d → 16d |  |  |
| 81 | Test Plan Execution | 2006-08-09 → 2006-08-03 (-6d) | 2006-08-23 → 2006-08-07 (-16d) | 10d → 3d |  | 2d → 16d |  |  |
| 82 | User Acceptance Testing | 2006-08-23 → 2006-08-08 (-15d) | 2006-09-06 → 2006-08-14 (-23d) | 10d → 5d |  | 2d → 16d |  |  |
| 84 | **Support** |  | 2006-09-08 → 2006-09-07 (-1d) |  |  |  |  |  |
| 85 | Capture DRs |  | 2006-08-18 → 2006-08-17 (-1d) |  |  |  |  |  |
| 86 | Release Fix |  | 2006-09-08 → 2006-09-07 (-1d) |  |  |  |  |  |

## Version 6 (saved 2006-05-24)

Note of the change: updated project plan

Last finish stays 2006-09-07. Complete tasks 23 → 24.

Added:

| ID | Task | Duration | Start | Finish | Predecessors | Constraint | Resources |
| --- | --- | --- | --- | --- | --- | --- | --- |
| 37 | Review | 1d | 2006-05-30 | 2006-05-30 | 36 |  | Project Manager; Component Architect |
| 39 | **File Upload 2.0** | 26d | 2006-05-25 | 2006-06-29 |  |  |  |
| 48 | **Cached Web Element Tag** | 26d | 2006-05-25 | 2006-06-29 |  |  |  |
| 49 | Design Posting | 6d | 2006-05-25 | 2006-06-01 |  | start no earlier than 2006-05-25 | Member |
| 50 | Design Review | 4d | 2006-06-02 | 2006-06-07 | 49 | finish no earlier than 2005-03-21 | Member |
| 51 | Design Final Fixes | 2d | 2006-06-08 | 2006-06-09 | 50 |  | Member |
| 52 | Creation of Dev Distro | 1d | 2006-06-12 | 2006-06-12 | 51 |  | Component Manager |
| 53 | Development Posting | 6d | 2006-06-13 | 2006-06-20 | 52 | start no earlier than 2005-03-30 | Member |
| 54 | Development Review | 4d | 2006-06-21 | 2006-06-26 | 53 |  | Member |
| 55 | Development Final Fixes | 2d | 2006-06-27 | 2006-06-28 | 54 | finish no earlier than 2005-04-06 | Member |
| 56 | Post to Catalog | 1d | 2006-06-29 | 2006-06-29 | 55 |  | Component Manager |
| 57 | **Database Abstraction 1.1** | 26d | 2006-05-25 | 2006-06-29 |  |  |  |
| 58 | Design Posting | 6d | 2006-05-25 | 2006-06-01 |  | start no earlier than 2006-05-25 | Member |
| 59 | Design Review | 4d | 2006-06-02 | 2006-06-07 | 58 | finish no earlier than 2005-03-21 | Member |
| 60 | Design Final Fixes | 2d | 2006-06-08 | 2006-06-09 | 59 |  | Member |
| 61 | Creation of Dev Distro | 1d | 2006-06-12 | 2006-06-12 | 60 |  | Component Manager |
| 62 | Development Posting | 6d | 2006-06-13 | 2006-06-20 | 61 | start no earlier than 2005-03-30 | Member |
| 63 | Development Review | 4d | 2006-06-21 | 2006-06-26 | 62 |  | Member |
| 64 | Development Final Fixes | 2d | 2006-06-27 | 2006-06-28 | 63 | finish no earlier than 2005-04-06 | Member |
| 65 | Post to Catalog | 1d | 2006-06-29 | 2006-06-29 | 64 |  | Component Manager |
| 66 | **Search Builder - Bug Fix** | 26d | 2006-05-25 | 2006-06-29 |  |  |  |
| 67 | Design Posting | 6d | 2006-05-25 | 2006-06-01 |  | start no earlier than 2006-05-25 | Member |
| 68 | Design Review | 4d | 2006-06-02 | 2006-06-07 | 67 | finish no earlier than 2005-03-21 | Member |
| 69 | Design Final Fixes | 2d | 2006-06-08 | 2006-06-09 | 68 |  | Member |
| 70 | Creation of Dev Distro | 1d | 2006-06-12 | 2006-06-12 | 69 |  | Component Manager |
| 71 | Development Posting | 6d | 2006-06-13 | 2006-06-20 | 70 | start no earlier than 2005-03-30 | Member |
| 72 | Development Review | 4d | 2006-06-21 | 2006-06-26 | 71 |  | Member |
| 73 | Development Final Fixes | 2d | 2006-06-27 | 2006-06-28 | 72 | finish no earlier than 2005-04-06 | Member |
| 74 | Post to Catalog | 1d | 2006-06-29 | 2006-06-29 | 73 |  | Component Manager |
| 75 | **Components Round 2** | 26d | 2006-06-01 | 2006-07-06 |  |  |  |
| 76 | Design Posting | 6d | 2006-06-01 | 2006-06-08 |  | start no earlier than 2006-06-01 | Member |
| 77 | Design Review | 4d | 2006-06-09 | 2006-06-14 | 76 | finish no earlier than 2005-03-21 | Member |
| 78 | Design Final Fixes | 2d | 2006-06-15 | 2006-06-16 | 77 |  | Member |
| 79 | Creation of Dev Distro | 1d | 2006-06-19 | 2006-06-19 | 78 |  | Component Manager |
| 80 | Development Posting | 6d | 2006-06-20 | 2006-06-27 | 79 | start no earlier than 2005-03-30 | Member |
| 81 | Development Review | 4d | 2006-06-28 | 2006-07-03 | 80 |  | Member |
| 82 | Development Final Fixes | 2d | 2006-07-04 | 2006-07-05 | 81 | finish no earlier than 2005-04-06 | Member |
| 83 | Post to Catalog | 1d | 2006-07-06 | 2006-07-06 | 82 |  | Component Manager |

Removed: 35 PM Review; 36 Application Architecture Presentation

Changed:

| ID | Task | Start | Finish | Duration | Complete | Total float | Predecessors | Other |
| --- | --- | --- | --- | --- | --- | --- | --- | --- |
| 1 | **TopCoder Online Review/Scorecard Project** | 2005-06-29 A → 2004-01-27 A (-519d) |  | 312d? → 683d? | 36% → 23% |  |  |  |
| 27 | **Application Architecture** |  | 2006-05-24 → 2006-05-30 (+6d) | 26.5d → 30.5d | 63% → 39% | 0d → 72d |  |  |
| 30 | Physical Data Model Definition |  | 2006-04-25 A |  | 95% → 100% | 21.5d → none |  |  |
| 31 | **UML Diagrams** |  | 2006-05-10 → 2006-05-28 (+18d) | 15d → 27d | 64% → 20% | 0d → 74d | 7 → none |  |
| 32 | Component Sequence Diagrams |  | 2006-04-28 → 2006-05-28 (+30d) | 7d → 27d | 95% → 25% | 3d → 74d | 7 → none | constraint start no earlier than 2006-04-20 → finish no earlier than 2006-05-28 |
| 33 | Component Interface Diagram |  | 2006-05-08 → 2006-05-28 (+20d) | 6d → 20d | 50% → 15% | 0d → 74d | 32 → none | constraint finish no earlier than 2005-02-04 → finish no earlier than 2006-05-28 |
| 34 | Component Diagram | 2006-05-09 → 2006-05-25 (+16d) | 2006-05-10 → 2006-05-28 (+18d) |  |  | 0d → 74d | 33 → none | constraint none → finish no earlier than 2006-05-28 |
| 35 | Component Specifications | 2006-05-11 → 2006-05-22 (+11d) | 2006-05-17 → 2006-05-26 (+9d) |  |  | 0d → 72d | 31 → none | constraint finish no earlier than 2005-02-11 → finish no earlier than 2006-05-26 |
| 36 | Application Design Specification | 2006-05-18 → 2006-05-29 (+11d) | 2006-05-24 → 2006-05-29 (+5d) | 5d → 1d |  | 0d → 72d |  | constraint none → finish no earlier than 2006-05-29 |
| 38 | **Component Production** |  | 2006-06-29 → 2006-07-06 (+7d) | 26d → 31d |  |  |  |  |
| 40 | Design Posting |  |  |  |  | 0d → 5d | 27 → none | constraint start no earlier than 2005-03-09 → start no earlier than 2006-05-25 |
| 84 | **Assembly Competitions** | 2006-06-09 → 2004-01-27 (-864d) |  | 35d → 653d |  |  |  |  |
| 85 | **Setup** | 2006-06-09 → 2004-01-27 (-864d) | 2006-06-30 → 2006-07-06 (+6d) | 16d → 638d |  | 10d → 15d |  |  |
| 86 | Divide Use Cases for Competitions | 2006-06-09 → 2006-06-16 (+7d) | 2006-06-09 → 2006-06-16 (+7d) |  |  | 34d → 29d |  |  |
| 87 | TopCoder Website Content Creation | 2006-06-23 → 2006-06-30 (+7d) | 2006-06-29 → 2006-07-06 (+7d) |  |  | 20d → 15d |  |  |
| 88 | TopCoder Website Informaiton Posted | 2006-06-16 → 2006-06-23 (+7d) | 2006-06-16 → 2006-06-23 (+7d) |  |  | 5d → 0d |  |  |
| 89 | Package Components | 2006-06-30 → 2004-01-27 (-885d) | 2006-06-30 → 2004-01-27 (-885d) |  |  | 0d → 633d | 47 → none |  |
| 90 | **Test Case Development** | 2006-06-19 → 2006-06-26 (+7d) | 2006-06-23 → 2006-06-30 (+7d) |  |  | 5d → 0d |  |  |
| 91 | Submit tests | 2006-06-19 → 2006-06-26 (+7d) | 2006-06-22 → 2006-06-29 (+7d) |  |  | 5d → 0d |  |  |
| 92 | Screen test cases | 2006-06-23 → 2006-06-30 (+7d) | 2006-06-23 → 2006-06-30 (+7d) |  |  | 5d → 0d |  |  |
| 93 | Team Formation | 2006-06-19 → 2006-06-26 (+7d) | 2006-06-30 → 2006-07-07 (+7d) |  |  | 19d → 14d |  |  |
| 98 | Create Unit Tests |  |  |  |  |  | 89, 90, 47 → 89, 90 |  |

## Version 7 (saved 2006-06-05)

Last finish 2006-09-07 → 2006-10-05 (+28d). Complete tasks 24 → 26.

Added:

| ID | Task | Duration | Start | Finish | Predecessors | Constraint | Resources |
| --- | --- | --- | --- | --- | --- | --- | --- |
| 79 | **Scorecard Management Development** | 14d | 2006-06-19 | 2006-07-06 | 78 |  |  |
| 80 | Creation of Management Dev Distro | 1d | 2006-06-19 | 2006-06-19 | 78 |  | Component Manager |
| 85 | **Scorecard Persistence Development** | 14d | 2006-06-19 | 2006-07-06 |  |  |  |
| 86 | Creation of Management Dev Distro | 1d | 2006-06-19 | 2006-06-19 | 78 |  | Component Manager |
| 87 | Development Posting | 6d | 2006-06-20 | 2006-06-27 | 80 | start no earlier than 2005-03-30 | Member |
| 88 | Development Review | 4d | 2006-06-28 | 2006-07-03 | 81 |  | Member |
| 89 | Development Final Fixes | 2d | 2006-07-04 | 2006-07-05 | 82 | finish no earlier than 2005-04-06 | Member |
| 90 | Post to Catalog | 1d | 2006-07-06 | 2006-07-06 | 83 |  | Component Manager |
| 91 | **Scorecard Data Structure** | 26d | 2006-06-01 | 2006-07-06 |  |  |  |
| 92 | Design Posting | 6d | 2006-06-01 | 2006-06-08 |  | start no earlier than 2006-06-01 | Member |
| 93 | Design Review | 4d | 2006-06-09 | 2006-06-14 | 92 | finish no earlier than 2005-03-21 | Member |
| 94 | Design Final Fixes | 2d | 2006-06-15 | 2006-06-16 | 93 |  | Member |
| 96 | Development Posting | 6d | 2006-06-20 | 2006-06-27 | 95 | start no earlier than 2005-03-30 | Member |
| 97 | Development Review | 4d | 2006-06-28 | 2006-07-03 | 96 |  | Member |
| 98 | Development Final Fixes | 2d | 2006-07-04 | 2006-07-05 | 97 | finish no earlier than 2005-04-06 | Member |
| 99 | Post to Catalog | 1d | 2006-07-06 | 2006-07-06 | 98 |  | Component Manager |
| 100 | **Review Management (2 dev)** | 26d | 2006-06-01 | 2006-07-06 |  |  |  |
| 101 | Design Posting | 6d | 2006-06-01 | 2006-06-08 |  | start no earlier than 2006-06-01 | Member |
| 102 | Design Review | 4d | 2006-06-09 | 2006-06-14 | 101 | finish no earlier than 2005-03-21 | Member |
| 103 | Design Final Fixes | 2d | 2006-06-15 | 2006-06-16 | 102 |  | Member |
| 104 | **Review Management Development** | 14d | 2006-06-19 | 2006-07-06 | 103 |  |  |
| 105 | Creation of Management Dev Distro | 1d | 2006-06-19 | 2006-06-19 | 103 |  | Component Manager |
| 106 | Development Posting | 6d | 2006-06-20 | 2006-06-27 | 105 | start no earlier than 2005-03-30 | Member |
| 107 | Development Review | 4d | 2006-06-28 | 2006-07-03 | 106 |  | Member |
| 108 | Development Final Fixes | 2d | 2006-07-04 | 2006-07-05 | 107 | finish no earlier than 2005-04-06 | Member |
| 109 | Post to Catalog | 1d | 2006-07-06 | 2006-07-06 | 108 |  | Component Manager |
| 110 | **Review Persistence Development** | 14d | 2006-06-19 | 2006-07-06 |  |  |  |
| 111 | Creation of Management Dev Distro | 1d | 2006-06-19 | 2006-06-19 | 103 |  | Component Manager |
| 112 | Development Posting | 6d | 2006-06-20 | 2006-06-27 | 111 | start no earlier than 2005-03-30 | Member |
| 113 | Development Review | 4d | 2006-06-28 | 2006-07-03 | 112 |  | Member |
| 114 | Development Final Fixes | 2d | 2006-07-04 | 2006-07-05 | 113 | finish no earlier than 2005-04-06 | Member |
| 115 | Post to Catalog | 1d | 2006-07-06 | 2006-07-06 | 114 |  | Component Manager |
| 116 | **Scorecard Data Structure** | 26d | 2006-06-01 | 2006-07-06 |  |  |  |
| 117 | Design Posting | 6d | 2006-06-01 | 2006-06-08 |  | start no earlier than 2006-06-01 | Member |
| 118 | Design Review | 4d | 2006-06-09 | 2006-06-14 | 117 | finish no earlier than 2005-03-21 | Member |
| 119 | Design Final Fixes | 2d | 2006-06-15 | 2006-06-16 | 118 |  | Member |
| 120 | Creation of Dev Distro | 1d | 2006-06-19 | 2006-06-19 | 119 |  | Component Manager |
| 121 | Development Posting | 6d | 2006-06-20 | 2006-06-27 | 120 | start no earlier than 2005-03-30 | Member |
| 122 | Development Review | 4d | 2006-06-28 | 2006-07-03 | 121 |  | Member |
| 123 | Development Final Fixes | 2d | 2006-07-04 | 2006-07-05 | 122 | finish no earlier than 2005-04-06 | Member |
| 124 | Post to Catalog | 1d | 2006-07-06 | 2006-07-06 | 123 |  | Component Manager |
| 125 | **Project Phases Management** | 26d | 2006-06-08 | 2006-07-13 |  |  |  |
| 126 | Design Posting | 6d | 2006-06-08 | 2006-06-15 |  | start no earlier than 2006-06-08 | Member |
| 127 | Design Review | 4d | 2006-06-16 | 2006-06-21 | 126 | finish no earlier than 2005-03-21 | Member |
| 128 | Design Final Fixes | 2d | 2006-06-22 | 2006-06-23 | 127 |  | Member |
| 129 | Creation of Dev Distro | 1d | 2006-06-26 | 2006-06-26 | 128 |  | Component Manager |
| 130 | Development Posting | 6d | 2006-06-27 | 2006-07-04 | 129 | start no earlier than 2005-03-30 | Member |
| 131 | Development Review | 4d | 2006-07-05 | 2006-07-10 | 130 |  | Member |
| 132 | Development Final Fixes | 2d | 2006-07-11 | 2006-07-12 | 131 | finish no earlier than 2005-04-06 | Member |
| 133 | Post to Catalog | 1d | 2006-07-13 | 2006-07-13 | 132 |  | Component Manager |
| 134 | **Review Score Calculator** | 26d | 2006-06-08 | 2006-07-13 |  |  |  |
| 135 | Design Posting | 6d | 2006-06-08 | 2006-06-15 |  | start no earlier than 2006-06-08 | Member |
| 136 | Design Review | 4d | 2006-06-16 | 2006-06-21 | 135 | finish no earlier than 2005-03-21 | Member |
| 137 | Design Final Fixes | 2d | 2006-06-22 | 2006-06-23 | 136 |  | Member |
| 138 | Creation of Dev Distro | 1d | 2006-06-26 | 2006-06-26 | 137 |  | Component Manager |
| 139 | Development Posting | 6d | 2006-06-27 | 2006-07-04 | 138 | start no earlier than 2005-03-30 | Member |
| 140 | Development Review | 4d | 2006-07-05 | 2006-07-10 | 139 |  | Member |
| 141 | Development Final Fixes | 2d | 2006-07-11 | 2006-07-12 | 140 | finish no earlier than 2005-04-06 | Member |
| 142 | Post to Catalog | 1d | 2006-07-13 | 2006-07-13 | 141 |  | Component Manager |
| 143 | **Review Score Aggregator** | 26d | 2006-06-08 | 2006-07-13 |  |  |  |
| 144 | Design Posting | 6d | 2006-06-08 | 2006-06-15 |  | start no earlier than 2006-06-08 | Member |
| 145 | Design Review | 4d | 2006-06-16 | 2006-06-21 | 144 | finish no earlier than 2005-03-21 | Member |
| 146 | Design Final Fixes | 2d | 2006-06-22 | 2006-06-23 | 145 |  | Member |
| 147 | Creation of Dev Distro | 1d | 2006-06-26 | 2006-06-26 | 146 |  | Component Manager |
| 148 | Development Posting | 6d | 2006-06-27 | 2006-07-04 | 147 | start no earlier than 2005-03-30 | Member |
| 149 | Development Review | 4d | 2006-07-05 | 2006-07-10 | 148 |  | Member |
| 150 | Development Final Fixes | 2d | 2006-07-11 | 2006-07-12 | 149 | finish no earlier than 2005-04-06 | Member |
| 151 | Post to Catalog | 1d | 2006-07-13 | 2006-07-13 | 150 |  | Component Manager |
| 152 | **Project Management (2 dev)** | 26d | 2006-06-08 | 2006-07-13 |  |  |  |
| 153 | Design Posting | 6d | 2006-06-08 | 2006-06-15 |  | start no earlier than 2006-06-08 | Member |
| 154 | Design Review | 4d | 2006-06-16 | 2006-06-21 | 153 | finish no earlier than 2005-03-21 | Member |
| 155 | Design Final Fixes | 2d | 2006-06-22 | 2006-06-23 | 154 |  | Member |
| 156 | **Project Management Development** | 14d | 2006-06-26 | 2006-07-13 | 155 |  |  |
| 157 | Creation of Management Dev Distro | 1d | 2006-06-26 | 2006-06-26 | 155 |  | Component Manager |
| 158 | Development Posting | 6d | 2006-06-27 | 2006-07-04 | 157 | start no earlier than 2005-03-30 | Member |
| 159 | Development Review | 4d | 2006-07-05 | 2006-07-10 | 158 |  | Member |
| 160 | Development Final Fixes | 2d | 2006-07-11 | 2006-07-12 | 159 | finish no earlier than 2005-04-06 | Member |
| 161 | Post to Catalog | 1d | 2006-07-13 | 2006-07-13 | 160 |  | Component Manager |
| 162 | **Project Persistence Development** | 14d | 2006-06-26 | 2006-07-13 |  |  |  |
| 163 | Creation of Management Dev Distro | 1d | 2006-06-26 | 2006-06-26 | 155 |  | Component Manager |
| 164 | Development Posting | 6d | 2006-06-27 | 2006-07-04 | 163 | start no earlier than 2005-03-30 | Member |
| 165 | Development Review | 4d | 2006-07-05 | 2006-07-10 | 164 |  | Member |
| 166 | Development Final Fixes | 2d | 2006-07-11 | 2006-07-12 | 165 | finish no earlier than 2005-04-06 | Member |
| 167 | Post to Catalog | 1d | 2006-07-13 | 2006-07-13 | 166 |  | Component Manager |
| 168 | **Resource Management** | 26d | 2006-06-08 | 2006-07-13 |  |  |  |
| 169 | Design Posting | 6d | 2006-06-08 | 2006-06-15 |  | start no earlier than 2006-06-08 | Member |
| 170 | Design Review | 4d | 2006-06-16 | 2006-06-21 | 169 | finish no earlier than 2005-03-21 | Member |
| 171 | Design Final Fixes | 2d | 2006-06-22 | 2006-06-23 | 170 |  | Member |
| 172 | **Resource Management Development** | 14d | 2006-06-26 | 2006-07-13 | 171 |  |  |
| 173 | Creation of Management Dev Distro | 1d | 2006-06-26 | 2006-06-26 | 171 |  | Component Manager |
| 174 | Development Posting | 6d | 2006-06-27 | 2006-07-04 | 173 | start no earlier than 2005-03-30 | Member |
| 175 | Development Review | 4d | 2006-07-05 | 2006-07-10 | 174 |  | Member |
| 176 | Development Final Fixes | 2d | 2006-07-11 | 2006-07-12 | 175 | finish no earlier than 2005-04-06 | Member |
| 177 | Post to Catalog | 1d | 2006-07-13 | 2006-07-13 | 176 |  | Component Manager |
| 178 | **Resource Persistence Development** | 14d | 2006-06-26 | 2006-07-13 |  |  |  |
| 179 | Creation of Management Dev Distro | 1d | 2006-06-26 | 2006-06-26 | 171 |  | Component Manager |
| 180 | Development Posting | 6d | 2006-06-27 | 2006-07-04 | 179 | start no earlier than 2005-03-30 | Member |
| 181 | Development Review | 4d | 2006-07-05 | 2006-07-10 | 180 |  | Member |
| 182 | Development Final Fixes | 2d | 2006-07-11 | 2006-07-12 | 181 | finish no earlier than 2005-04-06 | Member |
| 183 | Post to Catalog | 1d | 2006-07-13 | 2006-07-13 | 182 |  | Component Manager |
| 184 | **Deliverable Management** | 26d | 2006-06-08 | 2006-07-13 |  |  |  |
| 185 | Design Posting | 6d | 2006-06-08 | 2006-06-15 |  | start no earlier than 2006-06-08 | Member |
| 186 | Design Review | 4d | 2006-06-16 | 2006-06-21 | 185 | finish no earlier than 2005-03-21 | Member |
| 187 | Design Final Fixes | 2d | 2006-06-22 | 2006-06-23 | 186 |  | Member |
| 188 | **Deliverable Management Development** | 14d | 2006-06-26 | 2006-07-13 |  |  |  |
| 189 | Creation of Management Dev Distro | 1d | 2006-06-26 | 2006-06-26 | 187 |  | Component Manager |
| 190 | Development Posting | 6d | 2006-06-27 | 2006-07-04 | 189 | start no earlier than 2005-03-30 | Member |
| 191 | Development Review | 4d | 2006-07-05 | 2006-07-10 | 190 |  | Member |
| 192 | Development Final Fixes | 2d | 2006-07-11 | 2006-07-12 | 191 | finish no earlier than 2005-04-06 | Member |
| 193 | Post to Catalog | 1d | 2006-07-13 | 2006-07-13 | 192 |  | Component Manager |
| 194 | **Deliverable Persistence Development** | 14d | 2006-06-26 | 2006-07-13 |  |  |  |
| 195 | Creation of Management Dev Distro | 1d | 2006-06-26 | 2006-06-26 | 187 |  | Component Manager |
| 196 | Development Posting | 6d | 2006-06-27 | 2006-07-04 | 195 | start no earlier than 2005-03-30 | Member |
| 197 | Development Review | 4d | 2006-07-05 | 2006-07-10 | 196 |  | Member |
| 198 | Development Final Fixes | 2d | 2006-07-11 | 2006-07-12 | 197 | finish no earlier than 2005-04-06 | Member |
| 199 | Post to Catalog | 1d | 2006-07-13 | 2006-07-13 | 198 |  | Component Manager |
| 200 | **Phase Management** | 26d | 2006-06-15 | 2006-07-20 |  |  |  |
| 201 | Design Posting | 6d | 2006-06-15 | 2006-06-22 |  | start no earlier than 2006-06-15 | Member |
| 202 | Design Review | 4d | 2006-06-23 | 2006-06-28 | 201 | finish no earlier than 2005-03-21 | Member |
| 203 | Design Final Fixes | 2d | 2006-06-29 | 2006-06-30 | 202 |  | Member |
| 204 | **Phase Management Development** | 14d | 2006-07-03 | 2006-07-20 | 203 |  |  |
| 205 | Creation of Management Dev Distro | 1d | 2006-07-03 | 2006-07-03 | 203 |  | Component Manager |
| 206 | Development Posting | 6d | 2006-07-04 | 2006-07-11 | 205 | start no earlier than 2005-03-30 | Member |
| 207 | Development Review | 4d | 2006-07-12 | 2006-07-17 | 206 |  | Member |
| 208 | Development Final Fixes | 2d | 2006-07-18 | 2006-07-19 | 207 | finish no earlier than 2005-04-06 | Member |
| 209 | Post to Catalog | 1d | 2006-07-20 | 2006-07-20 | 208 |  | Component Manager |
| 210 | **Phase Persistence Development** | 14d | 2006-07-03 | 2006-07-20 |  |  |  |
| 211 | Creation of Management Dev Distro | 1d | 2006-07-03 | 2006-07-03 | 203 |  | Component Manager |
| 212 | Development Posting | 6d | 2006-07-04 | 2006-07-11 | 211 | start no earlier than 2005-03-30 | Member |
| 213 | Development Review | 4d | 2006-07-12 | 2006-07-17 | 212 |  | Member |
| 214 | Development Final Fixes | 2d | 2006-07-18 | 2006-07-19 | 213 | finish no earlier than 2005-04-06 | Member |
| 215 | Post to Catalog | 1d | 2006-07-20 | 2006-07-20 | 214 |  | Component Manager |
| 216 | **Project Phase Template** | 26d | 2006-06-15 | 2006-07-20 |  |  |  |
| 217 | Design Posting | 6d | 2006-06-15 | 2006-06-22 |  | start no earlier than 2006-06-15 | Member |
| 218 | Design Review | 4d | 2006-06-23 | 2006-06-28 | 217 | finish no earlier than 2005-03-21 | Member |
| 219 | Design Final Fixes | 2d | 2006-06-29 | 2006-06-30 | 218 |  | Member |
| 220 | Creation of Dev Distro | 1d | 2006-07-03 | 2006-07-03 | 219 |  | Component Manager |
| 221 | Development Posting | 6d | 2006-07-04 | 2006-07-11 | 220 | start no earlier than 2005-03-30 | Member |
| 222 | Development Review | 4d | 2006-07-12 | 2006-07-17 | 221 |  | Member |
| 223 | Development Final Fixes | 2d | 2006-07-18 | 2006-07-19 | 222 | finish no earlier than 2005-04-06 | Member |
| 224 | Post to Catalog | 1d | 2006-07-20 | 2006-07-20 | 223 |  | Component Manager |
| 225 | **Online Review Login (custom)** | 26d | 2006-06-15 | 2006-07-20 |  |  |  |
| 226 | Design Posting | 6d | 2006-06-15 | 2006-06-22 |  | start no earlier than 2006-06-15 | Member |
| 227 | Design Review | 4d | 2006-06-23 | 2006-06-28 | 226 | finish no earlier than 2005-03-21 | Member |
| 228 | Design Final Fixes | 2d | 2006-06-29 | 2006-06-30 | 227 |  | Member |
| 229 | Creation of Dev Distro | 1d | 2006-07-03 | 2006-07-03 | 228 |  | Component Manager |
| 230 | Development Posting | 6d | 2006-07-04 | 2006-07-11 | 229 | start no earlier than 2005-03-30 | Member |
| 231 | Development Review | 4d | 2006-07-12 | 2006-07-17 | 230 |  | Member |
| 232 | Development Final Fixes | 2d | 2006-07-18 | 2006-07-19 | 231 | finish no earlier than 2005-04-06 | Member |
| 233 | Post to Catalog | 1d | 2006-07-20 | 2006-07-20 | 232 |  | Component Manager |
| 234 | **User Project Data Store (custom)** | 26d | 2006-06-15 | 2006-07-20 |  |  |  |
| 235 | Design Posting | 6d | 2006-06-15 | 2006-06-22 |  | start no earlier than 2006-06-15 | Member |
| 236 | Design Review | 4d | 2006-06-23 | 2006-06-28 | 235 | finish no earlier than 2005-03-21 | Member |
| 237 | Design Final Fixes | 2d | 2006-06-29 | 2006-06-30 | 236 |  | Member |
| 238 | Creation of Dev Distro | 1d | 2006-07-03 | 2006-07-03 | 237 |  | Component Manager |
| 239 | Development Posting | 6d | 2006-07-04 | 2006-07-11 | 238 | start no earlier than 2005-03-30 | Member |
| 240 | Development Review | 4d | 2006-07-12 | 2006-07-17 | 239 |  | Member |
| 241 | Development Final Fixes | 2d | 2006-07-18 | 2006-07-19 | 240 | finish no earlier than 2005-04-06 | Member |
| 242 | Post to Catalog | 1d | 2006-07-20 | 2006-07-20 | 241 |  | Component Manager |
| 243 | **Online Review Ajax Support (custom)** | 26d | 2006-06-15 | 2006-07-20 |  |  |  |
| 244 | Design Posting | 6d | 2006-06-15 | 2006-06-22 |  | start no earlier than 2006-06-15 | Member |
| 245 | Design Review | 4d | 2006-06-23 | 2006-06-28 | 244 | finish no earlier than 2005-03-21 | Member |
| 246 | Design Final Fixes | 2d | 2006-06-29 | 2006-06-30 | 245 |  | Member |
| 247 | Creation of Dev Distro | 1d | 2006-07-03 | 2006-07-03 | 246 |  | Component Manager |
| 248 | Development Posting | 6d | 2006-07-04 | 2006-07-11 | 247 | start no earlier than 2005-03-30 | Member |
| 249 | Development Review | 4d | 2006-07-12 | 2006-07-17 | 248 |  | Member |
| 250 | Development Final Fixes | 2d | 2006-07-18 | 2006-07-19 | 249 | finish no earlier than 2005-04-06 | Member |
| 251 | Post to Catalog | 1d | 2006-07-20 | 2006-07-20 | 250 |  | Component Manager |
| 252 | **Online Review Deliverables (custom)** | 26d | 2006-06-15 | 2006-07-20 |  |  |  |
| 253 | Design Posting | 6d | 2006-06-15 | 2006-06-22 |  | start no earlier than 2006-06-15 | Member |
| 254 | Design Review | 4d | 2006-06-23 | 2006-06-28 | 253 | finish no earlier than 2005-03-21 | Member |
| 255 | Design Final Fixes | 2d | 2006-06-29 | 2006-06-30 | 254 |  | Member |
| 256 | Creation of Dev Distro | 1d | 2006-07-03 | 2006-07-03 | 255 |  | Component Manager |
| 257 | Development Posting | 6d | 2006-07-04 | 2006-07-11 | 256 | start no earlier than 2005-03-30 | Member |
| 258 | Development Review | 4d | 2006-07-12 | 2006-07-17 | 257 |  | Member |
| 259 | Development Final Fixes | 2d | 2006-07-18 | 2006-07-19 | 258 | finish no earlier than 2005-04-06 | Member |
| 260 | Post to Catalog | 1d | 2006-07-20 | 2006-07-20 | 259 |  | Component Manager |
| 261 | **Online Review Phases (custom)** | 26d | 2006-06-22 | 2006-07-27 |  |  |  |
| 262 | Design Posting | 6d | 2006-06-22 | 2006-06-29 |  | start no earlier than 2006-06-22 | Member |
| 263 | Design Review | 4d | 2006-06-30 | 2006-07-05 | 262 | finish no earlier than 2005-03-21 | Member |
| 264 | Design Final Fixes | 2d | 2006-07-06 | 2006-07-07 | 263 |  | Member |
| 265 | Creation of Dev Distro | 1d | 2006-07-10 | 2006-07-10 | 264 |  | Component Manager |
| 266 | Development Posting | 6d | 2006-07-11 | 2006-07-18 | 265 | start no earlier than 2005-03-30 | Member |
| 267 | Development Review | 4d | 2006-07-19 | 2006-07-24 | 266 |  | Member |
| 268 | Development Final Fixes | 2d | 2006-07-25 | 2006-07-26 | 267 | finish no earlier than 2005-04-06 | Member |
| 269 | Post to Catalog | 1d | 2006-07-27 | 2006-07-27 | 268 |  | Component Manager |
| 270 | **Online Review Web Elements (custom)** | 26d | 2006-06-22 | 2006-07-27 |  |  |  |
| 271 | Design Posting | 6d | 2006-06-22 | 2006-06-29 |  | start no earlier than 2006-06-22 | Member |
| 272 | Design Review | 4d | 2006-06-30 | 2006-07-05 | 271 | finish no earlier than 2005-03-21 | Member |
| 273 | Design Final Fixes | 2d | 2006-07-06 | 2006-07-07 | 272 |  | Member |
| 274 | Creation of Dev Distro | 1d | 2006-07-10 | 2006-07-10 | 273 |  | Component Manager |
| 275 | Development Posting | 6d | 2006-07-11 | 2006-07-18 | 274 | start no earlier than 2005-03-30 | Member |
| 276 | Development Review | 4d | 2006-07-19 | 2006-07-24 | 275 |  | Member |
| 277 | Development Final Fixes | 2d | 2006-07-25 | 2006-07-26 | 276 | finish no earlier than 2005-04-06 | Member |
| 278 | Post to Catalog | 1d | 2006-07-27 | 2006-07-27 | 277 |  | Component Manager |
| 279 | **Auto Pilot** | 26d | 2006-06-22 | 2006-07-27 |  |  |  |
| 280 | Design Posting | 6d | 2006-06-22 | 2006-06-29 |  | start no earlier than 2006-06-22 | Member |
| 281 | Design Review | 4d | 2006-06-30 | 2006-07-05 | 280 | finish no earlier than 2005-03-21 | Member |
| 282 | Design Final Fixes | 2d | 2006-07-06 | 2006-07-07 | 281 |  | Member |
| 283 | Creation of Dev Distro | 1d | 2006-07-10 | 2006-07-10 | 282 |  | Component Manager |
| 284 | Development Posting | 6d | 2006-07-11 | 2006-07-18 | 283 | start no earlier than 2005-03-30 | Member |
| 285 | Development Review | 4d | 2006-07-19 | 2006-07-24 | 284 |  | Member |
| 286 | Development Final Fixes | 2d | 2006-07-25 | 2006-07-26 | 285 | finish no earlier than 2005-04-06 | Member |
| 287 | Post to Catalog | 1d | 2006-07-27 | 2006-07-27 | 286 |  | Component Manager |
| 288 | **Auto Screening Tool** | 26d | 2006-06-22 | 2006-07-27 |  |  |  |
| 289 | Design Posting | 6d | 2006-06-22 | 2006-06-29 |  | start no earlier than 2006-06-22 | Member |
| 290 | Design Review | 4d | 2006-06-30 | 2006-07-05 | 289 | finish no earlier than 2005-03-21 | Member |
| 291 | Design Final Fixes | 2d | 2006-07-06 | 2006-07-07 | 290 |  | Member |
| 292 | Creation of Dev Distro | 1d | 2006-07-10 | 2006-07-10 | 291 |  | Component Manager |
| 293 | Development Posting | 6d | 2006-07-11 | 2006-07-18 | 292 | start no earlier than 2005-03-30 | Member |
| 294 | Development Review | 4d | 2006-07-19 | 2006-07-24 | 293 |  | Member |
| 295 | Development Final Fixes | 2d | 2006-07-25 | 2006-07-26 | 294 | finish no earlier than 2005-04-06 | Member |
| 296 | Post to Catalog | 1d | 2006-07-27 | 2006-07-27 | 295 |  | Component Manager |
| 297 | **Auto Screening Management** | 26d | 2006-06-22 | 2006-07-27 |  |  |  |
| 298 | Design Posting | 6d | 2006-06-22 | 2006-06-29 |  | start no earlier than 2006-06-22 | Member |
| 299 | Design Review | 4d | 2006-06-30 | 2006-07-05 | 298 | finish no earlier than 2005-03-21 | Member |
| 300 | Design Final Fixes | 2d | 2006-07-06 | 2006-07-07 | 299 |  | Member |
| 301 | Creation of Dev Distro | 1d | 2006-07-10 | 2006-07-10 | 300 |  | Component Manager |
| 302 | Development Posting | 6d | 2006-07-11 | 2006-07-18 | 301 | start no earlier than 2005-03-30 | Member |
| 303 | Development Review | 4d | 2006-07-19 | 2006-07-24 | 302 |  | Member |
| 304 | Development Final Fixes | 2d | 2006-07-25 | 2006-07-26 | 303 | finish no earlier than 2005-04-06 | Member |
| 305 | Post to Catalog | 1d | 2006-07-27 | 2006-07-27 | 304 |  | Component Manager |

Changed:

| ID | Task | Start | Finish | Duration | Complete | Total float | Predecessors | Other |
| --- | --- | --- | --- | --- | --- | --- | --- | --- |
| 1 | **TopCoder Online Review/Scorecard Project** | 2004-01-27 A → 2005-06-29 A (+519d) | 2006-09-07 → 2006-10-05 (+28d) | 683d? → 332d? | 23% → 11% |  |  |  |
| 27 | **Application Architecture** |  | 2006-05-30 → 2006-06-06 (+7d) | 30.5d → 35.5d | 39% → 66% | 72d → 87d |  |  |
| 31 | **UML Diagrams** |  | 2006-05-28 → 2006-06-02 (+5d) | 27d → 32d | 20% → 62% | 74d → 89d |  |  |
| 32 | Component Sequence Diagrams |  | 2006-05-28 → 2006-06-01 A (+4d) | 27d → 31d | 25% → 100% | 74d → none |  | constraint finish no earlier than 2006-05-28 → finish no earlier than 2006-06-01 |
| 33 | Component Interface Diagram |  | 2006-05-28 → 2006-06-02 (+5d) | 20d → 25d | 15% → 12% | 74d → 84d |  | constraint finish no earlier than 2006-05-28 → finish no earlier than 2006-06-02 |
| 34 | Component Diagram | 2006-05-25 A | 2006-05-28 A |  | 0% → 100% | 74d → none |  |  |
| 35 | Component Specifications | 2006-05-22 → 2006-05-29 (+7d) | 2006-05-26 → 2006-06-02 (+7d) |  |  | 72d → 82d |  | constraint finish no earlier than 2006-05-26 → finish no earlier than 2006-06-02 |
| 36 | Application Design Specification | 2006-05-29 → 2006-06-05 (+7d) | 2006-05-29 → 2006-06-05 (+7d) |  |  | 72d → 82d |  | constraint finish no earlier than 2006-05-29 → finish no earlier than 2006-06-02 |
| 37 | Review | 2006-05-30 → 2006-06-06 (+7d) | 2006-05-30 → 2006-06-06 (+7d) |  |  | 72d → 82d |  |  |
| 38 | **Component Production** |  | 2006-07-06 → 2006-07-27 (+21d) | 31d → 46d |  |  |  |  |
| 75 | **Scorecard Management (2 dev)** |  |  |  |  | 0d → 15d |  | was named Components Round 2 |
| 81 | Development Posting |  |  |  |  | 0d → 15d | 95 → 80 |  |
| 95 | Creation of Dev Distro |  |  |  |  | 0d → 15d | 78 → 94 |  |
| 306 | **Assembly Competitions** | 2004-01-27 → 2006-07-07 (+892d) | 2006-07-27 → 2006-08-24 (+28d) | 653d → 35d |  |  |  |  |
| 307 | **Setup** | 2004-01-27 → 2006-07-07 (+892d) | 2006-07-06 → 2006-07-28 (+22d) | 638d → 16d |  | 15d → 10d |  |  |
| 308 | Divide Use Cases for Competitions | 2006-06-16 → 2006-07-07 (+21d) | 2006-06-16 → 2006-07-07 (+21d) |  |  | 29d → 34d |  |  |
| 309 | TopCoder Website Content Creation | 2006-06-30 → 2006-07-21 (+21d) | 2006-07-06 → 2006-07-27 (+21d) |  |  | 15d → 20d |  |  |
| 310 | TopCoder Website Informaiton Posted | 2006-06-23 → 2006-07-14 (+21d) | 2006-06-23 → 2006-07-14 (+21d) |  |  | 0d → 5d |  |  |
| 311 | Package Components | 2004-01-27 → 2006-07-28 (+913d) | 2004-01-27 → 2006-07-28 (+913d) |  |  | 633d → 0d | none → 38 |  |
| 312 | **Test Case Development** | 2006-06-26 → 2006-07-17 (+21d) | 2006-06-30 → 2006-07-21 (+21d) |  |  | 0d → 5d |  |  |
| 313 | Submit tests | 2006-06-26 → 2006-07-17 (+21d) | 2006-06-29 → 2006-07-20 (+21d) |  |  | 0d → 5d |  |  |
| 314 | Screen test cases | 2006-06-30 → 2006-07-21 (+21d) | 2006-06-30 → 2006-07-21 (+21d) |  |  | 0d → 5d |  |  |
| 315 | Team Formation | 2006-06-26 → 2006-07-17 (+21d) | 2006-07-07 → 2006-07-28 (+21d) |  |  | 14d → 19d |  |  |
| 316 | **Development** | 2006-07-03 → 2006-07-31 (+28d) | 2006-07-27 → 2006-08-24 (+28d) |  |  |  |  |  |
| 317 | **Opening Round** | 2006-07-03 → 2006-07-31 (+28d) | 2006-07-27 → 2006-08-24 (+28d) |  |  |  |  |  |
| 318 | **Team Development** | 2006-07-03 → 2006-07-31 (+28d) | 2006-07-10 → 2006-08-07 (+28d) |  |  |  |  |  |
| 319 | **Development of Use Cases** | 2006-07-03 → 2006-07-31 (+28d) | 2006-07-10 → 2006-08-07 (+28d) |  |  |  |  |  |
| 320 | Create Unit Tests | 2006-07-03 → 2006-07-31 (+28d) | 2006-07-05 → 2006-08-02 (+28d) |  |  |  |  |  |
| 321 | Convert Prototype | 2006-07-03 → 2006-07-31 (+28d) | 2006-07-05 → 2006-08-02 (+28d) |  |  |  |  |  |
| 322 | Configure components | 2006-07-03 → 2006-07-31 (+28d) | 2006-07-05 → 2006-08-02 (+28d) |  |  |  |  |  |
| 323 | Test | 2006-07-06 → 2006-08-03 (+28d) | 2006-07-10 → 2006-08-07 (+28d) |  |  |  |  |  |
| 324 | **Test case challenge** | 2006-07-11 → 2006-08-08 (+28d) | 2006-07-12 → 2006-08-09 (+28d) |  |  |  |  |  |
| 325 | Submit Challenges | 2006-07-11 → 2006-08-08 (+28d) | 2006-07-11 → 2006-08-08 (+28d) |  |  |  |  |  |
| 326 | Appeals response | 2006-07-12 → 2006-08-09 (+28d) | 2006-07-12 → 2006-08-09 (+28d) |  |  |  |  |  |
| 327 | **Review** | 2006-07-13 → 2006-08-10 (+28d) | 2006-07-27 → 2006-08-24 (+28d) |  |  |  |  |  |
| 328 | Score Testcases | 2006-07-13 → 2006-08-10 (+28d) | 2006-07-13 → 2006-08-10 (+28d) |  |  |  |  |  |
| 329 | Score Submissions | 2006-07-13 → 2006-08-10 (+28d) | 2006-07-14 → 2006-08-11 (+28d) |  |  |  |  |  |
| 330 | Review Code | 2006-07-17 → 2006-08-14 (+28d) | 2006-07-18 → 2006-08-15 (+28d) |  |  |  |  |  |
| 331 | Appeals | 2006-07-19 → 2006-08-16 (+28d) | 2006-07-19 → 2006-08-16 (+28d) |  |  |  |  |  |
| 332 | Appeals Response | 2006-07-20 → 2006-08-17 (+28d) | 2006-07-20 → 2006-08-17 (+28d) |  |  |  |  |  |
| 333 | Final Fixes | 2006-07-21 → 2006-08-18 (+28d) | 2006-07-25 → 2006-08-22 (+28d) |  |  |  |  |  |
| 334 | Final Review | 2006-07-26 → 2006-08-23 (+28d) | 2006-07-26 → 2006-08-23 (+28d) |  |  |  |  |  |
| 335 | PM Review/Certification | 2006-07-27 → 2006-08-24 (+28d) | 2006-07-27 → 2006-08-24 (+28d) |  |  |  |  |  |
| 336 | **Deployment** | 2006-07-28 → 2006-08-25 (+28d) | 2006-08-15 → 2006-09-12 (+28d) |  |  |  |  |  |
| 337 | Deployment | 2006-07-28 → 2006-08-25 (+28d) | 2006-08-02 → 2006-08-30 (+28d) |  |  |  |  |  |
| 338 | **Testing Iteration** | 2006-08-03 → 2006-08-31 (+28d) | 2006-08-15 → 2006-09-12 (+28d) |  |  |  |  |  |
| 339 | Test Plan Execution | 2006-08-03 → 2006-08-31 (+28d) | 2006-08-07 → 2006-09-04 (+28d) |  |  |  |  |  |
| 340 | User Acceptance Testing | 2006-08-08 → 2006-09-05 (+28d) | 2006-08-14 → 2006-09-11 (+28d) |  |  |  |  |  |
| 341 | PM Certification | 2006-08-15 → 2006-09-12 (+28d) | 2006-08-15 → 2006-09-12 (+28d) |  |  |  |  |  |
| 342 | **Support** | 2006-07-28 → 2006-08-25 (+28d) | 2006-09-07 → 2006-10-05 (+28d) |  |  |  |  |  |
| 343 | Capture DRs | 2006-07-28 → 2006-08-25 (+28d) | 2006-08-17 → 2006-09-14 (+28d) |  |  |  |  |  |
| 344 | Release Fix | 2006-08-18 → 2006-09-15 (+28d) | 2006-09-07 → 2006-10-05 (+28d) |  |  |  |  |  |
| 345 | Send out how-to info to users | 2006-07-28 → 2006-08-25 (+28d) | 2006-07-28 → 2006-08-25 (+28d) |  |  |  |  |  |
| 346 | Beta Release to internal users | 2006-08-16 → 2006-09-13 (+28d) | 2006-08-16 → 2006-09-13 (+28d) |  |  |  |  |  |

## Version 8 (saved 2006-06-14)

Note of the change: updated project plan and requirements document

Last finish 2006-10-05 → 2006-09-29 (-6d). Complete tasks 26 → 33.

Added:

| ID | Task | Duration | Start | Finish | Predecessors | Constraint | Resources |
| --- | --- | --- | --- | --- | --- | --- | --- |
| 182 | **Search Builder 1.3** | 26d | 2006-06-08 | 2006-07-13 |  |  |  |
| 289 | **Scorecard Admin Assembly** | 29d | 2006-06-26 | 2006-08-03 |  |  |  |
| 292 | TopCoder Website Content Creation/Updates | 3d | 2006-06-28 | 2006-06-30 | 82FS-10d, 66FS-10d | finish no earlier than 2006-06-30 |  |
| 318 | **Project Review Assembly** | 35d | 2006-06-30 | 2006-08-17 |  |  |  |
| 319 | **Setup** | 16d | 2006-06-30 | 2006-07-21 |  |  |  |
| 320 | Divide Spec and Arch Deliverables | 1d | 2006-06-30 | 2006-06-30 | 38FS-15d | start no earlier than 2006-03-29 |  |
| 322 | TopCoder Website Informaiton Posted | 1d | 2006-07-14 | 2006-07-14 | 38FS-5d | start no earlier than 2006-05-17 |  |
| 323 | Package Components | 1d | 2006-07-21 | 2006-07-21 | 38 |  |  |
| 324 | **Test Case Development** | 7d | 2006-07-17 | 2006-07-25 |  |  |  |
| 325 | Submit tests | 6d | 2006-07-17 | 2006-07-24 | 322 | start no earlier than 2006-03-22 | test case participants |
| 326 | Screen test cases | 1d | 2006-07-25 | 2006-07-25 | 325 |  |  |
| 327 | Team Formation | 10d | 2006-07-17 | 2006-07-28 | 322 |  |  |
| 328 | **Development** | 19d | 2006-07-24 | 2006-08-17 |  |  |  |
| 329 | **Opening Round** | 19d | 2006-07-24 | 2006-08-17 |  |  |  |
| 330 | **Team Development** | 7d | 2006-07-24 | 2006-08-01 |  |  |  |
| 331 | **Development of Use Cases** | 7d | 2006-07-24 | 2006-08-01 |  |  | All Teams |
| 332 | Create Unit Tests | 4d | 2006-07-24 | 2006-07-27 | 323 | start no earlier than 2006-03-28 |  |
| 333 | Convert Prototype | 4d | 2006-07-24 | 2006-07-27 | 323 | start no earlier than 2006-03-29 |  |
| 334 | Configure components | 4d | 2006-07-24 | 2006-07-27 | 323 | start no earlier than 2006-03-29 |  |
| 335 | Test | 3d | 2006-07-28 | 2006-08-01 | 332, 333, 334 |  |  |
| 336 | **Test case challenge** | 2d | 2006-08-02 | 2006-08-03 | 335 |  | All Captains |
| 337 | Submit Challenges | 1d | 2006-08-02 | 2006-08-02 |  |  |  |
| 338 | Appeals response | 1d | 2006-08-03 | 2006-08-03 | 337 |  | Reviewer3; Reviewer2; Reviewer1; Assembly Manager; Architect |
| 339 | **Review** | 10d | 2006-08-04 | 2006-08-17 |  |  |  |
| 340 | Score Testcases | 1d | 2006-08-04 | 2006-08-04 | 336 |  | DE |
| 341 | Score Submissions | 2d | 2006-08-04 | 2006-08-07 | 336 |  | DE |
| 342 | Review Code | 2d | 2006-08-08 | 2006-08-09 | 340, 341 |  | Review Team |
| 343 | Appeals | 1d | 2006-08-10 | 2006-08-10 | 342 |  | Review Team |
| 344 | Appeals Response | 1d | 2006-08-11 | 2006-08-11 | 343 |  | Review Team |
| 345 | Final Fixes | 3d | 2006-08-14 | 2006-08-16 | 344 |  |  |
| 346 | Final Review | 1d | 2006-08-17 | 2006-08-17 | 345 |  |  |
| 347 | **Project Admin Assembly** | 35d | 2006-06-30 | 2006-08-17 |  |  |  |
| 348 | **Setup** | 16d | 2006-06-30 | 2006-07-21 |  |  |  |
| 349 | Divide Spec and Arch Deliverables | 1d | 2006-06-30 | 2006-06-30 | 38FS-15d | start no earlier than 2006-03-29 |  |
| 350 | TopCoder Website Content Creation | 5d | 2006-07-07 | 2006-07-13 | 38FS-10d |  |  |
| 351 | TopCoder Website Informaiton Posted | 1d | 2006-07-14 | 2006-07-14 | 38FS-5d | start no earlier than 2006-05-17 |  |
| 352 | Package Components | 1d | 2006-07-21 | 2006-07-21 | 38 |  |  |
| 353 | **Test Case Development** | 7d | 2006-07-17 | 2006-07-25 |  |  |  |
| 354 | Submit tests | 6d | 2006-07-17 | 2006-07-24 | 351 | start no earlier than 2006-03-22 | test case participants |
| 355 | Screen test cases | 1d | 2006-07-25 | 2006-07-25 | 354 |  |  |
| 356 | Team Formation | 10d | 2006-07-17 | 2006-07-28 | 351 |  |  |
| 357 | **Development** | 19d | 2006-07-24 | 2006-08-17 |  |  |  |
| 358 | **Opening Round** | 19d | 2006-07-24 | 2006-08-17 |  |  |  |
| 359 | **Team Development** | 7d | 2006-07-24 | 2006-08-01 |  |  |  |
| 360 | **Development of Use Cases** | 7d | 2006-07-24 | 2006-08-01 |  |  | All Teams |
| 361 | Create Unit Tests | 4d | 2006-07-24 | 2006-07-27 | 352 | start no earlier than 2006-03-28 |  |
| 362 | Convert Prototype | 4d | 2006-07-24 | 2006-07-27 | 352 | start no earlier than 2006-03-29 |  |
| 363 | Configure components | 4d | 2006-07-24 | 2006-07-27 | 352 | start no earlier than 2006-03-29 |  |
| 364 | Test | 3d | 2006-07-28 | 2006-08-01 | 361, 362, 363 |  |  |
| 365 | **Test case challenge** | 2d | 2006-08-02 | 2006-08-03 | 364 |  | All Captains |
| 366 | Submit Challenges | 1d | 2006-08-02 | 2006-08-02 |  |  |  |
| 367 | Appeals response | 1d | 2006-08-03 | 2006-08-03 | 366 |  | Reviewer3; Reviewer2; Reviewer1; Assembly Manager; Architect |
| 368 | **Review** | 10d | 2006-08-04 | 2006-08-17 |  |  |  |
| 369 | Score Testcases | 1d | 2006-08-04 | 2006-08-04 | 365 |  | DE |
| 370 | Score Submissions | 2d | 2006-08-04 | 2006-08-07 | 365 |  | DE |
| 371 | Review Code | 2d | 2006-08-08 | 2006-08-09 | 369, 370 |  | Review Team |
| 372 | Appeals | 1d | 2006-08-10 | 2006-08-10 | 371 |  | Review Team |
| 373 | Appeals Response | 1d | 2006-08-11 | 2006-08-11 | 372 |  | Review Team |
| 374 | Final Fixes | 3d | 2006-08-14 | 2006-08-16 | 373 |  |  |
| 375 | Final Review | 1d | 2006-08-17 | 2006-08-17 | 374 |  |  |
| 376 | **Project Details Assembly** | 35d | 2006-06-30 | 2006-08-17 |  |  |  |
| 377 | **Setup** | 16d | 2006-06-30 | 2006-07-21 |  |  |  |
| 378 | Divide Spec and Arch Deliverables | 1d | 2006-06-30 | 2006-06-30 | 38FS-15d | start no earlier than 2006-03-29 |  |
| 379 | TopCoder Website Content Creation | 5d | 2006-07-07 | 2006-07-13 | 38FS-10d |  |  |
| 380 | TopCoder Website Informaiton Posted | 1d | 2006-07-14 | 2006-07-14 | 38FS-5d | start no earlier than 2006-05-17 |  |
| 381 | Package Components | 1d | 2006-07-21 | 2006-07-21 | 38 |  |  |
| 382 | **Test Case Development** | 7d | 2006-07-17 | 2006-07-25 |  |  |  |
| 383 | Submit tests | 6d | 2006-07-17 | 2006-07-24 | 380 | start no earlier than 2006-03-22 | test case participants |
| 384 | Screen test cases | 1d | 2006-07-25 | 2006-07-25 | 383 |  |  |
| 385 | Team Formation | 10d | 2006-07-17 | 2006-07-28 | 380 |  |  |
| 386 | **Development** | 19d | 2006-07-24 | 2006-08-17 |  |  |  |
| 387 | **Opening Round** | 19d | 2006-07-24 | 2006-08-17 |  |  |  |
| 388 | **Team Development** | 7d | 2006-07-24 | 2006-08-01 |  |  |  |
| 389 | **Development of Use Cases** | 7d | 2006-07-24 | 2006-08-01 |  |  | All Teams |
| 390 | Create Unit Tests | 4d | 2006-07-24 | 2006-07-27 | 381 | start no earlier than 2006-03-28 |  |
| 391 | Convert Prototype | 4d | 2006-07-24 | 2006-07-27 | 381 | start no earlier than 2006-03-29 |  |
| 393 | Test | 3d | 2006-07-28 | 2006-08-01 | 390, 391 |  |  |
| 394 | **Test case challenge** | 2d | 2006-08-02 | 2006-08-03 | 393 |  | All Captains |
| 395 | Submit Challenges | 1d | 2006-08-02 | 2006-08-02 |  |  |  |
| 396 | Appeals response | 1d | 2006-08-03 | 2006-08-03 | 395 |  | Reviewer3; Reviewer2; Reviewer1; Assembly Manager; Architect |
| 397 | **Review** | 10d | 2006-08-04 | 2006-08-17 |  |  |  |
| 398 | Score Testcases | 1d | 2006-08-04 | 2006-08-04 | 394 |  | DE |
| 399 | Score Submissions | 2d | 2006-08-04 | 2006-08-07 | 394 |  | DE |
| 400 | Review Code | 2d | 2006-08-08 | 2006-08-09 | 398, 399 |  | Review Team |
| 401 | Appeals | 1d | 2006-08-10 | 2006-08-10 | 400 |  | Review Team |
| 402 | Appeals Response | 1d | 2006-08-11 | 2006-08-11 | 401 |  | Review Team |
| 403 | Final Fixes | 3d | 2006-08-14 | 2006-08-16 | 402 |  |  |
| 404 | Final Review | 1d | 2006-08-17 | 2006-08-17 | 403 |  |  |

Removed: 66 Search Builder - Bug Fix; 116 Scorecard Data Structure; 117 Design Posting; 118 Design Review; 119 Design Final Fixes; 120 Creation of Dev Distro; 121 Development Posting; 122 Development Review; 123 Development Final Fixes; 124 Post to Catalog; 270 Online Review Web Elements (custom); 271 Design Posting; 272 Design Review; 273 Design Final Fixes; 274 Creation of Dev Distro; 275 Development Posting; 276 Development Review; 277 Development Final Fixes; 278 Post to Catalog; 335 PM Review/Certification

Changed:

| ID | Task | Start | Finish | Duration | Complete | Total float | Other |
| --- | --- | --- | --- | --- | --- | --- | --- |
| 1 | **TopCoder Online Review/Scorecard Project** |  | 2006-10-05 → 2006-09-29 (-6d) | 332d? → 327d? | 11% → 15% |  |  |
| 27 | **Application Architecture** |  |  |  | 66% → 99% | 87d → 82d |  |
| 31 | **UML Diagrams** |  | 2006-06-02 A |  | 62% → 100% | 89d → none |  |
| 33 | Component Interface Diagram |  | 2006-06-02 A |  | 12% → 100% | 84d → none |  |
| 34 | Component Diagram |  | 2006-05-28 A → 2006-05-26 A (-2d) |  |  |  |  |
| 35 | Component Specifications | 2006-05-29 A | 2006-06-02 A |  | 0% → 100% | 82d → none |  |
| 36 | Application Design Specification | 2006-06-05 A | 2006-06-05 A |  | 0% → 100% | 82d → none |  |
| 38 | **Component Production** | 2006-05-25 A | 2006-07-27 → 2006-07-20 (-7d) | 46d → 41d | 0% → 4% |  |  |
| 39 | **File Upload 2.0** | 2006-05-25 A | 2006-06-29 → 2006-07-04 (+5d) | 26d → 29d | 0% → 43% | 20d → 12d |  |
| 40 | Design Posting | 2006-05-25 A | 2006-06-01 A |  | 0% → 100% | 20d → none |  |
| 41 | Design Review | 2006-06-02 A | 2006-06-07 → 2006-06-09 A (+2d) | 4d → 6d | 0% → 100% | 20d → none |  |
| 42 | Design Final Fixes | 2006-06-08 → 2006-06-12 (+4d) | 2006-06-09 → 2006-06-13 (+4d) |  |  | 20d → 13d |  |
| 43 | Creation of Dev Distro | 2006-06-12 → 2006-06-15 (+3d) | 2006-06-12 → 2006-06-15 (+3d) |  |  | 20d → 12d | constraint none → finish no earlier than 2006-06-15 |
| 44 | Development Posting | 2006-06-13 → 2006-06-16 (+3d) | 2006-06-20 → 2006-06-23 (+3d) |  |  | 20d → 12d |  |
| 45 | Development Review | 2006-06-21 → 2006-06-26 (+5d) | 2006-06-26 → 2006-06-29 (+3d) |  |  | 20d → 12d |  |
| 46 | Development Final Fixes | 2006-06-27 → 2006-06-30 (+3d) | 2006-06-28 → 2006-07-03 (+5d) |  |  | 20d → 12d |  |
| 47 | Post to Catalog | 2006-06-29 → 2006-07-04 (+5d) | 2006-06-29 → 2006-07-04 (+5d) |  |  | 20d → 12d |  |
| 48 | **Cached Web Element Tag** | 2006-05-25 A |  |  | 0% → 23% | 20d → 15d |  |
| 49 | Design Posting | 2006-05-25 A | 2006-06-01 A |  | 0% → 100% | 20d → none |  |
| 57 | **Database Abstraction 1.1** | 2006-05-25 A |  |  | 0% → 23% | 20d → 15d |  |
| 58 | Design Posting | 2006-05-25 A | 2006-06-01 A |  | 0% → 100% | 20d → none |  |
| 107 | **Project Phases 2.0** |  |  |  |  | 10d → 5d | was named Project Phases Management |
| 183 | Design Posting | 2006-05-25 → 2006-06-08 (+14d) | 2006-06-01 → 2006-06-15 (+14d) |  |  | 20d → 44d | constraint start no earlier than 2006-05-25 → start no earlier than 2006-06-08 |
| 184 | Design Review | 2006-06-02 → 2006-06-16 (+14d) | 2006-06-07 → 2006-06-21 (+14d) |  |  | 20d → 44d |  |
| 185 | Design Final Fixes | 2006-06-08 → 2006-06-22 (+14d) | 2006-06-09 → 2006-06-23 (+14d) |  |  | 20d → 44d |  |
| 186 | Creation of Dev Distro | 2006-06-12 → 2006-06-26 (+14d) | 2006-06-12 → 2006-06-26 (+14d) |  |  | 20d → 44d |  |
| 187 | Development Posting | 2006-06-13 → 2006-06-27 (+14d) | 2006-06-20 → 2006-07-04 (+14d) |  |  | 20d → 44d |  |
| 188 | Development Review | 2006-06-21 → 2006-07-05 (+14d) | 2006-06-26 → 2006-07-10 (+14d) |  |  | 20d → 44d |  |
| 189 | Development Final Fixes | 2006-06-27 → 2006-07-11 (+14d) | 2006-06-28 → 2006-07-12 (+14d) |  |  | 20d → 44d |  |
| 190 | Post to Catalog | 2006-06-29 → 2006-07-13 (+14d) | 2006-06-29 → 2006-07-13 (+14d) |  |  | 20d → 44d |  |
| 191 | **Phase Management** | 2006-06-15 → 2006-06-08 (-7d) | 2006-07-20 → 2006-07-13 (-7d) |  |  |  |  |
| 192 | Design Posting | 2006-06-15 → 2006-06-08 (-7d) | 2006-06-22 → 2006-06-15 (-7d) |  |  | 5d → 44d | constraint start no earlier than 2006-06-15 → start no earlier than 2006-06-08 |
| 193 | Design Review | 2006-06-23 → 2006-06-16 (-7d) | 2006-06-28 → 2006-06-21 (-7d) |  |  | 5d → 44d |  |
| 194 | Design Final Fixes | 2006-06-29 → 2006-06-22 (-7d) | 2006-06-30 → 2006-06-23 (-7d) |  |  | 5d → 44d |  |
| 195 | **Phase Management Development** | 2006-07-03 → 2006-06-26 (-7d) | 2006-07-20 → 2006-07-13 (-7d) |  |  |  |  |
| 196 | Creation of Management Dev Distro | 2006-07-03 → 2006-06-26 (-7d) | 2006-07-03 → 2006-06-26 (-7d) |  |  | 5d → 44d |  |
| 197 | Development Posting | 2006-07-04 → 2006-06-27 (-7d) | 2006-07-11 → 2006-07-04 (-7d) |  |  | 5d → 44d |  |
| 198 | Development Review | 2006-07-12 → 2006-07-05 (-7d) | 2006-07-17 → 2006-07-10 (-7d) |  |  | 5d → 44d |  |
| 199 | Development Final Fixes | 2006-07-18 → 2006-07-11 (-7d) | 2006-07-19 → 2006-07-12 (-7d) |  |  | 5d → 44d |  |
| 200 | Post to Catalog | 2006-07-20 → 2006-07-13 (-7d) | 2006-07-20 → 2006-07-13 (-7d) |  |  | 5d → 44d |  |
| 201 | **Phase Persistence Development** | 2006-07-03 → 2006-06-26 (-7d) | 2006-07-20 → 2006-07-13 (-7d) |  |  |  |  |
| 202 | Creation of Management Dev Distro | 2006-07-03 → 2006-06-26 (-7d) | 2006-07-03 → 2006-06-26 (-7d) |  |  | 5d → 44d |  |
| 203 | Development Posting | 2006-07-04 → 2006-06-27 (-7d) | 2006-07-11 → 2006-07-04 (-7d) |  |  | 5d → 44d |  |
| 204 | Development Review | 2006-07-12 → 2006-07-05 (-7d) | 2006-07-17 → 2006-07-10 (-7d) |  |  | 5d → 44d |  |
| 205 | Development Final Fixes | 2006-07-18 → 2006-07-11 (-7d) | 2006-07-19 → 2006-07-12 (-7d) |  |  | 5d → 44d |  |
| 206 | Post to Catalog | 2006-07-20 → 2006-07-13 (-7d) | 2006-07-20 → 2006-07-13 (-7d) |  |  | 5d → 44d |  |
| 207 | **Project Phase Template** | 2006-06-15 → 2006-06-08 (-7d) | 2006-07-20 → 2006-07-13 (-7d) |  |  |  |  |
| 208 | Design Posting | 2006-06-15 → 2006-06-08 (-7d) | 2006-06-22 → 2006-06-15 (-7d) |  |  | 5d → 44d | constraint start no earlier than 2006-06-15 → start no earlier than 2006-06-08 |
| 209 | Design Review | 2006-06-23 → 2006-06-16 (-7d) | 2006-06-28 → 2006-06-21 (-7d) |  |  | 5d → 44d |  |
| 210 | Design Final Fixes | 2006-06-29 → 2006-06-22 (-7d) | 2006-06-30 → 2006-06-23 (-7d) |  |  | 5d → 44d |  |
| 211 | Creation of Dev Distro | 2006-07-03 → 2006-06-26 (-7d) | 2006-07-03 → 2006-06-26 (-7d) |  |  | 5d → 44d |  |
| 212 | Development Posting | 2006-07-04 → 2006-06-27 (-7d) | 2006-07-11 → 2006-07-04 (-7d) |  |  | 5d → 44d |  |
| 213 | Development Review | 2006-07-12 → 2006-07-05 (-7d) | 2006-07-17 → 2006-07-10 (-7d) |  |  | 5d → 44d |  |
| 214 | Development Final Fixes | 2006-07-18 → 2006-07-11 (-7d) | 2006-07-19 → 2006-07-12 (-7d) |  |  | 5d → 44d |  |
| 215 | Post to Catalog | 2006-07-20 → 2006-07-13 (-7d) | 2006-07-20 → 2006-07-13 (-7d) |  |  | 5d → 44d |  |
| 216 | **Online Review Login (custom)** | 2006-06-15 → 2006-06-08 (-7d) | 2006-07-20 → 2006-07-13 (-7d) |  |  |  |  |
| 217 | Design Posting | 2006-06-15 → 2006-06-08 (-7d) | 2006-06-22 → 2006-06-15 (-7d) |  |  | 5d → 44d | constraint start no earlier than 2006-06-15 → start no earlier than 2006-06-08 |
| 218 | Design Review | 2006-06-23 → 2006-06-16 (-7d) | 2006-06-28 → 2006-06-21 (-7d) |  |  | 5d → 44d |  |
| 219 | Design Final Fixes | 2006-06-29 → 2006-06-22 (-7d) | 2006-06-30 → 2006-06-23 (-7d) |  |  | 5d → 44d |  |
| 220 | Creation of Dev Distro | 2006-07-03 → 2006-06-26 (-7d) | 2006-07-03 → 2006-06-26 (-7d) |  |  | 5d → 44d |  |
| 221 | Development Posting | 2006-07-04 → 2006-06-27 (-7d) | 2006-07-11 → 2006-07-04 (-7d) |  |  | 5d → 44d |  |
| 222 | Development Review | 2006-07-12 → 2006-07-05 (-7d) | 2006-07-17 → 2006-07-10 (-7d) |  |  | 5d → 44d |  |
| 223 | Development Final Fixes | 2006-07-18 → 2006-07-11 (-7d) | 2006-07-19 → 2006-07-12 (-7d) |  |  | 5d → 44d |  |
| 224 | Post to Catalog | 2006-07-20 → 2006-07-13 (-7d) | 2006-07-20 → 2006-07-13 (-7d) |  |  | 5d → 44d |  |
| 252 | **Online Review Phases (custom)** | 2006-06-22 → 2006-06-15 (-7d) | 2006-07-27 → 2006-07-20 (-7d) |  |  |  |  |
| 253 | Design Posting | 2006-06-22 → 2006-06-15 (-7d) | 2006-06-29 → 2006-06-22 (-7d) |  |  |  | constraint start no earlier than 2006-06-22 → start no earlier than 2006-06-15 |
| 254 | Design Review | 2006-06-30 → 2006-06-23 (-7d) | 2006-07-05 → 2006-06-28 (-7d) |  |  |  |  |
| 255 | Design Final Fixes | 2006-07-06 → 2006-06-29 (-7d) | 2006-07-07 → 2006-06-30 (-7d) |  |  |  |  |
| 256 | Creation of Dev Distro | 2006-07-10 → 2006-07-03 (-7d) | 2006-07-10 → 2006-07-03 (-7d) |  |  |  |  |
| 257 | Development Posting | 2006-07-11 → 2006-07-04 (-7d) | 2006-07-18 → 2006-07-11 (-7d) |  |  |  |  |

| ID | Task | Start | Finish | Duration | Total float | Predecessors | Other |
| --- | --- | --- | --- | --- | --- | --- | --- |
| 258 | Development Review | 2006-07-19 → 2006-07-12 (-7d) | 2006-07-24 → 2006-07-17 (-7d) |  |  |  |  |
| 259 | Development Final Fixes | 2006-07-25 → 2006-07-18 (-7d) | 2006-07-26 → 2006-07-19 (-7d) |  |  |  |  |
| 260 | Post to Catalog | 2006-07-27 → 2006-07-20 (-7d) | 2006-07-27 → 2006-07-20 (-7d) |  |  |  |  |
| 261 | **Auto Pilot** | 2006-06-22 → 2006-06-15 (-7d) | 2006-07-27 → 2006-07-20 (-7d) |  |  |  |  |
| 262 | Design Posting | 2006-06-22 → 2006-06-15 (-7d) | 2006-06-29 → 2006-06-22 (-7d) |  |  |  | constraint start no earlier than 2006-06-22 → start no earlier than 2006-06-15 |
| 263 | Design Review | 2006-06-30 → 2006-06-23 (-7d) | 2006-07-05 → 2006-06-28 (-7d) |  |  |  |  |
| 264 | Design Final Fixes | 2006-07-06 → 2006-06-29 (-7d) | 2006-07-07 → 2006-06-30 (-7d) |  |  |  |  |
| 265 | Creation of Dev Distro | 2006-07-10 → 2006-07-03 (-7d) | 2006-07-10 → 2006-07-03 (-7d) |  |  |  |  |
| 266 | Development Posting | 2006-07-11 → 2006-07-04 (-7d) | 2006-07-18 → 2006-07-11 (-7d) |  |  |  |  |
| 267 | Development Review | 2006-07-19 → 2006-07-12 (-7d) | 2006-07-24 → 2006-07-17 (-7d) |  |  |  |  |
| 268 | Development Final Fixes | 2006-07-25 → 2006-07-18 (-7d) | 2006-07-26 → 2006-07-19 (-7d) |  |  |  |  |
| 269 | Post to Catalog | 2006-07-27 → 2006-07-20 (-7d) | 2006-07-27 → 2006-07-20 (-7d) |  |  |  |  |
| 270 | **Auto Screening Tool (2 dev)** | 2006-06-22 → 2006-06-15 (-7d) | 2006-07-27 → 2006-07-20 (-7d) |  |  |  | was named Auto Screening Tool |
| 271 | Design Posting | 2006-06-22 → 2006-06-15 (-7d) | 2006-06-29 → 2006-06-22 (-7d) |  |  |  | constraint start no earlier than 2006-06-22 → start no earlier than 2006-06-15 |
| 272 | Design Review | 2006-06-30 → 2006-06-23 (-7d) | 2006-07-05 → 2006-06-28 (-7d) |  |  |  |  |
| 273 | Design Final Fixes | 2006-07-06 → 2006-06-29 (-7d) | 2006-07-07 → 2006-06-30 (-7d) |  |  |  |  |
| 274 | Creation of Dev Distro | 2006-07-10 → 2006-07-03 (-7d) | 2006-07-10 → 2006-07-03 (-7d) |  |  |  |  |
| 275 | Development Posting | 2006-07-11 → 2006-07-04 (-7d) | 2006-07-18 → 2006-07-11 (-7d) |  |  |  |  |
| 276 | Development Review | 2006-07-19 → 2006-07-12 (-7d) | 2006-07-24 → 2006-07-17 (-7d) |  |  |  |  |
| 277 | Development Final Fixes | 2006-07-25 → 2006-07-18 (-7d) | 2006-07-26 → 2006-07-19 (-7d) |  |  |  |  |
| 278 | Post to Catalog | 2006-07-27 → 2006-07-20 (-7d) | 2006-07-27 → 2006-07-20 (-7d) |  |  |  |  |
| 279 | **Auto Screening Management (Custom)** | 2006-06-22 → 2006-06-15 (-7d) | 2006-07-27 → 2006-07-20 (-7d) |  |  |  | was named Auto Screening Management |
| 280 | Design Posting | 2006-06-22 → 2006-06-15 (-7d) | 2006-06-29 → 2006-06-22 (-7d) |  |  |  | constraint start no earlier than 2006-06-22 → start no earlier than 2006-06-15 |
| 281 | Design Review | 2006-06-30 → 2006-06-23 (-7d) | 2006-07-05 → 2006-06-28 (-7d) |  |  |  |  |
| 282 | Design Final Fixes | 2006-07-06 → 2006-06-29 (-7d) | 2006-07-07 → 2006-06-30 (-7d) |  |  |  |  |
| 283 | Creation of Dev Distro | 2006-07-10 → 2006-07-03 (-7d) | 2006-07-10 → 2006-07-03 (-7d) |  |  |  |  |
| 284 | Development Posting | 2006-07-11 → 2006-07-04 (-7d) | 2006-07-18 → 2006-07-11 (-7d) |  |  |  |  |
| 285 | Development Review | 2006-07-19 → 2006-07-12 (-7d) | 2006-07-24 → 2006-07-17 (-7d) |  |  |  |  |
| 286 | Development Final Fixes | 2006-07-25 → 2006-07-18 (-7d) | 2006-07-26 → 2006-07-19 (-7d) |  |  |  |  |
| 287 | Post to Catalog | 2006-07-27 → 2006-07-20 (-7d) | 2006-07-27 → 2006-07-20 (-7d) |  |  |  |  |
| 288 | **Assembly Competitions** | 2006-07-07 → 2006-06-26 (-11d) | 2006-08-24 → 2006-08-17 (-7d) | 35d → 39d |  |  |  |
| 290 | **Setup** | 2006-07-07 → 2006-06-26 (-11d) | 2006-07-28 → 2006-07-07 (-21d) | 16d → 10d | 10d → 19d |  |  |
| 291 | Divide Spec and Arch Deliverables | 2006-07-07 → 2006-06-26 (-11d) | 2006-07-07 → 2006-06-28 (-9d) | 1d → 3d | 34d → 36d | 38FS-15d → 82FS-15d, 66FS-15d | was named Divide Use Cases for Competitions; constraint start no earlier than 2006-03-29 → finish no earlier than 2006-06-28 |
| 293 | TopCoder Website Informaiton Posted | 2006-07-14 → 2006-06-30 (-14d) | 2006-07-14 → 2006-06-30 (-14d) |  | 5d → 27d | 38FS-10d → 82FS-5d, 66FS-5d |  |
| 294 | Package Components | 2006-07-28 → 2006-07-07 (-21d) | 2006-07-28 → 2006-07-07 (-21d) |  | 0d → 10d | 38 → 82, 66 |  |
| 295 | **Test Case Development** | 2006-07-17 → 2006-07-03 (-14d) | 2006-07-21 → 2006-07-11 (-10d) | 5d → 7d | 5d → 27d |  |  |
| 296 | Submit tests | 2006-07-17 → 2006-07-03 (-14d) | 2006-07-20 → 2006-07-10 (-10d) | 4d → 6d | 5d → 27d |  |  |
| 297 | Screen test cases | 2006-07-21 → 2006-07-11 (-10d) | 2006-07-21 → 2006-07-11 (-10d) |  | 5d → 27d |  |  |
| 298 | Team Formation | 2006-07-17 → 2006-07-03 (-14d) | 2006-07-28 → 2006-07-10 (-18d) | 10d → 6d | 19d → 28d |  | constraint none → start no earlier than 2006-07-03 |
| 299 | **Development** | 2006-07-31 → 2006-07-10 (-21d) | 2006-08-24 → 2006-08-03 (-21d) |  | 0d → 10d |  |  |
| 300 | **Opening Round** | 2006-07-31 → 2006-07-10 (-21d) | 2006-08-24 → 2006-08-03 (-21d) |  | 0d → 10d |  |  |
| 301 | **Team Development** | 2006-07-31 → 2006-07-10 (-21d) | 2006-08-07 → 2006-07-18 (-20d) | 6d → 7d | 0d → 10d |  |  |
| 302 | **Development of Use Cases** | 2006-07-31 → 2006-07-10 (-21d) | 2006-08-07 → 2006-07-18 (-20d) | 6d → 7d | 0d → 10d |  |  |
| 303 | Create Unit Tests | 2006-07-31 → 2006-07-10 (-21d) | 2006-08-02 → 2006-07-13 (-20d) | 3d → 4d | 0d → 10d | 294, 295 → 294 |  |
| 304 | Convert Prototype | 2006-07-31 → 2006-07-10 (-21d) | 2006-08-02 → 2006-07-13 (-20d) | 3d → 4d | 0d → 10d | 294, 295 → 294 |  |
| 305 | Configure components | 2006-07-31 → 2006-07-10 (-21d) | 2006-08-02 → 2006-07-12 (-21d) |  | 0d → 11d | 294, 295 → 294 |  |
| 306 | Test | 2006-08-03 → 2006-07-14 (-20d) | 2006-08-07 → 2006-07-18 (-20d) |  | 0d → 10d |  |  |
| 307 | **Test case challenge** | 2006-08-08 → 2006-07-19 (-20d) | 2006-08-09 → 2006-07-20 (-20d) |  | 0d → 10d |  |  |
| 308 | Submit Challenges | 2006-08-08 → 2006-07-19 (-20d) | 2006-08-08 → 2006-07-19 (-20d) |  | 0d → 10d |  |  |
| 309 | Appeals response | 2006-08-09 → 2006-07-20 (-20d) | 2006-08-09 → 2006-07-20 (-20d) |  | 0d → 10d |  |  |
| 310 | **Review** | 2006-08-10 → 2006-07-21 (-20d) | 2006-08-24 → 2006-08-03 (-21d) | 11d → 10d | 0d → 10d |  |  |
| 311 | Score Testcases | 2006-08-10 → 2006-07-21 (-20d) | 2006-08-10 → 2006-07-21 (-20d) |  | 1d → 11d |  |  |
| 312 | Score Submissions | 2006-08-10 → 2006-07-21 (-20d) | 2006-08-11 → 2006-07-24 (-18d) |  | 0d → 10d |  |  |
| 313 | Review Code | 2006-08-14 → 2006-07-25 (-20d) | 2006-08-15 → 2006-07-26 (-20d) |  | 0d → 10d |  |  |
| 314 | Appeals | 2006-08-16 → 2006-07-27 (-20d) | 2006-08-16 → 2006-07-27 (-20d) |  | 0d → 10d |  |  |
| 315 | Appeals Response | 2006-08-17 → 2006-07-28 (-20d) | 2006-08-17 → 2006-07-28 (-20d) |  | 0d → 10d |  |  |
| 316 | Final Fixes | 2006-08-18 → 2006-07-31 (-18d) | 2006-08-22 → 2006-08-02 (-20d) |  | 0d → 10d |  |  |
| 317 | Final Review | 2006-08-23 → 2006-08-03 (-20d) | 2006-08-23 → 2006-08-03 (-20d) |  | 0d → 10d |  |  |
| 321 | TopCoder Website Content Creation | 2006-07-21 → 2006-07-07 (-14d) | 2006-07-27 → 2006-07-13 (-14d) |  | 20d → 25d | 38FS-5d → 38FS-10d |  |
| 405 | **Deployment** | 2006-08-25 → 2006-08-18 (-7d) | 2006-09-12 → 2006-09-06 (-6d) |  |  |  |  |
| 406 | Deployment | 2006-08-25 → 2006-08-18 (-7d) | 2006-08-30 → 2006-08-23 (-7d) |  |  |  |  |
| 407 | **Testing Iteration** | 2006-08-31 → 2006-08-24 (-7d) | 2006-09-12 → 2006-09-06 (-6d) |  |  |  |  |
| 408 | Test Plan Execution | 2006-08-31 → 2006-08-24 (-7d) | 2006-09-04 → 2006-08-28 (-7d) |  |  |  |  |
| 409 | User Acceptance Testing | 2006-09-05 → 2006-08-29 (-7d) | 2006-09-11 → 2006-09-05 (-6d) |  |  |  |  |
| 410 | PM Certification | 2006-09-12 → 2006-09-06 (-6d) | 2006-09-12 → 2006-09-06 (-6d) |  |  |  |  |
| 411 | **Support** | 2006-08-25 → 2006-08-18 (-7d) | 2006-10-05 → 2006-09-29 (-6d) |  |  |  |  |
| 412 | Capture DRs | 2006-08-25 → 2006-08-18 (-7d) | 2006-09-14 → 2006-09-08 (-6d) |  |  |  |  |
| 413 | Release Fix | 2006-09-15 → 2006-09-11 (-4d) | 2006-10-05 → 2006-09-29 (-6d) |  |  |  |  |
| 414 | Send out how-to info to users | 2006-08-25 → 2006-09-07 (+13d) | 2006-08-25 → 2006-09-07 (+13d) |  | 29d → 16d | PM Review/Certification → 410 |  |
| 415 | Beta Release to internal users | 2006-09-13 → 2006-09-07 (-6d) | 2006-09-13 → 2006-09-07 (-6d) |  |  |  |  |

## Version 9 (saved 2006-09-19)

Last finish 2006-09-29 → 2006-11-02 (+34d). Complete tasks 33 → 233.

Added:

| ID | Task | Duration | Start | Finish | Predecessors | Constraint | Resources |
| --- | --- | --- | --- | --- | --- | --- | --- |
| 288 | Online Review Change Request #1 | 1d? | 2006-08-10 | 2006-08-10 | 252 |  | Winning Developer |
| 289 | Change Request #2 | 1d? | 2004-01-27 | 2004-01-27 |  |  |  |
| 320 | Feedback | 2d | 2006-08-24 | 2006-08-25 | 319 |  |  |
| 379 | **Migration Assembly** | 26d? | 2006-07-31 A | 2006-09-04 |  |  |  |
| 380 | Update Warehouse Load Script | 2d | 2006-07-31 | 2006-08-01 |  | start no earlier than 2006-07-31 | brain_cn |
| 381 | Create List of Deprecated Tables in TCS_CATALOG | 1d? | 2006-08-02 A | 2006-08-02 A | 380 |  |  |
| 382 | Create Drop and Alter Tables Script for TCS_CATALOG | 1d? | 2006-08-03 A | 2006-08-03 A | 381 |  |  |
| 383 | Create Conversion Scripts (from old OR Tables to New) | 5d | 2006-08-04 A | 2006-08-10 A | 382 |  | brain_cn |
| 384 | Integrate Events to populate project_results table | 2d | 2006-08-11 A | 2006-08-14 A | 383 |  | brain_cn |
| 385 | **Update Content Pages** | 7d | 2006-08-15 A | 2006-08-23 A |  |  |  |
| 386 | Update Active Contest Page | 1d | 2006-08-15 A | 2006-08-15 A | 384 |  | brain_cn |
| 387 | Update Contest Status Page | 1d | 2006-08-16 A | 2006-08-16 A | 386 |  | brain_cn |
| 388 | Display Scorecards | 1d | 2006-08-17 A | 2006-08-17 A | 387 |  | brain_cn |
| 389 | Send Component Project Information | 1d | 2006-08-18 A | 2006-08-18 A | 388 |  | brain_cn |
| 390 | Send Competitor Registration | 1d | 2006-08-21 A | 2006-08-21 A | 389 |  | brain_cn |
| 391 | Send Reviewer Registration | 1d | 2006-08-22 A | 2006-08-22 A | 390 |  | brain_cn |
| 392 | Send Data to Warehouse | 1d | 2006-08-23 A | 2006-08-23 A | 391 |  | brain_cn |
| 393 | Test Case Development | 5d | 2006-08-24 | 2006-08-30 | 392 | start no earlier than 2006-07-27 | brain_cn |
| 394 | Test Case Review | 1d | 2006-08-31 | 2006-08-31 | 393 |  |  |
| 395 | Integration with On-Site Plasma Scoreboard | 2d | 2006-08-24 | 2006-08-25 | 385 |  |  |
| 396 | **Certification** | 6d | 2006-08-28 | 2006-09-04 |  |  |  |
| 397 | Deployment To TopCoder QA | 2d | 2006-08-28 | 2006-08-29 | 395 |  | brain_cn; Dan Ulery |
| 398 | **Testing Iteration** | 3d | 2006-08-30 | 2006-09-01 |  |  |  |
| 399 | Test Plan Execution | 1d | 2006-08-30 | 2006-08-30 | 397 |  | Dan Ulery; brain_cn |
| 400 | Application Bu Fixes, Implemeted | 2d | 2006-08-31 | 2006-09-01 | 399 |  | brain_cn |
| 401 | Project Manager Certification | 1d | 2006-09-04 | 2006-09-04 | 400 |  | lorienorman |
| 403 | Set up QA Environment (database, apache, jboss) | 3d | 2006-07-24 A | 2006-07-26 A |  | start no earlier than 2006-07-24 | Dan Ulery |
| 404 | **Deployment to QA** | 15d | 2006-09-08 | 2006-09-28 |  |  |  |
| 405 | Merge code and deploy to QA | 5d | 2006-09-08 | 2006-09-14 | 376, 347 | finish no earlier than 2005-05-27 | Project Manager; Application Assembler 1 |
| 410 | **Deployment to Production** | 1d | 2006-09-29 | 2006-09-29 |  |  |  |

Removed: 347 Project Admin Assembly; 348 Setup; 349 Divide Spec and Arch Deliverables; 350 TopCoder Website Content Creation; 351 TopCoder Website Informaiton Posted; 352 Package Components; 353 Test Case Development; 354 Submit tests; 355 Screen test cases; 356 Team Formation; 357 Development; 358 Opening Round; 359 Team Development; 360 Development of Use Cases; 361 Create Unit Tests; 362 Convert Prototype; 364 Test; 365 Test case challenge; 366 Submit Challenges; 367 Appeals response; 368 Review; 369 Score Testcases; 370 Score Submissions; 371 Review Code; 372 Appeals; 373 Appeals Response; 374 Final Fixes; 375 Final Review

Changed:

| ID | Task | Start | Finish | Duration | Complete | Total float | Predecessors | Other |
| --- | --- | --- | --- | --- | --- | --- | --- | --- |
| 1 | **TopCoder Online Review/Scorecard Project** | 2005-06-29 A → 2004-01-27 A (-519d) | 2006-09-29 → 2006-11-02 (+34d) | 327d? → 723d? | 15% → 76% |  |  |  |
| 27 | **Application Architecture** |  | 2006-06-06 A |  | 99% → 100% | 82d → none |  |  |
| 37 | Review | 2006-06-06 A | 2006-06-06 A |  | 0% → 100% | 71d → none |  |  |
| 38 | **Component Production** |  | 2006-07-20 → 2006-08-10 (+21d) | 41d → 56d | 4% → 78% | 0d → 54d |  |  |
| 39 | **File Upload 2.0** |  | 2006-07-04 → 2006-07-13 (+9d) | 29d → 36d | 43% → 90% | 12d → 74d |  |  |
| 40 | Design Posting |  | 2006-06-01 A → 2006-06-02 A (+1d) | 6d → 7d |  |  |  |  |
| 41 | Design Review |  | 2006-06-09 A → 2006-06-12 A (+3d) | 6d → 7d |  |  |  |  |
| 42 | Design Final Fixes | 2006-06-12 → 2006-06-13 A (+1d) | 2006-06-13 → 2006-06-14 A (+1d) |  | 0% → 100% | 13d → none |  |  |
| 43 | Creation of Dev Distro | 2006-06-15 A | 2006-06-15 A |  | 0% → 100% | 12d → none |  |  |
| 44 | Development Posting | 2006-06-16 → 2006-06-22 A (+6d) | 2006-06-23 → 2006-06-29 A (+6d) |  | 0% → 100% | 12d → none |  |  |
| 45 | Development Review | 2006-06-26 → 2006-07-03 A (+7d) | 2006-06-29 → 2006-07-06 A (+7d) |  | 0% → 100% | 12d → none |  | constraint none → finish no earlier than 2006-07-06 |
| 46 | Development Final Fixes | 2006-06-30 → 2006-07-11 (+11d) | 2006-07-03 → 2006-07-12 (+9d) |  |  | 12d → 74d |  | constraint finish no earlier than 2005-04-06 → finish no earlier than 2006-07-12 |
| 47 | Post to Catalog | 2006-07-04 → 2006-07-13 (+9d) | 2006-07-04 → 2006-07-13 (+9d) |  |  | 12d → 74d |  |  |
| 48 | **Cached Web Element Tag** |  | 2006-06-29 → 2006-07-11 A (+12d) | 26d → 34d | 23% → 100% | 15d → none |  |  |
| 50 | Design Review | 2006-06-02 A | 2006-06-07 A |  | 0% → 100% | 54d → none |  |  |
| 51 | Design Final Fixes | 2006-06-08 → 2006-06-16 A (+8d) | 2006-06-09 → 2006-06-19 A (+10d) |  | 0% → 100% | 54d → none |  | constraint none → finish no earlier than 2006-06-19 |
| 52 | Creation of Dev Distro | 2006-06-12 → 2006-06-20 A (+8d) | 2006-06-12 → 2006-06-20 A (+8d) |  | 0% → 100% | 54d → none |  |  |
| 53 | Development Posting | 2006-06-13 → 2006-06-22 A (+9d) | 2006-06-20 → 2006-06-29 A (+9d) |  | 0% → 100% | 54d → none |  |  |
| 54 | Development Review | 2006-06-21 → 2006-06-30 A (+9d) | 2006-06-26 → 2006-07-05 A (+9d) |  | 0% → 100% | 54d → none |  |  |
| 55 | Development Final Fixes | 2006-06-27 → 2006-07-07 A (+10d) | 2006-06-28 → 2006-07-10 A (+12d) |  | 0% → 100% | 54d → none |  | constraint finish no earlier than 2005-04-06 → finish no earlier than 2006-07-10 |
| 56 | Post to Catalog | 2006-06-29 → 2006-07-11 A (+12d) | 2006-06-29 → 2006-07-11 A (+12d) |  | 0% → 100% | 54d → none |  |  |
| 57 | **Database Abstraction 1.1** |  | 2006-06-29 → 2006-07-06 (+7d) | 26d → 31d | 23% → 88% | 15d → 79d |  |  |
| 59 | Design Review | 2006-06-02 A | 2006-06-07 A |  | 0% → 100% | 54d → none |  |  |
| 60 | Design Final Fixes | 2006-06-08 A | 2006-06-09 A |  | 0% → 100% | 54d → none |  |  |
| 61 | Creation of Dev Distro | 2006-06-12 A | 2006-06-12 A |  | 0% → 100% | 54d → none |  |  |
| 62 | Development Posting | 2006-06-13 → 2006-06-15 A (+2d) | 2006-06-20 → 2006-06-21 A (+1d) | 6d → 5d | 0% → 100% | 54d → none |  | constraint start no earlier than 2005-03-30 → finish no earlier than 2006-06-21 |
| 63 | Development Review | 2006-06-21 → 2006-06-27 A (+6d) | 2006-06-26 → 2006-06-30 A (+4d) |  | 0% → 100% | 54d → none |  | constraint none → finish no earlier than 2006-06-30 |
| 64 | Development Final Fixes | 2006-06-27 → 2006-07-04 (+7d) | 2006-06-28 → 2006-07-05 (+7d) |  |  | 54d → 79d |  | constraint finish no earlier than 2005-04-06 → finish no earlier than 2006-07-05 |
| 65 | Post to Catalog | 2006-06-29 → 2006-07-06 (+7d) | 2006-06-29 → 2006-07-06 (+7d) |  |  | 54d → 79d |  |  |
| 66 | **Scorecard Management (2 dev)** | 2006-06-01 A | 2006-07-06 → 2006-07-17 (+11d) | 26d → 33d | 0% → 84% | 10d → 72d |  |  |
| 67 | Design Posting | 2006-06-01 A | 2006-06-08 → 2006-06-07 A (-1d) | 6d → 5d | 0% → 100% | 10d → none |  |  |
| 68 | Design Review | 2006-06-09 → 2006-06-12 A (+3d) | 2006-06-14 → 2006-06-15 A (+1d) |  | 0% → 100% | 10d → none |  | constraint finish no earlier than 2005-03-21 → finish no earlier than 2006-06-15 |
| 69 | Design Final Fixes | 2006-06-15 → 2006-06-16 A (+1d) | 2006-06-16 → 2006-06-20 A (+4d) | 2d → 3d | 0% → 100% | 10d → none |  | constraint none → finish no earlier than 2006-06-20 |
| 70 | **Scorecard Management Development** | 2006-06-19 → 2006-06-21 A (+2d) | 2006-07-06 → 2006-07-12 (+6d) | 14d → 16d | 0% → 79% | 10d → 75d |  |  |
| 71 | Creation of Management Dev Distro | 2006-06-19 → 2006-06-21 A (+2d) | 2006-06-19 → 2006-06-21 A (+2d) |  | 0% → 100% | 10d → none |  |  |
| 72 | Development Posting | 2006-06-20 → 2006-06-22 A (+2d) | 2006-06-27 → 2006-06-29 A (+2d) |  | 0% → 100% | 10d → none |  |  |
| 73 | Development Review | 2006-06-28 → 2006-07-03 A (+5d) | 2006-07-03 → 2006-07-06 A (+3d) |  | 0% → 100% | 10d → none |  | constraint none → finish no earlier than 2006-07-06 |
| 74 | Development Final Fixes | 2006-07-04 → 2006-07-10 (+6d) | 2006-07-05 → 2006-07-11 (+6d) |  |  | 10d → 75d |  | constraint finish no earlier than 2005-04-06 → finish no earlier than 2006-07-11 |
| 75 | Post to Catalog | 2006-07-06 → 2006-07-12 (+6d) | 2006-07-06 → 2006-07-12 (+6d) |  |  | 10d → 75d |  |  |
| 76 | **Scorecard Persistence Development** | 2006-06-19 → 2006-06-21 A (+2d) | 2006-07-06 → 2006-07-17 (+11d) | 14d → 19d | 0% → 75% | 10d → 72d |  |  |
| 77 | Creation of Management Dev Distro | 2006-06-19 → 2006-06-21 A (+2d) | 2006-06-19 → 2006-06-21 A (+2d) |  | 0% → 100% | 13d → none |  |  |
| 78 | Development Posting | 2006-06-20 → 2006-06-29 A (+9d) | 2006-06-27 → 2006-07-04 A (+7d) | 6d → 4d | 0% → 100% | 7d → none | 71 → 77 |  |
| 79 | Development Review | 2006-06-28 → 2006-07-06 A (+8d) | 2006-07-03 → 2006-07-11 A (+8d) |  | 0% → 100% | 3d → none | 72 → 78 | constraint none → finish no earlier than 2006-07-11 |
| 80 | Development Final Fixes | 2006-07-04 → 2006-07-13 (+9d) | 2006-07-05 → 2006-07-14 (+9d) |  |  | 1d → 72d | 73 → 79 | constraint finish no earlier than 2005-04-06 → finish no earlier than 2006-07-14 |
| 81 | Post to Catalog | 2006-07-06 → 2006-07-17 (+11d) | 2006-07-06 → 2006-07-17 (+11d) |  |  | 10d → 72d | 74 → 80 |  |
| 82 | **Scorecard Data Structure** | 2006-06-01 A | 2006-07-06 → 2006-07-12 A (+6d) | 26d → 30d | 0% → 100% | 10d → none |  |  |
| 83 | Design Posting | 2006-06-01 A | 2006-06-08 → 2006-06-07 A (-1d) | 6d → 5d | 0% → 100% | 10d → none |  | constraint start no earlier than 2006-06-01 → finish no earlier than 2006-06-07 |
| 84 | Design Review | 2006-06-09 → 2006-06-13 A (+4d) | 2006-06-14 → 2006-06-16 A (+2d) |  | 0% → 100% | 10d → none |  | constraint finish no earlier than 2005-03-21 → finish no earlier than 2006-06-18 |
| 85 | Design Final Fixes | 2006-06-15 → 2006-06-19 A (+4d) | 2006-06-16 → 2006-06-20 A (+4d) |  | 0% → 100% | 10d → none |  | constraint none → finish no earlier than 2006-06-20 |
| 86 | Creation of Dev Distro | 2006-06-19 → 2006-06-21 A (+2d) | 2006-06-19 → 2006-06-21 A (+2d) | 1d → 0.5d | 0% → 100% | 10d → none |  |  |
| 87 | Development Posting | 2006-06-20 → 2006-06-21 A (+1d) | 2006-06-27 → 2006-06-29 A (+2d) |  | 0% → 100% | 10d → none |  |  |
| 88 | Development Review | 2006-06-28 → 2006-06-30 A (+2d) | 2006-07-03 → 2006-07-07 A (+4d) | 4d → 6d | 0% → 100% | 10d → none |  | constraint none → finish no earlier than 2006-07-07 |
| 89 | Development Final Fixes | 2006-07-04 → 2006-07-10 A (+6d) | 2006-07-05 → 2006-07-11 A (+6d) |  | 0% → 100% | 10d → none |  | constraint finish no earlier than 2005-04-06 → finish no earlier than 2006-07-11 |
| 90 | Post to Catalog | 2006-07-06 → 2006-07-12 A (+6d) | 2006-07-06 → 2006-07-12 A (+6d) |  | 0% → 100% | 10d → none |  |  |
| 91 | **Review Management (2 dev)** | 2006-06-01 A | 2006-07-06 → 2006-07-12 (+6d) | 26d → 30d | 0% → 93% | 10d → 75d |  |  |
| 92 | Design Posting | 2006-06-01 A | 2006-06-08 A |  | 0% → 100% | 49d → none |  |  |
| 93 | Design Review | 2006-06-09 A | 2006-06-14 A |  | 0% → 100% | 49d → none |  |  |
| 94 | Design Final Fixes | 2006-06-15 A | 2006-06-16 A |  | 0% → 100% | 49d → none |  |  |
| 95 | **Review Management Development** | 2006-06-19 A | 2006-07-06 → 2006-07-12 A (+6d) | 14d → 18d | 0% → 100% | 10d → none |  |  |
| 96 | Creation of Management Dev Distro | 2006-06-19 A | 2006-06-19 A |  | 0% → 100% | 49d → none |  |  |
| 97 | Development Posting | 2006-06-20 → 2006-06-22 A (+2d) | 2006-06-27 → 2006-06-29 A (+2d) |  | 0% → 100% | 49d → none |  |  |
| 98 | Development Review | 2006-06-28 → 2006-07-03 A (+5d) | 2006-07-03 → 2006-07-06 A (+3d) |  | 0% → 100% | 49d → none |  | constraint none → finish no earlier than 2006-07-06 |
| 99 | Development Final Fixes | 2006-07-04 → 2006-07-10 A (+6d) | 2006-07-05 → 2006-07-11 A (+6d) |  | 0% → 100% | 49d → none |  | constraint finish no earlier than 2005-04-06 → finish no earlier than 2006-07-11 |
| 100 | Post to Catalog | 2006-07-06 → 2006-07-12 A (+6d) | 2006-07-06 → 2006-07-12 A (+6d) |  | 0% → 100% | 49d → none |  |  |
| 101 | **Review Persistence Development** | 2006-06-19 A | 2006-07-06 → 2006-07-12 (+6d) | 14d → 18d | 0% → 79% | 10d → 75d |  |  |
| 102 | Creation of Management Dev Distro | 2006-06-19 A | 2006-06-19 A |  | 0% → 100% | 49d → none |  |  |
| 103 | Development Posting | 2006-06-20 → 2006-06-22 A (+2d) | 2006-06-27 → 2006-06-29 A (+2d) |  | 0% → 100% | 49d → none |  |  |
| 104 | Development Review | 2006-06-28 → 2006-07-03 A (+5d) | 2006-07-03 → 2006-07-06 A (+3d) |  | 0% → 100% | 49d → none |  | constraint none → start no earlier than 2006-07-03 |
| 105 | Development Final Fixes | 2006-07-04 → 2006-07-10 (+6d) | 2006-07-05 → 2006-07-11 (+6d) |  |  | 49d → 75d |  | constraint finish no earlier than 2005-04-06 → start no earlier than 2006-07-10 |
| 106 | Post to Catalog | 2006-07-06 → 2006-07-12 (+6d) | 2006-07-06 → 2006-07-12 (+6d) |  |  | 49d → 75d |  |  |

| ID | Task | Start | Finish | Duration | Complete | Total float | Other |
| --- | --- | --- | --- | --- | --- | --- | --- |
| 107 | **Project Phases 2.0** | 2006-06-08 A | 2006-07-13 → 2006-07-26 (+13d) | 26d → 35d | 0% → 73% | 5d → 65d |  |
| 108 | Design Posting | 2006-06-08 A | 2006-06-15 A |  | 0% → 100% | 44d → none |  |
| 109 | Design Review | 2006-06-16 A | 2006-06-21 A |  | 0% → 100% | 44d → none |  |
| 110 | Design Final Fixes | 2006-06-22 A | 2006-06-23 A |  | 0% → 100% | 44d → none |  |
| 111 | Creation of Dev Distro | 2006-06-26 A | 2006-06-26 A |  | 0% → 100% | 44d → none |  |
| 112 | Development Posting | 2006-06-27 → 2006-07-06 A (+9d) | 2006-07-04 → 2006-07-13 A (+9d) |  | 0% → 100% | 44d → none | constraint start no earlier than 2005-03-30 → start no earlier than 2006-07-06 |
| 113 | Development Review | 2006-07-05 → 2006-07-18 (+13d) | 2006-07-10 → 2006-07-21 (+11d) |  |  | 44d → 65d | constraint none → finish no earlier than 2006-07-21 |
| 114 | Development Final Fixes | 2006-07-11 → 2006-07-24 (+13d) | 2006-07-12 → 2006-07-25 (+13d) |  |  | 44d → 65d | constraint finish no earlier than 2005-04-06 → finish no earlier than 2006-07-25 |
| 115 | Post to Catalog | 2006-07-13 → 2006-07-26 (+13d) | 2006-07-13 → 2006-07-26 (+13d) |  |  | 44d → 65d |  |
| 116 | **Review Score Calculator** | 2006-06-08 A | 2006-07-13 → 2006-07-19 A (+6d) | 26d → 30d | 0% → 100% | 5d → none |  |
| 117 | Design Posting | 2006-06-08 A | 2006-06-15 A |  | 0% → 100% | 44d → none |  |
| 118 | Design Review | 2006-06-16 A | 2006-06-21 A |  | 0% → 100% | 44d → none |  |
| 119 | Design Final Fixes | 2006-06-22 A | 2006-06-23 A |  | 0% → 100% | 44d → none |  |
| 120 | Creation of Dev Distro | 2006-06-26 A | 2006-06-26 A |  | 0% → 100% | 44d → none |  |
| 121 | Development Posting | 2006-06-27 → 2006-06-29 A (+2d) | 2006-07-04 → 2006-07-06 A (+2d) |  | 0% → 100% | 44d → none | constraint start no earlier than 2005-03-30 → start no earlier than 2006-06-29 |
| 122 | Development Review | 2006-07-05 → 2006-07-10 A (+5d) | 2006-07-10 → 2006-07-13 A (+3d) |  | 0% → 100% | 44d → none | constraint none → finish no earlier than 2006-07-13 |
| 123 | Development Final Fixes | 2006-07-11 → 2006-07-17 A (+6d) | 2006-07-12 → 2006-07-18 A (+6d) |  | 0% → 100% | 44d → none | constraint finish no earlier than 2005-04-06 → finish no earlier than 2006-07-18 |
| 124 | Post to Catalog | 2006-07-13 → 2006-07-19 A (+6d) | 2006-07-13 → 2006-07-19 A (+6d) |  | 0% → 100% | 44d → none |  |
| 125 | **Review Score Aggregator** | 2006-06-08 A | 2006-07-13 → 2006-07-19 (+6d) | 26d → 30d | 0% → 73% | 5d → 70d |  |
| 126 | Design Posting | 2006-06-08 A | 2006-06-15 A |  | 0% → 100% | 44d → none |  |
| 127 | Design Review | 2006-06-16 A | 2006-06-21 A |  | 0% → 100% | 44d → none |  |
| 128 | Design Final Fixes | 2006-06-22 A | 2006-06-23 A |  | 0% → 100% | 44d → none |  |
| 129 | Creation of Dev Distro | 2006-06-26 A | 2006-06-26 A |  | 0% → 100% | 44d → none |  |
| 130 | Development Posting | 2006-06-27 → 2006-06-29 A (+2d) | 2006-07-04 → 2006-07-06 A (+2d) |  | 0% → 100% | 44d → none | constraint start no earlier than 2005-03-30 → start no earlier than 2006-06-29 |
| 131 | Development Review | 2006-07-05 → 2006-07-10 (+5d) | 2006-07-10 → 2006-07-13 (+3d) |  |  | 44d → 71d | constraint none → finish no earlier than 2006-07-13 |
| 132 | Development Final Fixes | 2006-07-11 → 2006-07-17 (+6d) | 2006-07-12 → 2006-07-18 (+6d) |  |  | 44d → 70d | constraint finish no earlier than 2005-04-06 → finish no earlier than 2006-07-18 |
| 133 | Post to Catalog | 2006-07-13 → 2006-07-19 (+6d) | 2006-07-13 → 2006-07-19 (+6d) |  |  | 44d → 70d |  |
| 134 | **Project Management (2 dev)** | 2006-06-08 A | 2006-07-13 → 2006-07-20 (+7d) | 26d → 31d | 0% → 93% | 5d → 69d |  |
| 135 | Design Posting | 2006-06-08 A | 2006-06-15 A |  | 0% → 100% | 44d → none |  |
| 136 | Design Review | 2006-06-16 A | 2006-06-21 A |  | 0% → 100% | 44d → none |  |
| 137 | Design Final Fixes | 2006-06-22 A | 2006-06-23 A |  | 0% → 100% | 44d → none |  |
| 138 | **Project Management Development** | 2006-06-26 A | 2006-07-13 → 2006-07-19 A (+6d) | 14d → 18d | 0% → 100% | 5d → none |  |
| 139 | Creation of Management Dev Distro | 2006-06-26 A | 2006-06-26 A |  | 0% → 100% | 44d → none |  |
| 140 | Development Posting | 2006-06-27 → 2006-06-29 A (+2d) | 2006-07-04 → 2006-07-06 A (+2d) |  | 0% → 100% | 44d → none | constraint start no earlier than 2005-03-30 → start no earlier than 2006-06-29 |
| 141 | Development Review | 2006-07-05 → 2006-07-07 A (+2d) | 2006-07-10 → 2006-07-14 A (+4d) | 4d → 6d | 0% → 100% | 44d → none | constraint none → finish no earlier than 2006-07-14 |
| 142 | Development Final Fixes | 2006-07-11 → 2006-07-17 A (+6d) | 2006-07-12 → 2006-07-18 A (+6d) |  | 0% → 100% | 44d → none | constraint finish no earlier than 2005-04-06 → finish no earlier than 2006-07-18 |
| 143 | Post to Catalog | 2006-07-13 → 2006-07-19 A (+6d) | 2006-07-13 → 2006-07-19 A (+6d) |  | 0% → 100% | 44d → none |  |
| 144 | **Project Persistence Development** | 2006-06-26 A | 2006-07-13 → 2006-07-20 (+7d) | 14d → 19d | 0% → 79% | 5d → 69d |  |
| 145 | Creation of Management Dev Distro | 2006-06-26 A | 2006-06-26 A |  | 0% → 100% | 44d → none |  |
| 146 | Development Posting | 2006-06-27 → 2006-06-29 A (+2d) | 2006-07-04 → 2006-07-06 A (+2d) |  | 0% → 100% | 44d → none | constraint start no earlier than 2005-03-30 → start no earlier than 2006-06-29 |
| 147 | Development Review | 2006-07-05 → 2006-07-10 A (+5d) | 2006-07-10 → 2006-07-13 A (+3d) |  | 0% → 100% | 44d → none | constraint none → finish no earlier than 2006-07-13 |
| 148 | Development Final Fixes | 2006-07-11 → 2006-07-18 (+7d) | 2006-07-12 → 2006-07-19 (+7d) |  |  | 44d → 69d | constraint finish no earlier than 2005-04-06 → finish no earlier than 2006-07-19 |
| 149 | Post to Catalog | 2006-07-13 → 2006-07-20 (+7d) | 2006-07-13 → 2006-07-20 (+7d) |  |  | 44d → 69d |  |
| 150 | **Resource Management** | 2006-06-08 A | 2006-07-13 → 2006-07-28 (+15d) | 26d → 37d | 0% → 62% | 5d → 63d |  |
| 151 | Design Posting | 2006-06-08 A | 2006-06-15 A |  | 0% → 100% | 44d → none |  |
| 152 | Design Review | 2006-06-16 A | 2006-06-21 A |  | 0% → 100% | 44d → none |  |
| 153 | Design Final Fixes | 2006-06-22 A | 2006-06-23 A |  | 0% → 100% | 44d → none |  |
| 154 | **Resource Management Development** | 2006-06-26 A | 2006-07-13 → 2006-07-26 (+13d) | 14d → 23d | 0% → 44% | 5d → 65d |  |
| 155 | Creation of Management Dev Distro | 2006-06-26 A | 2006-06-26 A |  | 0% → 100% | 44d → none |  |
| 156 | Development Posting | 2006-06-27 → 2006-07-06 A (+9d) | 2006-07-04 → 2006-07-13 A (+9d) |  | 0% → 100% | 44d → none | constraint start no earlier than 2005-03-30 → start no earlier than 2006-07-13 |
| 157 | Development Review | 2006-07-05 → 2006-07-14 (+9d) | 2006-07-10 → 2006-07-21 (+11d) | 4d → 6d |  | 44d → 65d | constraint none → start no earlier than 2006-07-14 |
| 158 | Development Final Fixes | 2006-07-11 → 2006-07-24 (+13d) | 2006-07-12 → 2006-07-25 (+13d) |  |  | 44d → 65d | constraint finish no earlier than 2005-04-06 → finish no earlier than 2006-07-25 |
| 159 | Post to Catalog | 2006-07-13 → 2006-07-26 (+13d) | 2006-07-13 → 2006-07-26 (+13d) |  |  | 44d → 65d |  |
| 160 | **Resource Persistence Development** | 2006-06-26 A | 2006-07-13 → 2006-07-28 (+15d) | 14d → 25d | 0% → 50% | 5d → 63d |  |
| 161 | Creation of Management Dev Distro | 2006-06-26 A | 2006-06-26 A |  | 0% → 100% | 44d → none |  |
| 162 | Development Posting | 2006-06-27 → 2006-07-06 A (+9d) | 2006-07-04 → 2006-07-13 A (+9d) |  | 0% → 100% | 44d → none | constraint start no earlier than 2005-03-30 → start no earlier than 2006-07-06 |
| 163 | Development Review | 2006-07-05 → 2006-07-18 (+13d) | 2006-07-10 → 2006-07-21 (+11d) |  |  | 44d → 65d | constraint none → finish no earlier than 2006-07-21 |
| 164 | Development Final Fixes | 2006-07-11 → 2006-07-26 (+15d) | 2006-07-12 → 2006-07-27 (+15d) |  |  | 44d → 63d | constraint finish no earlier than 2005-04-06 → finish no earlier than 2006-07-27 |
| 165 | Post to Catalog | 2006-07-13 → 2006-07-28 (+15d) | 2006-07-13 → 2006-07-28 (+15d) |  |  | 44d → 63d |  |
| 166 | **Deliverable Management** | 2006-06-08 A | 2006-07-13 → 2006-07-28 (+15d) | 26d → 37d | 0% → 65% | 5d → 63d |  |
| 167 | Design Posting | 2006-06-08 A | 2006-06-15 A |  | 0% → 100% | 44d → none |  |
| 168 | Design Review | 2006-06-16 A | 2006-06-21 A |  | 0% → 100% | 44d → none |  |
| 169 | Design Final Fixes | 2006-06-22 A | 2006-06-23 A |  | 0% → 100% | 44d → none |  |
| 170 | **Deliverable Management Development** | 2006-06-26 A | 2006-07-13 → 2006-07-27 (+14d) | 14d → 24d | 0% → 50% | 5d → 64d |  |
| 171 | Creation of Management Dev Distro | 2006-06-26 A | 2006-06-26 A |  | 0% → 100% | 44d → none |  |
| 172 | Development Posting | 2006-06-27 → 2006-07-06 A (+9d) | 2006-07-04 → 2006-07-13 A (+9d) |  | 0% → 100% | 44d → none | constraint start no earlier than 2005-03-30 → start no earlier than 2006-07-06 |
| 173 | Development Review | 2006-07-05 → 2006-07-19 (+14d) | 2006-07-10 → 2006-07-24 (+14d) |  |  | 44d → 64d | constraint none → finish no earlier than 2006-07-24 |
| 174 | Development Final Fixes | 2006-07-11 → 2006-07-25 (+14d) | 2006-07-12 → 2006-07-26 (+14d) |  |  | 44d → 64d | constraint finish no earlier than 2005-04-06 → finish no earlier than 2006-07-20 |
| 175 | Post to Catalog | 2006-07-13 → 2006-07-27 (+14d) | 2006-07-13 → 2006-07-27 (+14d) |  |  | 44d → 64d |  |
| 176 | **Deliverable Persistence Development** | 2006-06-26 A | 2006-07-13 → 2006-07-28 (+15d) | 14d → 25d | 0% → 50% | 5d → 63d |  |

| ID | Task | Start | Finish | Duration | Complete | Total float | Other |
| --- | --- | --- | --- | --- | --- | --- | --- |
| 177 | Creation of Management Dev Distro | 2006-06-26 A | 2006-06-26 A |  | 0% → 100% | 44d → none |  |
| 178 | Development Posting | 2006-06-27 → 2006-07-06 A (+9d) | 2006-07-04 → 2006-07-13 A (+9d) |  | 0% → 100% | 44d → none | constraint start no earlier than 2005-03-30 → start no earlier than 2006-07-06 |
| 179 | Development Review | 2006-07-05 → 2006-07-19 (+14d) | 2006-07-10 → 2006-07-24 (+14d) |  |  | 44d → 64d | constraint none → finish no earlier than 2006-07-24 |
| 180 | Development Final Fixes | 2006-07-11 → 2006-07-26 (+15d) | 2006-07-12 → 2006-07-27 (+15d) |  |  | 44d → 63d | constraint finish no earlier than 2005-04-06 → finish no earlier than 2006-07-27 |
| 181 | Post to Catalog | 2006-07-13 → 2006-07-28 (+15d) | 2006-07-13 → 2006-07-28 (+15d) |  |  | 44d → 63d |  |
| 182 | **Search Builder 1.3** | 2006-06-08 A | 2006-07-13 → 2006-07-31 (+18d) | 26d → 38d | 0% → 61% | 5d → 62d |  |
| 183 | Design Posting | 2006-06-08 A | 2006-06-15 A |  | 0% → 100% | 44d → none |  |
| 184 | Design Review | 2006-06-16 A | 2006-06-21 A |  | 0% → 100% | 44d → none |  |
| 185 | Design Final Fixes | 2006-06-22 A | 2006-06-23 A |  | 0% → 100% | 44d → none |  |
| 186 | Creation of Dev Distro | 2006-06-26 A | 2006-06-26 A |  | 0% → 100% | 44d → none |  |
| 187 | Development Posting | 2006-06-27 → 2006-07-06 A (+9d) | 2006-07-04 → 2006-07-13 A (+9d) |  | 0% → 100% | 44d → none | constraint start no earlier than 2005-03-30 → start no earlier than 2006-07-06 |
| 188 | Development Review | 2006-07-05 → 2006-07-14 (+9d) | 2006-07-10 → 2006-07-26 (+16d) | 4d → 9d |  | 44d → 62d | constraint none → finish no earlier than 2006-07-26 |
| 189 | Development Final Fixes | 2006-07-11 → 2006-07-27 (+16d) | 2006-07-12 → 2006-07-28 (+16d) |  |  | 44d → 62d |  |
| 190 | Post to Catalog | 2006-07-13 → 2006-07-31 (+18d) | 2006-07-13 → 2006-07-31 (+18d) |  |  | 44d → 62d |  |
| 191 | **Phase Management** | 2006-06-08 A | 2006-07-13 → 2006-08-02 (+20d) | 26d → 40d | 0% → 65% | 5d → 60d |  |
| 192 | Design Posting | 2006-06-08 A | 2006-06-15 A |  | 0% → 100% | 44d → none |  |
| 193 | Design Review | 2006-06-16 A | 2006-06-21 A |  | 0% → 100% | 44d → none |  |
| 194 | Design Final Fixes | 2006-06-22 A | 2006-06-23 A |  | 0% → 100% | 44d → none |  |
| 195 | **Phase Management Development** | 2006-06-26 A | 2006-07-13 → 2006-08-02 (+20d) | 14d → 28d | 0% → 50% | 5d → 60d |  |
| 196 | Creation of Management Dev Distro | 2006-06-26 A | 2006-06-26 A |  | 0% → 100% | 44d → none |  |
| 197 | Development Posting | 2006-06-27 → 2006-07-13 A (+16d) | 2006-07-04 → 2006-07-20 A (+16d) |  | 0% → 100% | 44d → none | constraint start no earlier than 2005-03-30 → start no earlier than 2006-07-13 |
| 198 | Development Review | 2006-07-05 → 2006-07-25 (+20d) | 2006-07-10 → 2006-07-28 (+18d) |  |  | 44d → 60d | constraint none → finish no earlier than 2006-07-28 |
| 199 | Development Final Fixes | 2006-07-11 → 2006-07-31 (+20d) | 2006-07-12 → 2006-08-01 (+20d) |  |  | 44d → 60d | constraint finish no earlier than 2005-04-06 → finish no earlier than 2006-08-01 |
| 200 | Post to Catalog | 2006-07-13 → 2006-08-02 (+20d) | 2006-07-13 → 2006-08-02 (+20d) |  |  | 44d → 60d |  |
| 201 | **Phase Persistence Development** | 2006-06-26 A | 2006-07-13 → 2006-08-02 (+20d) | 14d → 28d | 0% → 50% | 5d → 60d |  |
| 202 | Creation of Management Dev Distro | 2006-06-26 A | 2006-06-26 A |  | 0% → 100% | 44d → none |  |
| 203 | Development Posting | 2006-06-27 → 2006-07-13 A (+16d) | 2006-07-04 → 2006-07-20 A (+16d) |  | 0% → 100% | 44d → none | constraint start no earlier than 2005-03-30 → start no earlier than 2006-07-13 |
| 204 | Development Review | 2006-07-05 → 2006-07-24 (+19d) | 2006-07-10 → 2006-07-27 (+17d) |  |  | 44d → 61d | constraint none → finish no earlier than 2006-07-27 |
| 205 | Development Final Fixes | 2006-07-11 → 2006-07-31 (+20d) | 2006-07-12 → 2006-08-01 (+20d) |  |  | 44d → 60d | constraint finish no earlier than 2005-04-06 → finish no earlier than 2006-08-01 |
| 206 | Post to Catalog | 2006-07-13 → 2006-08-02 (+20d) | 2006-07-13 → 2006-08-02 (+20d) |  |  | 44d → 60d |  |
| 207 | **Project Phase Template** | 2006-06-08 A | 2006-07-13 → 2006-07-19 A (+6d) | 26d → 30d | 0% → 100% | 5d → none |  |
| 208 | Design Posting | 2006-06-08 A | 2006-06-15 A |  | 0% → 100% | 44d → none |  |
| 209 | Design Review | 2006-06-16 A | 2006-06-21 A |  | 0% → 100% | 44d → none |  |
| 210 | Design Final Fixes | 2006-06-22 A | 2006-06-23 A |  | 0% → 100% | 44d → none |  |
| 211 | Creation of Dev Distro | 2006-06-26 A | 2006-06-26 A |  | 0% → 100% | 44d → none |  |
| 212 | Development Posting | 2006-06-27 → 2006-06-29 A (+2d) | 2006-07-04 → 2006-07-06 A (+2d) |  | 0% → 100% | 44d → none | constraint start no earlier than 2005-03-30 → start no earlier than 2006-06-29 |
| 213 | Development Review | 2006-07-05 → 2006-07-10 A (+5d) | 2006-07-10 → 2006-07-13 A (+3d) |  | 0% → 100% | 44d → none | constraint none → finish no earlier than 2006-07-13 |
| 214 | Development Final Fixes | 2006-07-11 → 2006-07-17 A (+6d) | 2006-07-12 → 2006-07-18 A (+6d) |  | 0% → 100% | 44d → none | constraint finish no earlier than 2005-04-06 → finish no earlier than 2006-07-18 |
| 215 | Post to Catalog | 2006-07-13 → 2006-07-19 A (+6d) | 2006-07-13 → 2006-07-19 A (+6d) |  | 0% → 100% | 44d → none |  |
| 216 | **Online Review Login (custom)** | 2006-06-08 A | 2006-07-13 → 2006-08-01 (+19d) | 26d → 39d | 0% → 73% | 5d → 61d |  |
| 217 | Design Posting | 2006-06-08 A | 2006-06-15 A |  | 0% → 100% | 44d → none |  |
| 218 | Design Review | 2006-06-16 A | 2006-06-21 A |  | 0% → 100% | 44d → none |  |
| 219 | Design Final Fixes | 2006-06-22 A | 2006-06-23 A |  | 0% → 100% | 44d → none |  |
| 220 | Creation of Dev Distro | 2006-06-26 A | 2006-06-26 A |  | 0% → 100% | 44d → none |  |
| 221 | Development Posting | 2006-06-27 → 2006-07-06 A (+9d) | 2006-07-04 → 2006-07-13 A (+9d) |  | 0% → 100% | 44d → none | constraint start no earlier than 2005-03-30 → start no earlier than 2006-07-06 |
| 222 | Development Review | 2006-07-05 → 2006-07-24 (+19d) | 2006-07-10 → 2006-07-27 (+17d) |  |  | 44d → 61d | constraint none → finish no earlier than 2006-07-27 |
| 223 | Development Final Fixes | 2006-07-11 → 2006-07-28 (+17d) | 2006-07-12 → 2006-07-31 (+19d) |  |  | 44d → 61d | constraint finish no earlier than 2005-04-06 → finish no earlier than 2006-07-25 |
| 224 | Post to Catalog | 2006-07-13 → 2006-08-01 (+19d) | 2006-07-13 → 2006-08-01 (+19d) |  |  | 44d → 61d |  |
| 225 | **User Project Data Store (custom)** | 2006-06-15 A | 2006-07-20 → 2006-07-26 (+6d) | 26d → 30d | 0% → 73% | 0d → 65d |  |
| 226 | Design Posting | 2006-06-15 A | 2006-06-22 A |  | 0% → 100% | 0d → none |  |
| 227 | Design Review | 2006-06-23 A | 2006-06-28 A |  | 0% → 100% | 0d → none |  |
| 228 | Design Final Fixes | 2006-06-29 A | 2006-06-30 A |  | 0% → 100% | 0d → none |  |
| 229 | Creation of Dev Distro | 2006-07-03 A | 2006-07-03 A |  | 0% → 100% | 0d → none |  |
| 230 | Development Posting | 2006-07-04 → 2006-07-06 A (+2d) | 2006-07-11 → 2006-07-13 A (+2d) |  | 0% → 100% | 0d → none | constraint start no earlier than 2005-03-30 → start no earlier than 2006-07-06 |
| 231 | Development Review | 2006-07-12 → 2006-07-18 (+6d) | 2006-07-17 → 2006-07-21 (+4d) |  |  | 0d → 65d | constraint none → finish no earlier than 2006-07-21 |
| 232 | Development Final Fixes | 2006-07-18 → 2006-07-24 (+6d) | 2006-07-19 → 2006-07-25 (+6d) |  |  | 0d → 65d |  |
| 233 | Post to Catalog | 2006-07-20 → 2006-07-26 (+6d) | 2006-07-20 → 2006-07-26 (+6d) |  |  | 0d → 65d |  |
| 234 | **Online Review Ajax Support (custom)** | 2006-06-15 A | 2006-07-20 → 2006-07-31 (+11d) | 26d → 33d | 0% → 73% | 0d → 62d |  |
| 235 | Design Posting | 2006-06-15 A | 2006-06-22 A |  | 0% → 100% | 0d → none |  |
| 236 | Design Review | 2006-06-23 A | 2006-06-28 A |  | 0% → 100% | 0d → none |  |
| 237 | Design Final Fixes | 2006-06-29 A | 2006-06-30 A |  | 0% → 100% | 0d → none |  |
| 238 | Creation of Dev Distro | 2006-07-03 A | 2006-07-03 A |  | 0% → 100% | 0d → none |  |
| 239 | Development Posting | 2006-07-04 → 2006-07-06 A (+2d) | 2006-07-11 → 2006-07-13 A (+2d) |  | 0% → 100% | 0d → none | constraint start no earlier than 2005-03-30 → start no earlier than 2006-07-06 |
| 240 | Development Review | 2006-07-12 → 2006-07-21 (+9d) | 2006-07-17 → 2006-07-26 (+9d) |  |  | 0d → 62d | constraint none → finish no earlier than 2006-07-26 |
| 241 | Development Final Fixes | 2006-07-18 → 2006-07-27 (+9d) | 2006-07-19 → 2006-07-28 (+9d) |  |  | 0d → 62d | constraint finish no earlier than 2005-04-06 → finish no earlier than 2006-07-25 |
| 242 | Post to Catalog | 2006-07-20 → 2006-07-31 (+11d) | 2006-07-20 → 2006-07-31 (+11d) |  |  | 0d → 62d |  |
| 243 | **Online Review Deliverables (custom)** | 2006-06-15 A | 2006-07-20 → 2006-07-26 (+6d) | 26d → 30d | 0% → 73% | 0d → 65d |  |
| 244 | Design Posting | 2006-06-15 A | 2006-06-22 A |  | 0% → 100% | 0d → none |  |
| 245 | Design Review | 2006-06-23 A | 2006-06-28 A |  | 0% → 100% | 0d → none |  |
| 246 | Design Final Fixes | 2006-06-29 A | 2006-06-30 A |  | 0% → 100% | 0d → none |  |

| ID | Task | Start | Finish | Duration | Complete | Total float | Predecessors | Other |
| --- | --- | --- | --- | --- | --- | --- | --- | --- |
| 247 | Creation of Dev Distro | 2006-07-03 A | 2006-07-03 A |  | 0% → 100% | 0d → none |  |  |
| 248 | Development Posting | 2006-07-04 → 2006-07-06 A (+2d) | 2006-07-11 → 2006-07-13 A (+2d) |  | 0% → 100% | 0d → none |  | constraint start no earlier than 2005-03-30 → start no earlier than 2006-07-06 |
| 249 | Development Review | 2006-07-12 → 2006-07-18 (+6d) | 2006-07-17 → 2006-07-21 (+4d) |  |  | 0d → 65d |  | constraint none → finish no earlier than 2006-07-21 |
| 250 | Development Final Fixes | 2006-07-18 → 2006-07-24 (+6d) | 2006-07-19 → 2006-07-25 (+6d) |  |  | 0d → 65d |  | constraint finish no earlier than 2005-04-06 → finish no earlier than 2006-07-25 |
| 251 | Post to Catalog | 2006-07-20 → 2006-07-26 (+6d) | 2006-07-20 → 2006-07-26 (+6d) |  |  | 0d → 65d |  |  |
| 252 | **Online Review Phases (custom)** | 2006-06-15 A | 2006-07-20 → 2006-08-09 (+20d) | 26d → 40d | 0% → 61% | 0d → 54d |  |  |
| 253 | Design Posting | 2006-06-15 A | 2006-06-22 → 2006-06-26 A (+4d) | 6d → 8d | 0% → 100% | 0d → none |  | constraint start no earlier than 2006-06-15 → finish no earlier than 2006-06-26 |
| 254 | Design Review | 2006-06-23 → 2006-06-27 A (+4d) | 2006-06-28 → 2006-07-03 A (+5d) | 4d → 5d | 0% → 100% | 0d → none |  | constraint finish no earlier than 2005-03-21 → start no earlier than 2006-06-27 |
| 255 | Design Final Fixes | 2006-06-29 → 2006-07-06 A (+7d) | 2006-06-30 → 2006-07-10 A (+10d) | 2d → 3d | 0% → 100% | 0d → none |  | constraint none → finish no earlier than 2006-07-10 |
| 256 | Creation of Dev Distro | 2006-07-03 → 2006-07-11 A (+8d) | 2006-07-03 → 2006-07-11 A (+8d) |  | 0% → 100% | 0d → none |  |  |
| 257 | Development Posting | 2006-07-04 → 2006-07-20 (+16d) | 2006-07-11 → 2006-07-27 (+16d) |  |  | 0d → 58d |  | constraint start no earlier than 2005-03-30 → start no earlier than 2006-07-20 |
| 258 | Development Review | 2006-07-12 → 2006-07-28 (+16d) | 2006-07-17 → 2006-08-01 (+15d) | 4d → 3d |  | 0d → 58d |  | constraint none → finish no earlier than 2006-08-01 |
| 259 | Development Final Fixes | 2006-07-18 → 2006-08-02 (+15d) | 2006-07-19 → 2006-08-02 (+14d) | 2d → 1d |  | 0d → 58d |  | constraint finish no earlier than 2005-04-06 → start no earlier than 2006-08-02 |
| 260 | Post to Catalog | 2006-07-20 → 2006-08-09 (+20d) | 2006-07-20 → 2006-08-09 (+20d) |  |  | 0d → 54d |  | constraint none → finish no earlier than 2006-08-09 |
| 261 | **Auto Pilot** | 2006-06-15 → 2006-06-22 A (+7d) | 2006-07-20 → 2006-08-02 (+13d) | 26d → 30d | 0% → 70% | 0d → 60d |  |  |
| 262 | Design Posting | 2006-06-15 → 2006-06-22 A (+7d) | 2006-06-22 → 2006-06-29 A (+7d) |  | 0% → 100% | 0d → none |  | constraint start no earlier than 2006-06-15 → start no earlier than 2006-06-22 |
| 263 | Design Review | 2006-06-23 → 2006-07-03 A (+10d) | 2006-06-28 → 2006-07-06 A (+8d) |  | 0% → 100% | 0d → none |  | constraint finish no earlier than 2005-03-21 → finish no earlier than 2006-07-06 |
| 264 | Design Final Fixes | 2006-06-29 → 2006-07-10 A (+11d) | 2006-06-30 → 2006-07-11 A (+11d) |  | 0% → 100% | 0d → none |  | constraint none → finish no earlier than 2006-07-11 |
| 265 | Creation of Dev Distro | 2006-07-03 → 2006-07-12 A (+9d) | 2006-07-03 → 2006-07-12 A (+9d) |  | 0% → 100% | 0d → none |  |  |
| 266 | Development Posting | 2006-07-04 → 2006-07-13 A (+9d) | 2006-07-11 → 2006-07-20 A (+9d) |  | 0% → 100% | 0d → none |  |  |
| 267 | Development Review | 2006-07-12 → 2006-07-21 (+9d) | 2006-07-17 → 2006-07-27 (+10d) | 4d → 5d |  | 0d → 61d |  | constraint none → start no earlier than 2006-07-21 |
| 268 | Development Final Fixes | 2006-07-18 → 2006-07-31 (+13d) | 2006-07-19 → 2006-08-01 (+13d) |  |  | 0d → 60d |  | constraint finish no earlier than 2005-04-06 → finish no earlier than 2006-08-01 |
| 269 | Post to Catalog | 2006-07-20 → 2006-08-02 (+13d) | 2006-07-20 → 2006-08-02 (+13d) |  |  | 0d → 60d |  |  |
| 270 | **Auto Screening Tool (2 dev)** | 2006-06-15 → 2006-06-29 A (+14d) | 2006-07-20 → 2006-08-10 (+21d) | 26d → 31d | 0% → 47% | 0d → 54d |  |  |
| 271 | Design Posting | 2006-06-15 → 2006-06-29 A (+14d) | 2006-06-22 → 2006-07-06 A (+14d) |  | 0% → 100% | 0d → none |  | constraint start no earlier than 2006-06-15 → start no earlier than 2006-06-29 |
| 272 | Design Review | 2006-06-23 → 2006-07-10 A (+17d) | 2006-06-28 → 2006-07-19 A (+21d) | 4d → 8d | 0% → 100% | 0d → none |  | constraint finish no earlier than 2005-03-21 → finish no earlier than 2006-07-13 |
| 273 | Design Final Fixes | 2006-06-29 → 2006-07-20 (+21d) | 2006-06-30 → 2006-07-21 (+21d) |  |  | 0d → 54d |  | constraint none → finish no earlier than 2006-07-20 |
| 274 | Creation of Dev Distro | 2006-07-03 → 2006-07-24 (+21d) | 2006-07-03 → 2006-07-24 (+21d) |  |  | 0d → 54d |  |  |
| 275 | Development Posting | 2006-07-04 → 2006-07-25 (+21d) | 2006-07-11 → 2006-08-01 (+21d) |  |  | 0d → 54d |  |  |
| 276 | Development Review | 2006-07-12 → 2006-08-02 (+21d) | 2006-07-17 → 2006-08-07 (+21d) |  |  | 0d → 54d |  |  |
| 277 | Development Final Fixes | 2006-07-18 → 2006-08-08 (+21d) | 2006-07-19 → 2006-08-09 (+21d) |  |  | 0d → 54d |  |  |
| 278 | Post to Catalog | 2006-07-20 → 2006-08-10 (+21d) | 2006-07-20 → 2006-08-10 (+21d) |  |  | 0d → 54d |  |  |
| 279 | **Auto Screening Management (Custom)** | 2006-06-15 A | 2006-07-20 → 2006-07-26 (+6d) | 26d → 30d | 0% → 88% | 0d → 65d |  |  |
| 280 | Design Posting | 2006-06-15 A | 2006-06-22 A |  | 0% → 100% | 0d → none |  |  |
| 281 | Design Review | 2006-06-23 A | 2006-06-28 A |  | 0% → 100% | 0d → none |  |  |
| 282 | Design Final Fixes | 2006-06-29 A | 2006-06-30 A |  | 0% → 100% | 0d → none |  |  |
| 283 | Creation of Dev Distro | 2006-07-03 → 2006-07-06 A (+3d) | 2006-07-03 → 2006-07-06 A (+3d) |  | 0% → 100% | 0d → none |  |  |
| 284 | Development Posting | 2006-07-04 → 2006-07-07 A (+3d) | 2006-07-11 → 2006-07-14 A (+3d) |  | 0% → 100% | 0d → none |  | constraint start no earlier than 2005-03-30 → start no earlier than 2006-07-13 |
| 285 | Development Review | 2006-07-12 → 2006-07-17 A (+5d) | 2006-07-17 → 2006-07-20 A (+3d) |  | 0% → 100% | 0d → none |  |  |
| 286 | Development Final Fixes | 2006-07-18 → 2006-07-24 (+6d) | 2006-07-19 → 2006-07-25 (+6d) |  |  | 0d → 65d |  | constraint finish no earlier than 2005-04-06 → finish no earlier than 2006-07-25 |
| 287 | Post to Catalog | 2006-07-20 → 2006-07-26 (+6d) | 2006-07-20 → 2006-07-26 (+6d) |  |  | 0d → 65d |  |  |
| 290 | **Assembly Competitions** | 2006-06-26 → 2006-06-27 A (+1d) | 2006-08-17 → 2006-09-21 (+35d) | 39d → 63d | 0% → 74% |  |  |  |
| 291 | **Scorecard Admin Assembly** | 2006-06-26 → 2006-06-27 A (+1d) | 2006-08-03 → 2006-08-25 (+22d) | 29d → 44d | 0% → 78% | 10d → 19d |  |  |
| 292 | **Setup** | 2006-06-26 → 2006-06-27 A (+1d) | 2006-07-07 → 2006-07-18 A (+11d) | 10d → 16d | 0% → 100% | 19d → none |  |  |
| 293 | Divide Spec and Arch Deliverables | 2006-06-26 → 2006-06-27 A (+1d) | 2006-06-28 → 2006-06-29 A (+1d) |  | 0% → 100% | 36d → none |  |  |
| 294 | TopCoder Website Content Creation/Updates | 2006-06-28 → 2006-07-04 A (+6d) | 2006-06-30 → 2006-07-06 A (+6d) |  | 0% → 100% | 34d → none |  |  |
| 295 | TopCoder Website Informaiton Posted | 2006-06-30 → 2006-07-11 A (+11d) | 2006-06-30 → 2006-07-11 A (+11d) |  | 0% → 100% | 27d → none |  | constraint start no earlier than 2006-05-17 → start no earlier than 2006-07-05 |
| 296 | Package Components | 2006-07-07 → 2006-07-18 A (+11d) | 2006-07-07 → 2006-07-18 A (+11d) |  | 0% → 100% | 10d → none |  |  |
| 297 | **Test Case Development** | 2006-07-03 → 2006-07-06 A (+3d) | 2006-07-11 → 2006-07-21 A (+10d) | 7d → 12d | 0% → 100% | 27d → none |  |  |
| 298 | Submit tests | 2006-07-03 → 2006-07-06 A (+3d) | 2006-07-10 → 2006-07-20 A (+10d) | 6d → 11d | 0% → 100% | 27d → none | 295 → none | constraint start no earlier than 2006-03-22 → finish no earlier than 2006-07-20 |
| 299 | Screen test cases | 2006-07-11 → 2006-07-21 A (+10d) | 2006-07-11 → 2006-07-21 A (+10d) |  | 0% → 100% | 27d → none |  | resources none → albertwang (winner) |
| 300 | Team Formation | 2006-07-03 → 2006-07-14 (+11d) | 2006-07-10 → 2006-07-21 (+11d) |  |  | 28d → 44d |  | constraint start no earlier than 2006-07-03 → finish no earlier than 2006-07-21 |
| 301 | **Development** | 2006-07-10 → 2006-07-26 A (+16d) | 2006-08-03 → 2006-08-25 (+22d) | 19d → 23d | 0% → 79% | 10d → 19d |  |  |
| 302 | **Opening Round** | 2006-07-10 → 2006-07-26 A (+16d) | 2006-08-03 → 2006-08-25 (+22d) | 19d → 23d | 0% → 79% | 10d → 19d |  |  |
| 303 | **Team Development** | 2006-07-10 → 2006-07-26 A (+16d) | 2006-07-18 → 2006-08-07 A (+20d) | 7d → 9d | 0% → 100% | 10d → none |  |  |
| 304 | **Development of Use Cases** | 2006-07-10 → 2006-07-26 A (+16d) | 2006-07-18 → 2006-08-07 A (+20d) | 7d → 9d | 0% → 100% | 10d → none |  |  |
| 305 | Create Unit Tests | 2006-07-10 → 2006-07-26 A (+16d) | 2006-07-13 → 2006-07-31 A (+18d) |  | 0% → 100% | 10d → none |  | constraint start no earlier than 2006-03-28 → finish no earlier than 2006-07-31 |
| 306 | Convert Prototype | 2006-07-10 → 2006-07-26 A (+16d) | 2006-07-13 → 2006-07-31 A (+18d) |  | 0% → 100% | 10d → none |  | constraint start no earlier than 2006-03-29 → finish no earlier than 2006-07-31 |
| 307 | Configure components | 2006-07-10 → 2006-07-27 A (+17d) | 2006-07-12 → 2006-07-31 A (+19d) |  | 0% → 100% | 11d → none |  | constraint start no earlier than 2006-03-29 → finish no earlier than 2006-07-31 |
| 308 | Test | 2006-07-14 → 2006-08-04 A (+21d) | 2006-07-18 → 2006-08-07 A (+20d) | 3d → 2d | 0% → 100% | 10d → none |  | constraint none → finish no earlier than 2006-08-07 |
| 309 | **Test case challenge** | 2006-07-19 → 2006-08-08 A (+20d) | 2006-07-20 → 2006-08-09 A (+20d) |  | 0% → 100% | 10d → none |  |  |
| 310 | Submit Challenges | 2006-07-19 → 2006-08-08 A (+20d) | 2006-07-19 → 2006-08-08 A (+20d) |  | 0% → 100% | 10d → none |  | constraint none → start no earlier than 2006-07-28 |
| 311 | Appeals response | 2006-07-20 → 2006-08-09 A (+20d) | 2006-07-20 → 2006-08-09 A (+20d) |  | 0% → 100% | 10d → none |  | resources Reviewer3; Reviewer2; Reviewer1; Assembly Manager; Architect → albertwang |
| 312 | **Review** | 2006-07-21 → 2006-08-09 A (+19d) | 2006-08-03 → 2006-08-25 (+22d) | 10d → 13d | 0% → 54% | 10d → 19d |  |  |
| 313 | Score Testcases | 2006-07-21 → 2006-08-09 A (+19d) | 2006-07-21 → 2006-08-09 A (+19d) |  | 0% → 100% | 11d → none | 309 → 310 |  |
| 314 | Score Submissions | 2006-07-21 → 2006-08-10 A (+20d) | 2006-07-24 → 2006-08-11 A (+18d) |  | 0% → 100% | 10d → none |  |  |
| 315 | Review Code | 2006-07-25 → 2006-08-14 A (+20d) | 2006-07-26 → 2006-08-15 A (+20d) |  | 0% → 100% | 10d → none |  |  |
| 316 | Appeals | 2006-07-27 → 2006-08-16 A (+20d) | 2006-07-27 → 2006-08-16 A (+20d) |  | 0% → 100% | 10d → none |  |  |
| 317 | Appeals Response | 2006-07-28 → 2006-08-17 A (+20d) | 2006-07-28 → 2006-08-17 A (+20d) |  | 0% → 100% | 10d → none |  |  |
| 318 | Final Fixes | 2006-07-31 → 2006-08-18 (+18d) | 2006-08-02 → 2006-08-22 (+20d) |  |  | 10d → 19d |  |  |

| ID | Task | Start | Finish | Duration | Complete | Total float | Predecessors | Other |
| --- | --- | --- | --- | --- | --- | --- | --- | --- |
| 319 | Final Review | 2006-08-03 → 2006-08-23 (+20d) | 2006-08-03 → 2006-08-23 (+20d) |  |  | 10d → 19d |  |  |
| 321 | **Project Review Assembly** | 2006-06-30 → 2006-07-20 A (+20d) | 2006-08-17 → 2006-09-21 (+35d) | 35d → 46d | 0% → 57% |  |  |  |
| 322 | **Setup** | 2006-06-30 → 2006-07-20 A (+20d) | 2006-07-21 → 2006-08-10 A (+20d) |  | 0% → 100% | 15d → none |  |  |
| 323 | Divide Spec and Arch Deliverables | 2006-06-30 → 2006-07-20 A (+20d) | 2006-06-30 → 2006-07-20 A (+20d) |  | 0% → 100% | 34d → none | 38FS-15d → 48FS-15d, 57FS-15d, 66FS-15d, 82FS-15d, 91FS-15d, 107FS-15d, 116FS-15d, 125FS-15d, 134FS-15d, 150FS-15d, 166FS-15d, 182FS-15d, 191FS-15d, 207FS-15d, 216FS-15d, 225FS-15d, 234FS-15d, 243FS-15d, 261FS-15d, 279FS-15d | constraint start no earlier than 2006-03-29 → start no earlier than 2006-07-20 |
| 324 | Topcoder Website Content Created/Updated | 2006-07-07 → 2006-07-27 A (+20d) | 2006-07-13 → 2006-08-02 A (+20d) |  | 0% → 100% | 25d → none | 38FS-10d → 48FS-10d, 57FS-10d, 66FS-10d, 82FS-10d, 91FS-10d, 107FS-10d, 116FS-10d, 125FS-10d, 134FS-10d, 150FS-10d, 166FS-10d, 182FS-10d, 191FS-10d, 207FS-10d, 216FS-10d, 225FS-10d, 234FS-10d, 243FS-10d, 252FS-10d, 261FS-10d, 279FS-10d | was named TopCoder Website Content Creation |
| 325 | TopCoder Website Informaiton Posted | 2006-07-14 → 2006-08-03 A (+20d) | 2006-07-14 → 2006-08-03 A (+20d) |  | 0% → 100% | 14d → none | 38FS-5d → 261FS-5d, 48FS-5d, 57FS-5d, 66FS-5d, 82FS-5d, 91FS-5d, 107FS-5d, 116FS-5d, 125FS-5d, 134FS-5d, 150FS-5d, 166FS-5d, 182FS-5d, 191FS-5d, 207FS-5d, 216FS-5d, 225FS-5d, 234FS-5d, 243FS-5d, 252FS-5d, 279FS-5d |  |
| 326 | Package Components | 2006-07-21 → 2006-08-10 A (+20d) | 2006-07-21 → 2006-08-10 A (+20d) |  | 0% → 100% | 0d → none | 38 → 261, 279, 48, 57, 66, 82, 91, 107, 116, 125, 134, 150, 166, 182, 191, 207, 216, 225, 234, 243, 252 |  |
| 327 | **Test Case Development** | 2006-07-17 → 2006-07-27 A (+10d) | 2006-07-25 → 2006-08-08 A (+14d) | 7d → 8.5d | 0% → 100% | 17d → none |  |  |
| 328 | Submit tests | 2006-07-17 → 2006-07-27 A (+10d) | 2006-07-24 → 2006-08-07 A (+14d) | 6d → 8d | 0% → 100% | 17d → none | 325 → none | constraint start no earlier than 2006-03-22 → finish no earlier than 2006-08-07 |
| 329 | Screen test cases | 2006-07-25 → 2006-08-08 A (+14d) | 2006-07-25 → 2006-08-08 A (+14d) | 1d → 0.5d | 0% → 100% | 17d → none |  | constraint none → start no earlier than 2006-08-08 |
| 330 | Team Formation | 2006-07-17 → 2006-08-03 A (+17d) | 2006-07-28 → 2006-08-10 A (+13d) | 10d → 6d | 0% → 100% | 14d → none | 325 → 325FS-1d |  |
| 331 | **Development** | 2006-07-24 → 2006-08-11 A (+18d) | 2006-08-17 → 2006-09-21 (+35d) | 19d → 30d | 0% → 32% |  |  |  |
| 332 | **Opening Round** | 2006-07-24 → 2006-08-11 A (+18d) | 2006-08-17 → 2006-09-21 (+35d) | 19d → 30d | 0% → 32% |  |  |  |
| 333 | **Team Development** | 2006-07-24 → 2006-08-11 A (+18d) | 2006-08-01 → 2006-09-01 (+31d) | 7d → 16d | 0% → 50% | 0d → 12d |  |  |
| 334 | **Development of Use Cases** | 2006-07-24 → 2006-08-11 A (+18d) | 2006-08-01 → 2006-09-01 (+31d) | 7d → 16d | 0% → 50% | 0d → 12d |  |  |
| 335 | Create Unit Tests | 2006-07-24 → 2006-08-11 A (+18d) | 2006-07-27 → 2006-08-16 A (+20d) |  | 0% → 100% | 0d → none |  |  |
| 336 | Convert Prototype | 2006-07-24 → 2006-08-11 A (+18d) | 2006-07-27 → 2006-08-16 A (+20d) |  | 0% → 100% | 0d → none |  |  |
| 337 | Configure components | 2006-07-24 → 2006-08-11 A (+18d) | 2006-07-27 → 2006-08-16 A (+20d) |  | 0% → 100% | 0d → none |  |  |
| 338 | Test | 2006-07-28 → 2006-08-17 (+20d) | 2006-08-01 → 2006-09-01 (+31d) | 3d → 12d |  | 0d → 12d |  |  |
| 339 | **Test case challenge** | 2006-08-02 → 2006-09-04 (+33d) | 2006-08-03 → 2006-09-05 (+33d) |  |  | 0d → 12d |  |  |
| 340 | Submit Challenges | 2006-08-02 → 2006-09-04 (+33d) | 2006-08-02 → 2006-09-04 (+33d) |  |  | 0d → 12d |  | constraint none → start no earlier than 2006-09-04 |
| 341 | Appeals response | 2006-08-03 → 2006-09-05 (+33d) | 2006-08-03 → 2006-09-05 (+33d) |  |  | 0d → 12d |  |  |
| 342 | **Review** | 2006-08-04 → 2006-09-01 (+28d) | 2006-08-17 → 2006-09-21 (+35d) | 10d → 15d |  |  |  |  |
| 343 | Score Testcases | 2006-08-04 → 2006-09-04 (+31d) | 2006-08-04 → 2006-09-04 (+31d) |  |  | 1d → 13d | 339 → none | constraint none → start no earlier than 2006-09-04 |
| 344 | Score Submissions | 2006-08-04 → 2006-09-04 (+31d) | 2006-08-07 → 2006-09-05 (+29d) |  |  | 0d → 12d | 339 → none | constraint none → start no earlier than 2006-09-04 |
| 345 | Review Code | 2006-08-08 → 2006-09-01 (+24d) | 2006-08-09 → 2006-09-05 (+27d) | 2d → 3d |  | 0d → 6d | 343, 344 → none | constraint none → finish no earlier than 2006-09-05 |
| 346 | Appeals | 2006-08-10 → 2006-09-06 (+27d) | 2006-08-10 → 2006-09-06 (+27d) |  |  | 0d → 6d |  |  |
| 347 | Appeals Response | 2006-08-11 → 2006-09-07 (+27d) | 2006-08-11 → 2006-09-07 (+27d) |  |  | 0d → 6d |  |  |
| 348 | Final Fixes | 2006-08-14 → 2006-09-18 (+35d) | 2006-08-16 → 2006-09-20 (+35d) |  |  |  |  | constraint none → finish no earlier than 2006-09-20 |
| 349 | Final Review | 2006-08-17 → 2006-09-21 (+35d) | 2006-08-17 → 2006-09-21 (+35d) |  |  |  |  |  |
| 350 | **Project Admin and Details Assembly** | 2006-06-30 → 2006-07-20 A (+20d) | 2006-08-17 → 2006-09-21 (+35d) | 35d → 46d | 0% → 89% |  |  | was named Project Details Assembly |
| 351 | **Setup** | 2006-06-30 → 2006-07-20 A (+20d) | 2006-07-21 → 2006-08-10 A (+20d) |  | 0% → 100% | 15d → none |  |  |
| 352 | Divide Spec and Arch Deliverables | 2006-06-30 → 2006-07-20 A (+20d) | 2006-06-30 → 2006-07-20 A (+20d) |  | 0% → 100% | 34d → none | 38FS-15d → 48FS-15d, 57FS-15d, 150FS-15d, 166FS-15d, 182FS-15d, 191FS-15d, 207FS-15d, 216FS-15d, 225FS-15d, 234FS-15d, 243FS-15d, 252FS-15d, 279FS-15d, 66FS-15d, 82FS-15d, 91FS-15d, 107FS-15d, 116FS-15d, 125FS-15d, 134FS-15d | constraint start no earlier than 2006-03-29 → start no earlier than 2006-07-20 |
| 353 | TopCoder Website Content Creation | 2006-07-07 → 2006-07-27 A (+20d) | 2006-07-13 → 2006-08-02 A (+20d) |  | 0% → 100% | 25d → none | 38FS-10d → 261FS-10d, 279FS-10d, 48FS-10d, 57FS-10d, 66FS-10d, 82FS-10d, 91FS-10d, 107FS-10d, 116FS-10d, 125FS-10d, 134FS-10d, 150FS-10d, 166FS-10d, 182FS-10d, 191FS-10d, 207FS-10d, 216FS-10d, 225FS-10d, 234FS-10d, 243FS-10d, 252FS-10d |  |
| 354 | TopCoder Website Informaiton Posted | 2006-07-14 → 2006-08-03 A (+20d) | 2006-07-14 → 2006-08-03 A (+20d) |  | 0% → 100% | 14d → none | 38FS-5d → 261FS-5d, 279FS-5d, 48FS-5d, 57FS-5d, 66FS-5d, 82FS-5d, 91FS-5d, 107FS-5d, 116FS-5d, 125FS-5d, 134FS-5d, 150FS-5d, 166FS-5d, 182FS-5d, 191FS-5d, 207FS-5d, 216FS-5d, 225FS-5d, 234FS-5d, 243FS-5d, 252FS-5d |  |
| 355 | Package Components | 2006-07-21 → 2006-08-10 A (+20d) | 2006-07-21 → 2006-08-10 A (+20d) |  | 0% → 100% | 0d → none | 38 → 261, 279, 48, 57, 66, 82, 91, 107, 116, 125, 134, 150, 166, 182, 191, 207, 216, 225, 234, 243, 252 |  |
| 356 | **Test Case Development** | 2006-07-17 → 2006-07-28 A (+11d) | 2006-07-25 → 2006-08-08 A (+14d) | 7d → 8d | 0% → 100% | 17d → none |  |  |
| 357 | Submit tests | 2006-07-17 → 2006-07-28 A (+11d) | 2006-07-24 → 2006-08-07 A (+14d) | 6d → 7d | 0% → 100% | 17d → none | 354 → none | constraint start no earlier than 2006-03-22 → start no earlier than 2006-07-28 |
| 358 | Screen test cases | 2006-07-25 → 2006-08-08 A (+14d) | 2006-07-25 → 2006-08-08 A (+14d) |  | 0% → 100% | 17d → none |  |  |
| 359 | Team Formation | 2006-07-17 → 2006-08-04 A (+18d) | 2006-07-28 → 2006-08-10 A (+13d) | 10d → 5d | 0% → 100% | 14d → none |  |  |
| 360 | **Development** | 2006-07-24 → 2006-08-11 A (+18d) | 2006-08-17 → 2006-09-21 (+35d) | 19d → 30d | 0% → 82% |  |  |  |
| 361 | **Opening Round** | 2006-07-24 → 2006-08-11 A (+18d) | 2006-08-17 → 2006-09-21 (+35d) | 19d → 30d | 0% → 82% |  |  |  |
| 362 | **Team Development** | 2006-07-24 → 2006-08-11 A (+18d) | 2006-08-01 → 2006-08-25 A (+24d) | 7d → 11d | 0% → 100% | 0d → none |  |  |
| 363 | **Development of Use Cases** | 2006-07-24 → 2006-08-11 A (+18d) | 2006-08-01 → 2006-08-25 A (+24d) | 7d → 11d | 0% → 100% | 0d → none |  |  |
| 364 | Create Unit Tests | 2006-07-24 → 2006-08-11 A (+18d) | 2006-07-27 → 2006-08-16 A (+20d) |  | 0% → 100% | 0d → none |  |  |
| 365 | Convert Prototype | 2006-07-24 → 2006-08-11 A (+18d) | 2006-07-27 → 2006-08-16 A (+20d) |  | 0% → 100% | 0d → none |  |  |
| 366 | Configure components | 2006-07-24 → 2006-08-11 A (+18d) | 2006-07-27 → 2006-08-16 A (+20d) |  | 0% → 100% | 0d → none | Package Components → 355 |  |
| 367 | Test | 2006-07-28 → 2006-08-17 A (+20d) | 2006-08-01 → 2006-08-25 A (+24d) | 3d → 7d | 0% → 100% | 0d → none | 364, 365 → 364, 365, 366 |  |
| 368 | **Test case challenge** | 2006-08-02 → 2006-08-25 A (+23d) | 2006-08-03 → 2006-08-28 A (+25d) |  | 0% → 100% | 0d → none | 367 → none |  |
| 369 | Submit Challenges | 2006-08-02 → 2006-08-25 A (+23d) | 2006-08-02 → 2006-08-25 A (+23d) |  | 0% → 100% | 0d → none |  | constraint none → start no earlier than 2006-08-25 |
| 370 | Appeals response | 2006-08-03 → 2006-08-28 A (+25d) | 2006-08-03 → 2006-08-28 A (+25d) |  | 0% → 100% | 0d → none |  |  |
| 371 | **Review** | 2006-08-04 → 2006-08-25 A (+21d) | 2006-08-17 → 2006-09-21 (+35d) | 10d → 20d | 0% → 50% |  |  |  |
| 372 | Score Testcases | 2006-08-04 → 2006-08-25 A (+21d) | 2006-08-04 → 2006-08-25 A (+21d) |  | 0% → 100% | 1d → none | 368 → none | constraint none → start no earlier than 2006-08-25 |
| 373 | Score Submissions | 2006-08-04 → 2006-08-25 A (+21d) | 2006-08-07 → 2006-08-28 A (+21d) |  | 0% → 100% | 0d → none | 368 → none | constraint none → start no earlier than 2006-08-25 |
| 374 | Review Code | 2006-08-08 → 2006-08-25 A (+17d) | 2006-08-09 → 2006-08-29 A (+20d) | 2d → 3d | 0% → 100% | 0d → none | 372, 373 → none | constraint none → start no earlier than 2006-08-25 |
| 375 | Appeals | 2006-08-10 → 2006-08-30 (+20d) | 2006-08-10 → 2006-08-30 (+20d) |  |  | 0d → 11d |  |  |
| 376 | Appeals Response | 2006-08-11 → 2006-08-31 (+20d) | 2006-08-11 → 2006-08-31 (+20d) |  |  | 0d → 11d |  |  |
| 377 | Final Fixes | 2006-08-14 → 2006-09-18 (+35d) | 2006-08-16 → 2006-09-20 (+35d) |  |  |  |  | constraint none → finish no earlier than 2006-09-20 |
| 378 | Final Review | 2006-08-17 → 2006-09-21 (+35d) | 2006-08-17 → 2006-09-21 (+35d) |  |  |  |  |  |
| 402 | **Deployment** | 2006-08-18 → 2006-07-24 A (-25d) | 2006-09-06 → 2006-09-29 (+23d) | 13d → 50d | 0% → 16% | 16d → 17d |  |  |
| 406 | **Testing Iteration** | 2006-08-24 → 2006-09-15 (+22d) | 2006-09-06 → 2006-09-28 (+22d) | 9d → 10d |  | 16d → 17d |  |  |
| 407 | Test Plan Execution | 2006-08-24 → 2006-09-15 (+22d) | 2006-08-28 → 2006-09-20 (+23d) | 3d → 4d |  | 16d → 17d | 411 → 405 |  |
| 408 | User Acceptance Testing | 2006-08-29 → 2006-09-21 (+23d) | 2006-09-05 → 2006-09-27 (+22d) |  |  | 16d → 17d |  |  |
| 409 | PM Certification | 2006-09-06 → 2006-09-28 (+22d) | 2006-09-06 → 2006-09-28 (+22d) |  |  | 16d → 17d |  |  |
| 411 | Deployment | 2006-08-18 → 2006-09-29 (+42d) | 2006-08-23 → 2006-09-29 (+37d) | 4d → 1d |  | 16d → 17d | 290 → 404 | constraint finish no earlier than 2005-05-27 → none; resources Project Manager; Application Assembler 1 → none |
| 412 | **Support** | 2006-08-18 → 2006-09-22 (+35d) | 2006-09-29 → 2006-11-02 (+34d) |  |  |  |  |  |
| 413 | Capture DRs | 2006-08-18 → 2006-09-22 (+35d) | 2006-09-08 → 2006-10-12 (+34d) |  |  |  |  |  |
| 414 | Release Fix | 2006-09-11 → 2006-10-13 (+32d) | 2006-09-29 → 2006-11-02 (+34d) |  |  |  |  |  |
| 415 | Send out how-to info to users | 2006-09-07 → 2006-10-02 (+25d) | 2006-09-07 → 2006-10-02 (+25d) |  |  | 16d → 17d | 409 → 410 |  |
| 416 | Beta Release to internal users | 2006-09-07 → 2006-10-02 (+25d) | 2006-09-07 → 2006-10-02 (+25d) |  |  | 16d → 17d | 402 → 410 |  |
